# CART Template 06102015 RT

How a schedule from MS Project changed from version to version. A marks actual dates.

## Version 1 (saved 2015-06-22, file 20150622 0800 Risk Transformation Master Plan.mpp)

| ID | WBS | Task | Duration | Start | Finish | Total float | Constraint |
| --- | --- | --- | --- | --- | --- | --- | --- |
| 1 | 1 | **Capital and Risk Transformation SHUSA** | 921d? | 2014-09-19 | 2018-04-01 | 0d |  |
| 2 | 1.1 | **Risk Transformation** | 921d? | 2014-09-19 | 2018-04-01 | 0d |  |
| 3 | 1.1.1 | **Risk Appetite Statement(RAS)** | 740d? | 2015-06-01 | 2018-04-01 | 0d |  |
| 4 | 1.1.1.1 | **List of Deliverables for Sub Work-Stream** | 0d | 2015-12-31 | 2015-12-31 | 586d |  |
| 5 |  | example deliverable (linked to the detail below) | 0d | 2015-12-31 | 2015-12-31 | 586d | finish no earlier than 2015-12-31 |
| 6 | 1.1.1.2 | **Re-designed SHUSA RAS framework** | 105d | 2015-06-08 | 2015-10-30 | 0d |  |
| 7 | 1.1.1.2.1 | **SHUSA-level RAS** | 60d | 2015-06-08 | 2015-08-28 | 0d |  |
| 8 | 1.1.1.2.1.1 | **Finalize project plan and communicate to CART stakeholders** | 10d | 2015-06-08 | 2015-06-19 | 1d |  |
| 9 |  | Finalize CART plan at task-level | 1d | 2015-06-08 | 2015-06-08 | 734d | finish no earlier than 2015-06-08 |
| 10 |  | Socialize plan with key stakeholders (SHUSA) | 9d | 2015-06-09 | 2015-06-19 | 725d | finish no earlier than 2015-06-19 |
| 11 |  | Socialize plan with key stakeholders (SBNA) | 9d | 2015-06-09 | 2015-06-19 |  |  |
| 12 |  | Socialize plan with key stakeholders (SCUSA) | 9d | 2015-06-09 | 2015-06-19 |  |  |
| 13 |  | Communicate plan to CART stakeholders | 5d | 2015-06-15 | 2015-06-19 | 725d | finish no earlier than 2015-06-19 |
| 14 |  | Plan submitted to CART / Leadership Committee | 0d | 2015-06-19 | 2015-06-19 | 725d | finish no earlier than 2015-06-19 |
| 15 | 1.1.1.2.1.2 | **Define guidelines and approach for choosing metrics and setting limits** | 15d | 2015-06-08 | 2015-06-26 | 5d |  |
| 16 |  | Draft guidelines and approach for metrics and limits (no Finance metrics, risk profile, risk appetite, stressed metrics) | 5d | 2015-06-08 | 2015-06-12 | 730d | finish no earlier than 2015-06-12 |
| 17 |  | Socialize Risk Appetite guidelines to stakeholders (SHUSA) | 5d | 2015-06-15 | 2015-06-19 | 725d | finish no earlier than 2015-06-19 |
| 18 |  | Socialize plan with key stakeholders (SBNA) | 5d | 2015-06-15 | 2015-06-19 |  |  |
| 19 |  | Socialize plan with key stakeholders (SCUSA) | 5d | 2015-06-15 | 2015-06-19 |  |  |
| 20 |  | Update guidelines per stakeholder feedback | 5d | 2015-06-22 | 2015-06-26 | 720d | finish no earlier than 2015-06-26 |
| 21 |  | Finalized guidelines and approach for choosing metrics and setting limits | 0d | 2015-06-26 | 2015-06-26 | 720d | finish no earlier than 2015-06-26 |
| 22 | 1.1.1.2.1.3 | **Articulate enterprise-wide core values, RAS principles and major risk categories** | 15d | 2015-06-08 | 2015-06-26 | 5d |  |
| 23 |  | Draft of enterprise-wide core values, RAS principles and major risk categories (e.g. credit) | 5d | 2015-06-08 | 2015-06-12 | 730d | finish no earlier than 2015-06-12 |
| 24 |  | Socialize Risk Appetite philosophy to stakeholders (SHUSA) | 5d | 2015-06-15 | 2015-06-19 | 725d | finish no earlier than 2015-06-19 |
| 25 |  | Socialize Risk Appetite philosophy to stakeholders (SBNA) | 5d | 2015-06-15 | 2015-06-19 |  |  |
| 26 |  | Socialize Risk Appetite philosophy to stakeholders (SCUSA) | 5d | 2015-06-15 | 2015-06-19 |  |  |
| 27 |  | Update values, principles and risk categories per stakeholder feedback | 5d | 2015-06-22 | 2015-06-26 | 720d | finish no earlier than 2015-06-26 |
| 28 |  | Finalized enterprise-wide RAS philosophy and major risk categories | 0d | 2015-06-26 | 2015-06-26 | 720d | finish no earlier than 2015-06-26 |
| 29 | 1.1.1.2.1.4 | **Detail material risks and constraints for enterprise** | 15d | 2015-06-08 | 2015-06-26 | 0d |  |
| 30 |  | Identify and document material risks for enterprise, including input from stakeholders (SHUSA) | 5d | 2015-06-08 | 2015-06-12 | 730d | finish no earlier than 2015-06-12 |
| 31 |  | Identify and document material risks for enterprise, including input from stakeholders (SBNA) | 5d | 2015-06-08 | 2015-06-12 |  |  |
| 32 |  | Identify and document material risks for enterprise, including input from stakeholders (SCUSA) | 5d | 2015-06-08 | 2015-06-12 |  |  |
| 33 |  | Identify and document constraints from regulators and other stakeholders (i.e. ratings agencies) | 5d | 2015-06-15 | 2015-06-19 | 725d | finish no earlier than 2015-06-19 |
| 34 |  | Consolidate all requirements from Group, including updated corporate metrics (recalculated with April numbers) | 5d | 2015-06-15 | 2015-06-19 | 725d | finish no earlier than 2015-06-19 |
| 35 |  | Document owners and rationale for all corporate metrics | 5d | 2015-06-15 | 2015-06-19 | 725d | finish no earlier than 2015-06-19 |
| 36 |  | Facilitate review and challenge session for list of material risks with key stakeholders (SHUSA) | 3d | 2015-06-22 | 2015-06-24 | 722d | finish no earlier than 2015-06-24 |
| 37 |  | Facilitate review and challenge session for list of material risks with key stakeholders (SBNA) | 3d | 2015-06-22 | 2015-06-24 |  |  |
| 38 |  | Facilitate review and challenge session for list of material risks with key stakeholders (SCUSA) | 3d | 2015-06-22 | 2015-06-24 |  |  |
| 39 |  | Update documentation of material risks and constraints, given stakeholder input | 3d | 2015-06-24 | 2015-06-26 | 720d | finish no earlier than 2015-06-26 |
| 40 |  | Finalized documentation of material risks and constraints for enterprise | 0d | 2015-06-26 | 2015-06-26 | 720d | finish no earlier than 2015-06-26 |
| 41 | 1.1.1.2.1.5 | **For each risk, determine a qualitative risk appetite statement** | 25d | 2015-06-08 | 2015-07-10 | 20d |  |
| 42 |  | Draft a qualitative risk appetite statement for all risks detailed in documentation of material risks for enterprise, considering documented constraints | 20d | 2015-06-08 | 2015-07-03 | 715d | finish no earlier than 2015-07-03 |
| 43 |  | Socialize SHUSA-level qualitative statements with stakeholders (SHUSA) | 5d | 2015-07-06 | 2015-07-10 | 710d | finish no earlier than 2015-07-10 |
| 44 |  | Socialize SHUSA-level qualitative statements with stakeholders (SBNA) | 5d | 2015-07-06 | 2015-07-10 |  |  |
| 45 |  | Socialize SHUSA-level qualitative statements with stakeholders (SCUSA) | 5d | 2015-07-06 | 2015-07-10 |  |  |
| 46 |  | Finalized qualitative risk appetite statements for material risks | 0d | 2015-07-10 | 2015-07-10 | 710d | finish no earlier than 2015-07-10 |
| 47 | 1.1.1.2.1.6 | **For quantifiable statements, identify key metrics and calibrate limits** | 45d | 2015-06-15 | 2015-08-14 | 1d |  |
| 48 |  | Finalize list of proposed SHUSA metrics | 1d | 2015-06-15 | 2015-06-15 | 729d | finish no earlier than 2015-06-15 |
| 49 |  | Facilitate review and challenge session for proposed metrics, limits and thresholds with key stakeholders (SHUSA) | 1d | 2015-06-16 | 2015-06-16 | 728d | finish no earlier than 2015-06-16 |
| 50 |  | Facilitate review and challenge session for proposed metrics, limits and thresholds with key stakeholders (SBNA) | 1d | 2015-06-16 | 2015-06-16 |  |  |
| 51 |  | Facilitate review and challenge session for proposed metrics, limits and thresholds with key stakeholders (SCUSA) | 1d | 2015-06-16 | 2015-06-16 |  |  |
| 52 |  | Update list of SHUSA metrics, given stakeholder input, and identify and document owners for each metric | 3d | 2015-06-17 | 2015-06-19 | 725d | finish no earlier than 2015-06-19 |
| 53 |  | Detail limits and thresholds for list of SHUSA metrics | 5d | 2015-06-22 | 2015-06-26 | 720d | finish no earlier than 2015-06-26 |
| 54 |  | Calibrate limits based on analysis of historical data, industry benchmarking, etc. | 30d | 2015-06-29 | 2015-08-07 | 690d | finish no earlier than 2015-08-07 |
| 55 |  | Document rationale for SHUSA metrics | 5d | 2015-07-13 | 2015-07-17 | 705d | finish no earlier than 2015-07-17 |
| 56 |  | Document IT requirements for SHUSA metrics | 15d | 2015-07-13 | 2015-07-31 | 695d | finish no earlier than 2015-07-31 |
| 57 |  | Consolidate metrics, limits and thresholds into quantifiable statements for material risks | 3d | 2015-08-10 | 2015-08-12 | 687d | finish no earlier than 2015-08-12 |
| 58 |  | Socialize quantitative statements with stakeholders (SHUSA) | 2d | 2015-08-13 | 2015-08-14 | 685d | finish no earlier than 2015-08-14 |
| 59 |  | Socialize quantitative statements with stakeholders (SBNA) | 2d | 2015-08-13 | 2015-08-14 |  |  |
| 60 |  | Socialize quantitative statements with stakeholders (SCUSA) | 2d | 2015-08-13 | 2015-08-14 |  |  |
| 61 |  | Finalized quantitative risk appetite statements for material risks | 0d | 2015-08-14 | 2015-08-14 | 685d | finish no earlier than 2015-08-14 |
| 62 | 1.1.1.2.1.7 | **Consolidate qualitative and quantitative statements into SHUSA-level RAS and socialize with stakeholders** | 10d | 2015-08-17 | 2015-08-28 | 5d |  |
| 63 |  | Draft SHUSA-level RAS | 5d | 2015-08-17 | 2015-08-21 | 680d | finish no earlier than 2015-08-21 |
| 64 |  | Socialize SHUSA-level RAS with stakeholders (SHUSA) | 5d | 2015-08-24 | 2015-08-28 | 675d | finish no earlier than 2015-08-28 |
| 65 |  | Socialize SHUSA-level RAS with stakeholders (SBNA) | 5d | 2015-08-24 | 2015-08-28 |  |  |
| 66 |  | Socialize SHUSA-level RAS with stakeholders (SCUSA) | 5d | 2015-08-24 | 2015-08-28 |  |  |
| 67 |  | Final draft of SHUSA-level RAS | 0d | 2015-08-28 | 2015-08-28 | 675d | finish no earlier than 2015-08-28 |
| 68 | 1.1.1.2.2 | **SHUSA-level RAS supporting processes and documentation** | 30d | 2015-07-06 | 2015-08-14 | 15d |  |
| 69 | 1.1.1.2.2.1 | **Document SHUSA-level RAS reporting, monitoring and escalation processes** | 20d | 2015-07-06 | 2015-07-31 | 15d |  |
| 70 |  | Draft SHUSA-level RAS reporting and monitoring process | 15d | 2015-07-06 | 2015-07-24 | 700d | finish no earlier than 2015-07-24 |

| ID | WBS | Task | Duration | Start | Finish | Total float | Constraint |
| --- | --- | --- | --- | --- | --- | --- | --- |
| 71 |  | Draft SHUSA-level RAS breach escalation process and detail consequences | 15d | 2015-07-06 | 2015-07-24 | 700d | finish no earlier than 2015-07-24 |
| 72 |  | Socialize processes with stakeholders (SHUSA) | 5d | 2015-07-27 | 2015-07-31 |  |  |
| 73 |  | Socialize processes with stakeholders (SBNA) | 5d | 2015-07-27 | 2015-07-31 |  |  |
| 74 |  | Socialize processes with stakeholders (SCUSA) | 5d | 2015-07-27 | 2015-07-31 | 695d | finish no earlier than 2015-07-31 |
| 75 |  | Finalized SHUSA-level RAS reporting, monitoring and escalation processes | 0d | 2015-07-31 | 2015-07-31 | 695d | finish no earlier than 2015-07-31 |
| 76 | 1.1.1.2.2.2 | **Document SHUSA-level RAS development and governance process** | 20d | 2015-07-20 | 2015-08-14 | 15d |  |
| 77 |  | Draft SHUSA-level RAS development documentation and governance process | 15d | 2015-07-20 | 2015-08-07 | 690d | finish no earlier than 2015-08-07 |
| 78 |  | Socialize documents with stakeholders (SHUSA) | 5d | 2015-08-10 | 2015-08-14 |  |  |
| 79 |  | Socialize documents with stakeholders (SBNA) | 5d | 2015-08-10 | 2015-08-14 |  |  |
| 80 |  | Socialize documents with stakeholders (SCUSA) | 5d | 2015-08-10 | 2015-08-14 | 685d | finish no earlier than 2015-08-14 |
| 81 |  | Finalized SHUSA-level RAS development documentation and governance process | 0d | 2015-08-14 | 2015-08-14 | 685d | finish no earlier than 2015-08-14 |
| 82 | 1.1.1.2.3 | **SHUSA-level RAS framework approval process** | 45d | 2015-08-31 | 2015-10-30 | 630d |  |
| 83 | 1.1.1.2.3.1 | **Educate Board and senior committees on RAS and secure approval** | 45d | 2015-08-31 | 2015-10-30 | 630d |  |
| 84 |  | Create materials for Board training on RAS roles & responsibilities | 5d | 2015-08-31 | 2015-09-04 | 670d | finish no earlier than 2015-09-04 |
| 85 |  | Create materials for Board training on RAS structure and metrics | 5d | 2015-08-31 | 2015-09-04 | 670d | finish no earlier than 2015-09-04 |
| 86 |  | Deliver Board training session(s) | 5d | 2015-09-21 | 2015-09-25 | 655d | finish no earlier than 2015-09-25 |
| 87 |  | Present SHUSA-level RAS to ERMC/EMC | 10d | 2015-08-31 | 2015-09-11 | 665d | finish no earlier than 2015-09-11 |
| 88 |  | Present CDR presentation to Madrid for review | 10d | 2015-08-31 | 2015-09-11 | 665d | finish no earlier than 2015-09-11 |
| 89 |  | Update RAS given feedback from SHUSA and Madrid risk committees | 5d | 2015-09-14 | 2015-09-18 | 660d | finish no earlier than 2015-09-18 |
| 90 |  | Present to Board/BERC for review | 10d | 2015-09-21 | 2015-10-02 | 650d | finish no earlier than 2015-10-02 |
| 91 |  | Present SHUSA-level RAS to CDR | 5d | 2015-10-05 | 2015-10-09 | 645d | finish no earlier than 2015-10-09 |
| 92 |  | Update RAS given feedback from CDR | 10d | 2015-10-12 | 2015-10-23 | 635d | finish no earlier than 2015-10-23 |
| 93 |  | Submit SHUSA-level RAS for Board approval | 5d | 2015-10-26 | 2015-10-30 | 630d | finish no earlier than 2015-10-30 |
| 94 |  | Board-approved SHUSA-level RAS | 0d | 2015-10-30 | 2015-10-30 | 630d | finish no earlier than 2015-10-30 |
| 95 | 1.1.1.3 | **Cascaded RAS across enterprise through creation of subsidiary-level and, where ncessary, BU-level statements** | 260d? | 2015-06-01 | 2016-05-27 | 50d |  |
| 96 | 1.1.1.3.1 | **Assessment of short-term SCUSA RAS** | 20d | 2015-06-01 | 2015-06-26 | 720d |  |
| 97 | 1.1.1.3.1.1 | **Assess SCUSA RAS and determine plan for short-term remediation** | 5d | 2015-06-01 | 2015-06-05 | 735d |  |
| 98 |  | Assess current state of SCUSA RAS, focusing on pre-determined "pain points" (not reviewing RAS in entirety) | 1d | 2015-06-01 | 2015-06-01 | 739d | finish no earlier than 2015-06-01 |
| 99 |  | Determine plan for short-term remediation | 5d | 2015-06-01 | 2015-06-05 | 735d | finish no earlier than 2015-06-05 |
| 100 |  | Finalized plan for SCUSA RAS short-term remediation | 0d | 2015-06-05 | 2015-06-05 | 735d | finish no earlier than 2015-06-05 |
| 101 | 1.1.1.3.1.2 | **Implement remediations in the form of updated key limits** | 15d | 2015-06-08 | 2015-06-26 | 720d |  |
| 102 |  | Redefine SCUSA liquidity limit | 5d | 2015-06-08 | 2015-06-12 | 730d | finish no earlier than 2015-06-12 |
| 103 |  | Redefine SCUSA RWA limit | 5d | 2015-06-08 | 2015-06-12 | 730d | finish no earlier than 2015-06-12 |
| 104 |  | Redefine SCUSA total asset limit | 5d | 2015-06-08 | 2015-06-12 | 730d | finish no earlier than 2015-06-12 |
| 105 |  | Socialize updated limits and all proposed remediations to SCUSA RAS | 5d | 2015-06-15 | 2015-06-19 | 725d | finish no earlier than 2015-06-19 |
| 106 |  | Update SCUSA RAS based on agreed upon remediations | 5d | 2015-06-22 | 2015-06-26 | 720d | finish no earlier than 2015-06-26 |
| 107 |  | Finalized SCUSA RAS (for short-term use) | 0d | 2015-06-26 | 2015-06-26 | 720d | finish no earlier than 2015-06-26 |
| 108 | 1.1.1.3.2 | **Definition of approach for cascading SHUSA-level RAS to subsidiaries and levels below** | 10d | 2015-08-03 | 2015-08-14 | 5d |  |
| 109 | 1.1.1.3.2.1 | **Document approach for cascading SHUSA-level RAS to subsidiaries and levels below** | 10d | 2015-08-03 | 2015-08-14 | 5d |  |
| 110 |  | Determine organizational levels to which cascading is appropriate and draft planned approach | 5d | 2015-08-03 | 2015-08-07 | 690d | finish no earlier than 2015-08-07 |
| 111 |  | Facilitate review and challenge sessions for cascading approach with stakeholders (SHUSA) | 3d | 2015-08-10 | 2015-08-12 | 687d | finish no earlier than 2015-08-12 |
| 112 |  | Facilitate review and challenge sessions for cascading approach with stakeholders (SBNA) | 3d | 2015-08-10 | 2015-08-12 |  |  |
| 113 |  | Facilitate review and challenge sessions for cascading approach with stakeholders (SCUSA) | 3d | 2015-08-10 | 2015-08-12 |  |  |
| 114 |  | Update documentation for cascading approach, given stakeholder input | 3d | 2015-08-12 | 2015-08-14 | 685d | finish no earlier than 2015-08-14 |
| 115 |  | Finalized plan for cascading SHUSA-level RAS to subsidiaries and levels below | 0d | 2015-08-14 | 2015-08-14 | 685d | finish no earlier than 2015-08-14 |
| 116 | 1.1.1.3.3 | **RAS for priority subsidiaries SBNA & SCUSA – follow similar process as SHUSA** | 138d? | 2015-08-17 | 2016-02-24 | 0d |  |
| 117 | 1.1.1.3.3.1 | **Detail material risks specific to SBNA and SCUSA (leveraging SHUSA-level list, but making additions as necessary)** | 10d | 2015-08-17 | 2015-08-28 | 0d |  |
| 118 |  | Identify and document subsidiary-specific risks and constraints, including those not captured in SHUSA-level RAS(SBNA) | 5d | 2015-08-17 | 2015-08-21 | 680d | finish no earlier than 2015-08-21 |
| 119 |  | Identify and document subsidiary-specific risks and constraints, including those not captured in SHUSA-level RAS(SCUSA) | 5d | 2015-08-17 | 2015-08-21 |  |  |
| 120 |  | Identify and document constraints from Group, regulators and other stakeholders (i.e. ratings agencies) | 5d | 2015-08-17 | 2015-08-21 | 680d | finish no earlier than 2015-08-21 |
| 121 |  | Facilitate review and challenge session for list of material risks with key stakeholders (SHUSA) | 3d | 2015-08-24 | 2015-08-26 | 677d | finish no earlier than 2015-08-26 |
| 122 |  | Facilitate review and challenge session for list of material risks with key stakeholders (SBNA) | 3d | 2015-08-24 | 2015-08-26 |  |  |
| 123 |  | Facilitate review and challenge session for list of material risks with key stakeholders (SCUSA) | 3d | 2015-08-24 | 2015-08-26 |  |  |
| 124 |  | Update documentation of subsidiary-specific risks and constraints, given stakeholder input(SBNA) | 2d | 2015-08-27 | 2015-08-28 | 675d | finish no earlier than 2015-08-28 |
| 125 |  | Update documentation of subsidiary-specific risks and constraints, given stakeholder input(SCUSA) | 2d | 2015-08-27 | 2015-08-28 |  |  |
| 126 |  | Finalized documentation of material risks and constraints specific to priority subsidiaries | 0d | 2015-08-17 | 2015-08-17 | 684d | finish no earlier than 2015-08-17 |
| 127 | 1.1.1.3.3.2 | **For each risk, determine a qualitative risk appetite statement (leveraging SHUSA-level RAS)** | 15d? | 2015-08-31 | 2015-09-18 | 0d |  |
| 128 |  | Determine SHUSA-level RAS statements relevant to subsidiaries(SBNA) | 3d | 2015-08-31 | 2015-09-02 | 672d | finish no earlier than 2015-09-02 |
| 129 |  | Determine SHUSA-level RAS statements relevant to subsidiaries(SCUSA) | 1d? | 2015-08-31 | 2015-08-31 |  |  |
| 130 |  | Detail statements for material risks specific to the subsidiary, not captured in SHUSA-level RAS(SBNA) | 7d | 2015-09-03 | 2015-09-11 | 665d | finish no earlier than 2015-09-11 |
| 131 |  | Detail statements for material risks specific to the subsidiary, not captured in SHUSA-level RAS(SCUSA) | 7d | 2015-09-03 | 2015-09-11 |  |  |
| 132 |  | Consolidate into subsidiary specific-list of statements (leverage existing work) (SBNA) | 3d | 2015-09-14 | 2015-09-16 | 662d | finish no earlier than 2015-09-16 |
| 133 |  | Consolidate into subsidiary specific-list of statements (leverage existing work) (SCUSA) | 3d | 2015-09-14 | 2015-09-16 |  |  |
| 134 |  | Socialize SBNA and SCUSA qualitative statements with key stakeholders (SHUSA) | 2d | 2015-09-17 | 2015-09-18 | 660d | finish no earlier than 2015-09-18 |
| 135 |  | Socialize SBNA and SCUSA qualitative statements with key stakeholders (SBNA) | 2d | 2015-09-17 | 2015-09-18 |  |  |
| 136 |  | Socialize SBNA and SCUSA qualitative statements with key stakeholders (SCUSA) | 2d | 2015-09-17 | 2015-09-18 |  |  |
| 137 |  | Finalized qualitative risk appetite statements for subsidiary-specific risks | 0d | 2015-09-18 | 2015-09-18 | 660d | finish no earlier than 2015-09-18 |
| 138 | 1.1.1.3.3.3 | **For quantifiable statements, identify key metrics and calibrate limits (leveraging SHUSA-level RAS)** | 40d | 2015-09-14 | 2015-11-06 | 0d |  |
| 139 |  | Determine SHUSA-level RAS metrics relevant to subsidiaries(SBNA) | 3d | 2015-09-14 | 2015-09-16 |  |  |
| 140 |  | Determine SHUSA-level RAS metrics relevant to subsidiaries(SCUSA) | 3d | 2015-09-14 | 2015-09-16 | 662d | finish no earlier than 2015-09-16 |

| ID | WBS | Task | Duration | Start | Finish | Total float | Constraint |
| --- | --- | --- | --- | --- | --- | --- | --- |
| 141 |  | Identify metrics for material risks specific to the subsidiary, not captured in SHUSA-level RAS, and compile in list with relevant metrics from SHUSA-level RAS(SBNA) | 2d | 2015-09-17 | 2015-09-18 |  |  |
| 142 |  | Identify metrics for material risks specific to the subsidiary, not captured in SHUSA-level RAS, and compile in list with relevant metrics from SHUSA-level RAS(SCUSA) | 2d | 2015-09-17 | 2015-09-18 | 660d | finish no earlier than 2015-09-18 |
| 143 |  | Facilitate review and challenge session for proposed metrics, limits and thresholds with key stakeholders (SHUSA) | 1d | 2015-09-28 | 2015-09-28 | 654d | finish no earlier than 2015-09-28 |
| 144 |  | Facilitate review and challenge session for proposed metrics, limits and thresholds with key stakeholders (SBNA) | 1d | 2015-09-28 | 2015-09-28 |  |  |
| 145 |  | Facilitate review and challenge session for proposed metrics, limits and thresholds with key stakeholders (SCUSA) | 1d | 2015-09-28 | 2015-09-28 |  |  |
| 146 |  | Update list of subsidiary-specific metrics, given stakeholder input, and identify and document owners for each metric(SBNA) | 4d | 2015-09-29 | 2015-10-02 | 650d | finish no earlier than 2015-10-02 |
| 147 |  | Update list of subsidiary-specific metrics, given stakeholder input, and identify and document owners for each metric(SCUSA) | 4d | 2015-09-29 | 2015-10-02 |  |  |
| 148 |  | Detail limits and thresholds for list of subsidiary-specific metrics(SBNA) | 5d | 2015-09-21 | 2015-09-25 | 655d | finish no earlier than 2015-09-25 |
| 149 |  | Detail limits and thresholds for list of subsidiary-specific metrics(SCUSA) | 5d | 2015-09-21 | 2015-09-25 |  |  |
| 150 |  | Calibrate limits for subsidiary risks, ensure subsidiary-level limits align to SHUSA-level limits(SBNA) | 30d | 2015-09-21 | 2015-10-30 | 630d | finish no earlier than 2015-10-30 |
| 151 |  | Calibrate limits for subsidiary risks, ensure subsidiary-level limits align to SHUSA-level limits(SCUSA) | 30d | 2015-09-21 | 2015-10-30 |  |  |
| 152 |  | Document rationale for SHUSA metrics | 5d | 2015-09-21 | 2015-09-25 | 655d | finish no earlier than 2015-09-25 |
| 153 |  | Document IT requirements for SHUSA metrics | 15d | 2015-09-14 | 2015-10-02 | 650d | finish no earlier than 2015-10-02 |
| 154 |  | Consolidate metrics, limits and thresholds into quantifiable statements for subsidiary-specific risks(SBNA) | 3d | 2015-11-02 | 2015-11-04 | 627d | finish no earlier than 2015-11-04 |
| 155 |  | Consolidate metrics, limits and thresholds into quantifiable statements for subsidiary-specific risks(SCUSA) | 3d | 2015-11-02 | 2015-11-04 |  |  |
| 156 |  | Socialize SBNA and SCUSA quantitative statements with stakeholders (SHUSA) | 2d | 2015-11-05 | 2015-11-06 | 625d | finish no earlier than 2015-11-06 |
| 157 |  | Socialize SBNA and SCUSA quantitative statements with stakeholders (SBNA) | 2d | 2015-11-05 | 2015-11-06 |  |  |
| 158 |  | Socialize SBNA and SCUSA quantitative statements with stakeholders (SCUSA) | 2d | 2015-11-05 | 2015-11-06 |  |  |
| 159 |  | Finalized quantitative risk appetite statements for subsidiary-specific risks | 0d | 2015-11-06 | 2015-11-06 | 625d | finish no earlier than 2015-11-06 |
| 160 | 1.1.1.3.3.4 | **Consolidate qualitative and quantitative statements into SBNA RAS and SCUSA RAS and socialize with stakeholders** | 10d | 2015-11-09 | 2015-11-20 | 0d |  |
| 161 |  | Draft SBNA RAS | 5d | 2015-11-09 | 2015-11-13 | 620d | finish no earlier than 2015-11-13 |
| 162 |  | Draft SCUSA RAS | 5d | 2015-11-09 | 2015-11-13 |  |  |
| 163 |  | Socialize SBNA RAS and SCUSA RAS with stakeholders (SHUSA) | 5d | 2015-11-16 | 2015-11-20 |  |  |
| 164 |  | Socialize SBNA RAS and SCUSA RAS with stakeholders (SBNA) | 5d | 2015-11-16 | 2015-11-20 |  |  |
| 165 |  | Socialize SBNA RAS and SCUSA RAS with stakeholders (SCUSA) | 5d | 2015-11-16 | 2015-11-20 | 615d | finish no earlier than 2015-11-20 |
| 166 |  | Final drafts of SBNA RAS and SCUSA RAS | 0d | 2015-11-20 | 2015-11-20 | 615d | finish no earlier than 2015-11-20 |
| 167 | 1.1.1.3.3.5 | **Secure Board approval of RAS for priority subsidiaries** | 30d | 2015-11-20 | 2015-12-31 | 0d |  |
| 168 |  | 6-week buffer for governance process(SHUSA) | 30d | 2015-11-20 | 2015-12-31 | 586d | finish no earlier than 2015-12-31 |
| 169 |  | 6-week buffer for governance process(SBNA) | 30d | 2015-11-20 | 2015-12-31 |  |  |
| 170 |  | 6-week buffer for governance process(SCUSA) | 30d | 2015-11-20 | 2015-12-31 |  |  |
| 171 |  | Board-approved SHUSA-level RAS | 0d | 2015-12-31 | 2015-12-31 | 586d | finish no earlier than 2015-12-31 |
| 172 | 1.1.1.3.3.6 | **Communicate SHUSA, SBNA, and SCUSA RAS to enterprise** | 40d | 2015-12-31 | 2016-02-24 | 0d |  |
| 173 |  | Create communication materials to aid in socialization process(SHUSA) | 10d | 2015-12-31 | 2016-01-13 | 577d | finish no earlier than 2016-01-13 |
| 174 |  | Create communication materials to aid in socialization process(SBNA) | 10d | 2015-12-31 | 2016-01-13 |  |  |
| 175 |  | Create communication materials to aid in socialization process(SCUSA) | 10d | 2015-12-31 | 2016-01-13 |  |  |
| 176 |  | Facilitate training, town halls, etc. to communicate RAS to enterprise(SHUSA) | 30d | 2016-01-14 | 2016-02-24 | 547d | finish no earlier than 2016-02-24 |
| 177 |  | Facilitate training, town halls, etc. to communicate RAS to enterprise(SBNA) | 30d | 2016-01-14 | 2016-02-24 |  |  |
| 178 |  | Facilitate training, town halls, etc. to communicate RAS to enterprise(SCUSA) | 30d | 2016-01-14 | 2016-02-24 |  |  |
| 179 |  | Completed formal communication process to enterprise | 0d | 2016-02-24 | 2016-02-24 | 547d | finish no earlier than 2016-02-24 |
| 180 | 1.1.1.3.4 | **RAS for remainder of subsidiaries and select Bus (SIS NY, Puerto Rico, Miami)** | 85d | 2016-02-01 | 2016-05-27 |  |  |
| 181 | 1.1.1.3.4.1 | **Definition of approach for cascading SHUSA-level RAS to subsidiaries and levels below** | 85d | 2016-02-01 | 2016-05-27 |  |  |
| 182 | 1.1.1.3.4.1.1 | **Document approach for cascading SHUSA-level RAS to subsidiaries and levels below** | 1d? | 2016-02-01 | 2016-02-01 |  |  |
| 183 |  | Determine organizational levels to which cascading is appropriate and draft planned approach | 1d? | 2016-02-01 | 2016-02-01 |  |  |
| 184 |  | Facilitate review and challenge sessions for cascading approach with stakeholders (SIS NY) | 1d? | 2016-02-01 | 2016-02-01 |  |  |
| 185 |  | Facilitate review and challenge sessions for cascading approach with stakeholders (Puerto Rico) | 1d? | 2016-02-01 | 2016-02-01 |  |  |
| 186 |  | Facilitate review and challenge sessions for cascading approach with stakeholders (Miami) | 1d? | 2016-02-01 | 2016-02-01 |  |  |
| 187 |  | Update documentation for cascading approach, given stakeholder input | 1d? | 2016-02-01 | 2016-02-01 |  |  |
| 188 |  | Finalized plan for cascading SHUSA-level RAS to subsidiaries and levels below | 1d? | 2016-02-01 | 2016-02-01 |  |  |
| 189 | 1.1.1.3.4.2 | **RAS for SIS NY, Puerto Rico, Miami – follow similar process as SHUSA** | 85d? | 2016-02-01 | 2016-05-27 |  |  |
| 190 | 1.1.1.3.4.2.1 | **Detail material risks specific to SIS NY, Puerto Rico, Miami (leveraging SHUSA-level list, but making additions as necessary)** | 85d | 2016-02-01 | 2016-05-27 |  |  |
| 191 |  | Identify and document subsidiary-specific risks and constraints, including those not captured in SHUSA-level RAS(SIS NY) | 1d? | 2016-02-01 | 2016-02-01 |  |  |
| 192 |  | Identify and document subsidiary-specific risks and constraints, including those not captured in SHUSA-level RAS(Puerto Rico) | 1d? | 2016-02-01 | 2016-02-01 |  |  |
| 193 |  | Identify and document subsidiary-specific risks and constraints, including those not captured in SHUSA-level RAS(Miami) | 1d? | 2016-02-01 | 2016-02-01 |  |  |
| 194 |  | Identify and document constraints from Group, regulators and other stakeholders (i.e. ratings agencies) | 1d? | 2016-02-01 | 2016-02-01 |  |  |
| 195 |  | Facilitate review and challenge session for list of material risks with key stakeholders (SHUSA) | 1d? | 2016-02-01 | 2016-02-01 |  |  |
| 196 |  | Facilitate review and challenge session for list of material risks with key stakeholders (SIS NY) | 1d? | 2016-02-01 | 2016-02-01 |  |  |
| 197 |  | Facilitate review and challenge session for list of material risks with key stakeholders (Puerto Rico) | 1d? | 2016-02-01 | 2016-02-01 |  |  |
| 198 |  | Facilitate review and challenge session for list of material risks with key stakeholders (Miami) | 1d? | 2016-02-01 | 2016-02-01 |  |  |
| 199 |  | Update documentation of subsidiary-specific risks and constraints, given stakeholder input(SIS NY) | 1d? | 2016-02-01 | 2016-02-01 |  |  |
| 200 |  | Update documentation of subsidiary-specific risks and constraints, given stakeholder input(Puerto Rico) | 1d? | 2016-02-01 | 2016-02-01 |  |  |
| 201 |  | Update documentation of subsidiary-specific risks and constraints, given stakeholder input(Miami) | 1d? | 2016-02-01 | 2016-02-01 |  |  |
| 202 |  | Finalized documentation of material risks and constraints specific to priority subsidiaries | 1d? | 2016-02-01 | 2016-02-01 |  |  |
| 203 | 1.1.1.3.4.2.2 | **For each risk, determine a qualitative risk appetite statement (leveraging SHUSA-level RAS)** | 85d | 2016-02-01 | 2016-05-27 |  |  |
| 204 |  | Determine SHUSA-level RAS statements relevant to subsidiaries(SIS NY) | 1d? | 2016-02-01 | 2016-02-01 |  |  |
| 205 |  | Determine SHUSA-level RAS statements relevant to subsidiaries(Puerto Rico) | 1d? | 2016-02-01 | 2016-02-01 |  |  |
| 206 |  | Determine SHUSA-level RAS statements relevant to subsidiaries(Miami) | 1d? | 2016-02-01 | 2016-02-01 |  |  |
| 207 |  | Detail statements for material risks specific to the subsidiary, not captured in SHUSA-level RAS(SIS NY) | 1d? | 2016-02-01 | 2016-02-01 |  |  |
| 208 |  | Detail statements for material risks specific to the subsidiary, not captured in SHUSA-level RAS(Puerto Rico) | 1d? | 2016-02-01 | 2016-02-01 |  |  |
| 209 |  | Detail statements for material risks specific to the subsidiary, not captured in SHUSA-level RAS(Miami) | 1d? | 2016-02-01 | 2016-02-01 |  |  |
| 210 |  | Consolidate into subsidiary specific-list of statements (leverage existing work) (SIS NY) | 1d? | 2016-02-01 | 2016-02-01 |  |  |

| ID | WBS | Task | Duration | Start | Finish | Total float | Constraint |
| --- | --- | --- | --- | --- | --- | --- | --- |
| 211 |  | Consolidate into subsidiary specific-list of statements (leverage existing work) (Puerto Rico) | 1d? | 2016-02-01 | 2016-02-01 |  |  |
| 212 |  | Consolidate into subsidiary specific-list of statements (leverage existing work) (Miami) | 1d? | 2016-02-01 | 2016-02-01 |  |  |
| 213 |  | Socialize SIS NY, Puerto Rico, Miami qualitative statements with key stakeholders (SHUSA) | 1d? | 2016-02-01 | 2016-02-01 |  |  |
| 214 |  | Socialize SIS NY, Puerto Rico, Miami qualitative statements with key stakeholders (SIS NY) | 1d? | 2016-02-01 | 2016-02-01 |  |  |
| 215 |  | Socialize SIS NY, Puerto Rico, Miami qualitative statements with key stakeholders (Puerto Rico) | 1d? | 2016-02-01 | 2016-02-01 |  |  |
| 216 |  | Socialize SIS NY, Puerto Rico, Miami qualitative statements with key stakeholders (Miami) | 1d? | 2016-02-01 | 2016-02-01 |  |  |
| 217 |  | Finalized qualitative risk appetite statements for subsidiary-specific risks | 1d? | 2016-02-01 | 2016-02-01 |  |  |
| 218 | 1.1.1.3.4.2.3 | **For quantifiable statements, identify key metrics and calibrate limits (leveraging SHUSA-level RAS)** | 85d | 2016-02-01 | 2016-05-27 |  |  |
| 219 |  | Determine SHUSA-level RAS metrics relevant to subsidiaries(SIS NY) | 1d? | 2016-02-01 | 2016-02-01 |  |  |
| 220 |  | Determine SHUSA-level RAS metrics relevant to subsidiaries(Puerto Rico) | 1d? | 2016-02-01 | 2016-02-01 |  |  |
| 221 |  | Determine SHUSA-level RAS metrics relevant to subsidiaries(Miami) | 1d? | 2016-02-01 | 2016-02-01 |  |  |
| 222 |  | Identify metrics for material risks specific to the subsidiary, not captured in SHUSA-level RAS, and compile in list with relevant metrics from SHUSA-level RAS(SIS NY) | 1d? | 2016-02-01 | 2016-02-01 |  |  |
| 223 |  | Identify metrics for material risks specific to the subsidiary, not captured in SHUSA-level RAS, and compile in list with relevant metrics from SHUSA-level RAS(Puerto Rico) | 1d? | 2016-02-01 | 2016-02-01 |  |  |
| 224 |  | Identify metrics for material risks specific to the subsidiary, not captured in SHUSA-level RAS, and compile in list with relevant metrics from SHUSA-level RAS(Miami) | 1d? | 2016-02-01 | 2016-02-01 |  |  |
| 225 |  | Facilitate review and challenge session for proposed metrics, limits and thresholds with key stakeholders (SHUSA) | 1d? | 2016-02-01 | 2016-02-01 |  |  |
| 226 |  | Facilitate review and challenge session for proposed metrics, limits and thresholds with key stakeholders (SIS NY) | 1d? | 2016-02-01 | 2016-02-01 |  |  |
| 227 |  | Facilitate review and challenge session for proposed metrics, limits and thresholds with key stakeholders (Puerto Rico) | 1d? | 2016-02-01 | 2016-02-01 |  |  |
| 228 |  | Facilitate review and challenge session for proposed metrics, limits and thresholds with key stakeholders (Miami) | 1d? | 2016-02-01 | 2016-02-01 |  |  |
| 229 |  | Update list of subsidiary-specific metrics, given stakeholder input, and identify and document owners for each metric(SIS NY) | 1d? | 2016-02-01 | 2016-02-01 |  |  |
| 230 |  | Update list of subsidiary-specific metrics, given stakeholder input, and identify and document owners for each metric(Puerto Rico) | 1d? | 2016-02-01 | 2016-02-01 |  |  |
| 231 |  | Update list of subsidiary-specific metrics, given stakeholder input, and identify and document owners for each metric(Miami) | 1d? | 2016-02-01 | 2016-02-01 |  |  |
| 232 |  | Detail limits and thresholds for list of subsidiary-specific metrics(SIS NY) | 1d? | 2016-02-01 | 2016-02-01 |  |  |
| 233 |  | Detail limits and thresholds for list of subsidiary-specific metrics(Puerto Rico) | 1d? | 2016-02-01 | 2016-02-01 |  |  |
| 234 |  | Detail limits and thresholds for list of subsidiary-specific metrics(Miami) | 1d? | 2016-02-01 | 2016-02-01 |  |  |
| 235 |  | Calibrate limits for subsidiary risks, ensure subsidiary-level limits align to SHUSA-level limits(SIS NY) | 1d? | 2016-02-01 | 2016-02-01 |  |  |
| 236 |  | Calibrate limits for subsidiary risks, ensure subsidiary-level limits align to SHUSA-level limits(Puerto Rico) | 1d? | 2016-02-01 | 2016-02-01 |  |  |
| 237 |  | Calibrate limits for subsidiary risks, ensure subsidiary-level limits align to SHUSA-level limits(Miami) | 1d? | 2016-02-01 | 2016-02-01 |  |  |
| 238 |  | Document rationale for SHUSA metrics | 1d? | 2016-02-01 | 2016-02-01 |  |  |
| 239 |  | Document IT requirements for SHUSA metrics | 1d? | 2016-02-01 | 2016-02-01 |  |  |
| 240 |  | Consolidate metrics, limits and thresholds into quantifiable statements for subsidiary-specific risks(SIS NY) | 1d? | 2016-02-01 | 2016-02-01 |  |  |
| 241 |  | Consolidate metrics, limits and thresholds into quantifiable statements for subsidiary-specific risks(Puerto Rico) | 1d? | 2016-02-01 | 2016-02-01 |  |  |
| 242 |  | Consolidate metrics, limits and thresholds into quantifiable statements for subsidiary-specific risks(Miami) | 1d? | 2016-02-01 | 2016-02-01 |  |  |
| 243 |  | Socialize SBNA and SCUSA quantitative statements with stakeholders (SHUSA) | 1d? | 2016-02-01 | 2016-02-01 |  |  |
| 244 |  | Socialize SBNA and SCUSA quantitative statements with stakeholders (SIS NY) | 1d? | 2016-02-01 | 2016-02-01 |  |  |
| 245 |  | Socialize SBNA and SCUSA quantitative statements with stakeholders (Puerto Rico) | 1d? | 2016-02-01 | 2016-02-01 |  |  |
| 246 |  | Socialize SBNA and SCUSA quantitative statements with stakeholders (Miami) | 1d? | 2016-02-01 | 2016-02-01 |  |  |
| 247 |  | Finalized quantitative risk appetite statements for subsidiary-specific risks | 1d? | 2016-02-01 | 2016-02-01 |  |  |
| 248 | 1.1.1.3.4.2.4 | **Consolidate qualitative and quantitative statements into SIS NY RAS, Puerto Rico RAS and Miami RAS socialize with stakeholders** | 85d | 2016-02-01 | 2016-05-27 |  |  |
| 249 |  | Draft SIS NY RAS | 1d? | 2016-02-01 | 2016-02-01 |  |  |
| 250 |  | Draft Puerto Rico RAS | 1d? | 2016-02-01 | 2016-02-01 |  |  |
| 251 |  | Draft Miami RAS | 1d? | 2016-02-01 | 2016-02-01 |  |  |
| 252 |  | Socialize SIS NY RAS, Puerto Rico RAS and Miami RAS with stakeholders (SHUSA) | 1d? | 2016-02-01 | 2016-02-01 |  |  |
| 253 |  | Socialize SIS NY RAS, Puerto Rico RAS and Miami RAS with stakeholders (SIS NY RAS) | 1d? | 2016-02-01 | 2016-02-01 |  |  |
| 254 |  | Socialize SIS NY RAS, Puerto Rico RAS and Miami RAS with stakeholders (Puerto Rico RAS) | 1d? | 2016-02-01 | 2016-02-01 |  |  |
| 255 |  | Socialize SIS NY RAS, Puerto Rico RAS and Miami RAS with stakeholders (Miami RAS) | 1d? | 2016-02-01 | 2016-02-01 |  |  |
| 256 |  | Final drafts of SBNA RAS and SCUSA RAS | 1d? | 2016-02-01 | 2016-02-01 |  |  |
| 257 | 1.1.1.3.4.2.5 | **Secure Board approval of RAS for other subsidiaries** | 85d | 2016-02-01 | 2016-05-27 |  |  |
| 258 |  | 6-week buffer for governance process(SHUSA) | 1d? | 2016-02-01 | 2016-02-01 |  |  |
| 259 |  | 6-week buffer for governance process(SIS NY RAS) | 1d? | 2016-02-01 | 2016-02-01 |  |  |
| 260 |  | 6-week buffer for governance process(Puerto Rico RAS) | 1d? | 2016-02-01 | 2016-02-01 |  |  |
| 261 |  | 6-week buffer for governance process(Miami RAS) | 1d? | 2016-02-01 | 2016-02-01 |  |  |
| 262 |  | Board-approved SHUSA-level RAS | 1d? | 2016-02-01 | 2016-02-01 |  |  |
| 263 | 1.1.1.3.4.2.6 | **Communicate SIS NY RAS, Puerto Rico RAS and Miami RAS to enterprise** | 85d | 2016-02-01 | 2016-05-27 |  |  |
| 264 |  | Create communication materials to aid in socialization process(SIS NY) | 1d? | 2016-02-01 | 2016-02-01 |  |  |
| 265 |  | Create communication materials to aid in socialization process(Puerto Rico) | 1d? | 2016-02-01 | 2016-02-01 |  |  |
| 266 |  | Create communication materials to aid in socialization process(Miami) | 1d? | 2016-02-01 | 2016-02-01 |  |  |
| 267 |  | Facilitate training, town halls, etc. to communicate RAS to enterprise(SIS NY) | 1d? | 2016-02-01 | 2016-02-01 |  |  |
| 268 |  | Facilitate training, town halls, etc. to communicate RAS to enterprise(Puerto Rico) | 1d? | 2016-02-01 | 2016-02-01 |  |  |
| 269 |  | Facilitate training, town halls, etc. to communicate RAS to enterprise(Miami) | 1d? | 2016-02-01 | 2016-02-01 |  |  |
| 270 |  | Completed formal communication process to enterprise | 1d? | 2016-02-01 | 2016-02-01 |  |  |
| 271 | 1.1.1.4 | **Embedded RAS in material processes across the enterprise** | 106d | 2015-08-17 | 2016-01-11 | 10d |  |
| 272 | 1.1.1.4.1 | **Initialized embedding of RAS in material processes** | 75d | 2015-08-17 | 2015-11-27 | 10d |  |
| 273 | 1.1.1.4.1.1 | **Test strategic plan against SHUSA-level RAS** | 15d | 2015-08-17 | 2015-09-04 | 10d |  |
| 274 |  | Compare draft of SHUSA-level RAS against draft of strategic plan | 5d | 2015-08-17 | 2015-08-21 | 680d | finish no earlier than 2015-08-21 |
| 275 |  | Identify gaps and adjust strategic plan as necessary | 5d | 2015-08-24 | 2015-08-28 | 675d | finish no earlier than 2015-08-28 |
| 276 |  | Socialize with key stakeholders (SHUSA) | 5d | 2015-08-31 | 2015-09-04 |  |  |
| 277 |  | Socialize with key stakeholders (SBNA) | 5d | 2015-08-31 | 2015-09-04 |  |  |
| 278 |  | Socialize with key stakeholders (SCUSA) | 5d | 2015-08-31 | 2015-09-04 |  | finish no earlier than 2015-09-04 |
| 279 |  | Updated strategic plan, aligned with SHUSA-level RAS | 0d | 2015-09-04 | 2015-09-04 | 670d | finish no earlier than 2015-09-04 |
| 280 | 1.1.1.4.1.2 | **Update process maps for key processes with explicit RAS links** | 20d | 2015-11-02 | 2015-11-27 | 610d |  |

| ID | WBS | Task | Duration | Start | Finish | Predecessors | Total float | Constraint |
| --- | --- | --- | --- | --- | --- | --- | --- | --- |
| 281 |  | Identify processes that should be explicitly linked to RAS (e.g. strategic planning, capital planning) | 5d | 2015-11-02 | 2015-11-06 |  | 625d | finish no earlier than 2015-11-06 |
| 282 |  | Detail nature of process linkage, including alignment to statements, metrics and limits described in the RAS | 5d | 2015-11-02 | 2015-11-06 |  | 625d | finish no earlier than 2015-11-06 |
| 283 |  | Assess degree to which RAS considerations are already embedded in key processes | 5d | 2015-11-02 | 2015-11-06 |  | 625d | finish no earlier than 2015-11-06 |
| 284 |  | Identify gaps and update key process maps accordingly | 15d | 2015-11-09 | 2015-11-27 |  | 610d | finish no earlier than 2015-11-27 |
| 285 |  | Updated process maps for key processes | 0d | 2015-11-27 | 2015-11-27 |  | 610d | finish no earlier than 2015-11-27 |
| 286 | 1.1.1.4.2 | **Plan implementation of RAS in all material processes** | 31d | 2015-11-30 | 2016-01-11 |  | 579d |  |
| 287 |  | Detail plan for implementation of RAS in material processes (e.g. new product and business activity approval process) | 20d | 2015-11-30 | 2015-12-25 |  | 590d | finish no earlier than 2015-12-25 |
| 288 |  | Detail processes/controls to ensure that RAS is being further integrated into all processes until BAU | 10d | 2015-12-28 | 2016-01-08 |  | 580d | finish no earlier than 2016-01-08 |
| 289 |  | Completed plan for implementation in material processes | 0d | 2016-01-11 | 2016-01-11 |  | 579d | finish no earlier than 2016-01-11 |
| 290 | 1.1.1.5 | **Year 2 and Year 3 Priorities** | 522d | 2016-04-01 | 2018-04-01 |  |  |  |
| 291 |  | Continue to cascade the risk appetite statement for the remainder of subsidiaries and business units and ensure alignment with overall SHUSA risk appetite statement | 130d | 2016-01-01 | 2016-06-30 |  |  |  |
| 292 |  | Embed risk appetite statement in key processes at lower levels of the organization | 130d | 2016-01-01 | 2016-06-30 |  |  |  |
| 293 |  | Continue to communicate risk appetite statement throughout the enterprise, including training in the new escalation and remediation process | 131d | 2016-04-01 | 2016-09-30 |  |  |  |
| 294 | 1.1.1.5.4 | **Periodically enhance risk appetite statement based on the latest results of material risk identification and improved risk measurement across the enterprise** | 195d | 2016-10-03 | 2017-06-30 |  | 0d |  |
| 295 |  | Round 1 (including incorporation of risk-based capital metrics) | 65d | 2016-10-03 | 2016-12-30 |  |  |  |
| 296 |  | Round 2 | 65d | 2017-04-03 | 2017-06-30 |  |  |  |
| 297 | 1.1.2 | **Risk Governance & Organization** | 456d | 2014-09-19 | 2016-06-17 |  |  |  |
| 298 | 1.1.2.1 | **List of Deliverables for Sub Work-Stream** | 0d | 2015-06-22 | 2015-06-22 |  |  |  |
| 299 |  | example deliverable (linked to the detail below) | 0d | 2015-06-23 | 2015-06-23 |  |  | finish no earlier than 2015-06-22 |
| 300 | 1.1.2.2 | **Strengthen Board and Management Committee Oversight** | 115d | 2015-06-22 | 2015-11-27 |  |  |  |
| 301 | 1.1.2.2.1 | **Deliverables Detail for Sub Work-Stream** | 115d | 2015-06-22 | 2015-11-27 |  |  |  |
| 302 |  | Diagnostic of Risk Mgmt. Committee effectiveness | 15d | 2015-06-22 | 2015-07-10 |  |  | finish no earlier than 2015-07-10 |
| 303 |  | Diagnostic of Risk Mgmt. Committee Complete | 0d | 2015-07-13 | 2015-07-13 |  |  | finish no earlier than 2015-07-10 |
| 304 |  | Delivery of Board Training (session 1) | 20d | 2015-06-22 | 2015-07-17 |  |  | finish no earlier than 2015-07-17 |
| 305 |  | Board risk training curriculum and schedule | 25d | 2015-07-07 | 2015-08-10 | 306SF |  | finish no earlier than 2015-08-10 |
| 306 |  | Delivery of Board Training (session 2) | 15d | 2015-08-10 | 2015-08-28 |  |  | finish no earlier than 2015-08-28 |
| 307 |  | Board Training Complete | 0d | 2015-08-31 | 2015-08-31 |  |  | finish no earlier than 2015-08-28 |
| 308 |  | Governance and coordination mechanisms between SHUSA and parent | 20d | 2015-07-13 | 2015-08-07 | 302 |  | finish no earlier than 2015-08-07 |
| 309 |  | Definition of composition / mandates / charters for BERC and Level 1 Risk Committees | 45d | 2015-07-20 | 2015-09-18 | 304 |  | finish no earlier than 2015-09-18 |
| 310 |  | Definition of composition / mandates / charters for Level 2 Risk Committees | 45d | 2015-08-31 | 2015-10-30 | 309FS-15d |  | finish no earlier than 2015-10-30 |
| 311 |  | Composition / Mandates / Charters Definitions for BERC and Risk Committees Complete | 0d | 2015-11-02 | 2015-11-02 |  |  | finish no earlier than 2015-10-30 |
| 312 |  | High level assessment and remediation of performance scorecards | 20d | 2015-11-02 | 2015-11-27 | 310 |  | finish no earlier than 2015-11-27 |
| 313 |  | Assessment and Remediation of Performance Scorecards Complete | 0d | 2015-11-30 | 2015-11-30 |  |  | finish no earlier than 2015-11-27 |
| 314 | 1.1.2.3 | **Target Operating Model** | 456d | 2014-09-19 | 2016-06-17 |  |  |  |
| 315 |  | List of Deliverables for Sub Work-Stream | 0d | 2014-09-19 | 2014-09-19 |  |  |  |
| 316 | 1.1.2.3.2 | **Deliverables Detail for Sub Work-Stream** | 260d | 2015-06-22 | 2016-06-17 |  |  |  |
| 317 | 1.1.2.3.2.1 | **Strengthen the structure of risk leadership (SHUSA and subsidiary CROs, Risk Control Officers)** | 25d | 2015-06-22 | 2015-07-24 |  |  |  |
| 318 |  | Formalize subsidiary CRO reporting lines, socialize and refine solution (SHUSA) | 10d | 2015-06-22 | 2015-07-03 |  |  | finish no earlier than 2015-07-03 |
| 319 |  | Define implications of reporting lines (for Performance assessment and hiring/firing authority) (SHUSA) | 10d | 2015-06-29 | 2015-07-10 | 318FS-5d |  | finish no earlier than 2015-07-10 |
| 320 |  | Design 1st LoD risk organization leadership structure including the role of RCO (SHUSA) | 25d | 2015-06-22 | 2015-07-24 |  |  | finish no earlier than 2015-07-24 |
| 321 |  | Formalize subsidiary CRO reporting lines, socialize and refine solution (SBNA) | 10d | 2015-06-22 | 2015-07-03 |  |  |  |
| 322 |  | Define implications of reporting lines (for Performance assessment and hiring/firing authority) (SBNA) | 10d | 2015-06-29 | 2015-07-10 |  |  |  |
| 323 |  | Design 1st LoD risk organization leadership structure including the role of RCO (SBNA) | 25d | 2015-06-22 | 2015-07-24 |  |  |  |
| 324 |  | Formalize subsidiary CRO reporting lines, socialize and refine solution (SCUSA) | 10d | 2015-06-22 | 2015-07-03 |  |  |  |
| 325 |  | Define implications of reporting lines (for Performance assessment and hiring/firing authority) (SCUSA) | 10d | 2015-06-29 | 2015-07-10 |  |  |  |
| 326 |  | Design 1st LoD risk organization leadership structure including the role of RCO (SCUSA) | 25d | 2015-06-22 | 2015-07-24 |  |  |  |
| 327 | 1.1.2.3.2.2 | **Design Target Operating Model aligned with 3LoD principles - by risk type** | 180d | 2015-06-22 | 2016-02-26 |  |  |  |
| 328 |  | Review of existing 1st LoD structure and capabilities | 20d | 2015-06-22 | 2015-07-17 |  |  | finish no earlier than 2015-07-17 |
| 329 | 1.1.2.3.2.2.2 | **Risk type A (Most likely Credit)** | 60d | 2015-06-22 | 2015-09-11 |  |  |  |
| 330 |  | Framework update with refined Roles and Responsibilities splits | 10d | 2015-06-22 | 2015-07-03 |  |  | finish no earlier than 2015-07-03 |
| 331 |  | Formalized Risk group Org. Structure and Talent Assessment | 25d | 2015-07-06 | 2015-08-07 | 330 |  | finish no earlier than 2015-08-07 |
| 332 |  | Implementation Planning, specification of interrelationships | 25d | 2015-08-10 | 2015-09-11 | 331 |  | finish no earlier than 2015-09-11 |
| 333 |  | MILESTONE | 0d | 2015-09-14 | 2015-09-14 | 332 |  | finish no earlier than 2015-09-11 |
| 334 | 1.1.2.3.2.2.3 | **Risk type B (Most likely ERM + RAS + Strategic)** | 60d | 2015-06-22 | 2015-09-11 |  |  |  |
| 335 |  | Framework update with refined Roles and Responsibilities splits | 10d | 2015-06-22 | 2015-07-03 |  |  | finish no earlier than 2015-07-03 |
| 336 |  | Formalized Risk group Org. Structure and Talent Assessment | 25d | 2015-07-06 | 2015-08-07 | 335 |  | finish no earlier than 2015-08-07 |
| 337 |  | Implementation Planning, specification of interrelationships | 25d | 2015-08-10 | 2015-09-11 | 336 |  | finish no earlier than 2015-09-11 |
| 338 |  | MILESTONE | 0d | 2015-09-14 | 2015-09-14 | 337 |  | finish no earlier than 2015-09-11 |
| 339 | 1.1.2.3.2.2.4 | **Risk type C (Most likely Market & Liquidity)** | 60d | 2015-09-14 | 2015-12-04 |  |  |  |
| 340 |  | Framework update with refined Roles and Responsibilities splits | 10d | 2015-09-14 | 2015-09-25 | 332 |  | finish no earlier than 2015-09-25 |
| 341 |  | Formalized Risk group Org. Structure and Talent Assessment | 25d | 2015-09-28 | 2015-10-30 | 340 |  | finish no earlier than 2015-10-30 |
| 342 |  | Implementation Planning, specification of interrelationships | 25d | 2015-11-02 | 2015-12-04 | 341 |  | finish no earlier than 2015-12-04 |
| 343 |  | MILESTONE | 0d | 2015-12-07 | 2015-12-07 | 342 |  | finish no earlier than 2015-12-04 |
| 344 | 1.1.2.3.2.2.5 | **Risk type D (Most likely Compliance)** | 60d | 2015-09-14 | 2015-12-04 |  |  |  |
| 345 |  | Framework update with refined Roles and Responsibilities splits | 10d | 2015-09-14 | 2015-09-25 | 337 |  | finish no earlier than 2015-09-25 |
| 346 |  | Formalized Risk group Org. Structure and Talent Assessment | 25d | 2015-09-28 | 2015-10-30 | 345 |  | finish no earlier than 2015-10-30 |
| 347 |  | Implementation Planning, specification of interrelationships | 25d | 2015-11-02 | 2015-12-04 | 346 |  | finish no earlier than 2015-12-04 |
| 348 |  | MILESTONE | 0d | 2015-12-07 | 2015-12-07 | 347 |  | finish no earlier than 2015-12-04 |
| 349 | 1.1.2.3.2.2.6 | **Risk type E (Most likely Risk Management Information)** | 60d | 2015-12-07 | 2016-02-26 |  |  |  |
| 350 |  | Framework update with refined Roles and Responsibilities splits | 10d | 2015-12-07 | 2015-12-18 | 342 |  | finish no earlier than 2015-12-18 |

| ID | WBS | Task | Duration | Start | Finish | Predecessors | Total float | Constraint |
| --- | --- | --- | --- | --- | --- | --- | --- | --- |
| 351 |  | Formalized Risk group Org. Structure and Talent Assessment | 25d | 2015-12-21 | 2016-01-22 | 350 |  | finish no earlier than 2016-01-22 |
| 352 |  | Implementation Planning, specification of interrelationships | 25d | 2016-01-25 | 2016-02-26 | 351 |  | finish no earlier than 2016-02-26 |
| 353 |  | MILESTONE | 0d | 2016-02-29 | 2016-02-29 | 352 |  | finish no earlier than 2016-02-26 |
| 354 | 1.1.2.3.2.2.7 | **Risk type F (Most likely Capital Risk)** | 60d | 2015-12-07 | 2016-02-26 |  |  |  |
| 355 |  | Framework update with refined Roles and Responsibilities splits | 10d | 2015-12-07 | 2015-12-18 | 347 |  | finish no earlier than 2015-12-18 |
| 356 |  | Formalized Risk group Org. Structure and Talent Assessment | 25d | 2015-12-21 | 2016-01-22 | 355 |  | finish no earlier than 2016-01-22 |
| 357 |  | Implementation Planning, specification of interrelationships | 25d | 2016-01-25 | 2016-02-26 | 356 |  | finish no earlier than 2016-02-26 |
| 358 |  | MILESTONE | 0d | 2016-02-29 | 2016-02-29 | 357 |  | finish no earlier than 2016-02-26 |
| 359 |  | Post Implementation Review (First Round) | 20d | 2015-12-07 | 2016-01-01 | 332FS+60d |  | finish no earlier than 2016-01-01 |
| 360 |  | Post Implementation Review (Second Round) | 20d | 2016-02-29 | 2016-03-25 | 359SS+60d |  | finish no earlier than 2016-03-25 |
| 361 |  | Post Implementation Review (Third Round) | 20d | 2016-05-23 | 2016-06-17 | 360SS+60d |  | finish no earlier than 2016-06-17 |
| 362 |  | Strong and desired culture | 35d | 2016-02-29 | 2016-04-15 | 357 |  |  |
| 363 | 1.1.2.4 | **Years 2-3 Plans** | 522d | 2016-04-01 | 2018-04-01 |  |  |  |
| 364 | 1.1.2.4.1 | **Rollout Performance Assessment and Compensation Frameworks across the Organization** | 1d | 2016-04-01 | 2016-04-01 |  |  |  |
| 365 |  | Authority to set compensation/benefits based on performance and aligned with peers | 1d? | 2016-04-01 | 2016-04-01 |  |  |  |
| 366 |  | Communication and stakeholder engagement | 1d? | 2016-04-01 | 2016-04-01 |  |  |  |
| 367 |  | Updates to performance assessment templates | 1d? | 2016-04-01 | 2016-04-01 |  |  |  |
| 368 |  | Compensation impact analysis | 1d? | 2016-04-01 | 2016-04-01 |  |  |  |
| 369 | 1.1.2.4.2 | **Complete Roll-Out of New Target Operating Model** | 1d? | 2016-04-01 | 2016-04-01 |  |  |  |
| 370 |  | Communications | 1d? | 2016-04-01 | 2016-04-01 |  |  |  |
| 371 |  | Development and delivery of materials to convey organizational changes to the enterprise | 1d? | 2016-04-01 | 2016-04-01 |  |  |  |
| 372 |  | Enterprise-wide training and development of job descriptions with explicit focus on three lines of defense | 1d? | 2016-04-01 | 2016-04-01 |  |  |  |
| 373 | 1.1.2.4.3 | **Develop Talent Management Mechanisms** | 1d? | 2016-04-01 | 2016-04-01 |  |  |  |
| 374 |  | Recruitment and retention mechanisms | 1d? | 2016-04-01 | 2016-04-01 |  |  |  |
| 375 |  | Professional development and job rotation programs, job satisfaction assessments, and compensation structure | 1d? | 2016-04-01 | 2016-04-01 |  |  |  |
| 376 |  | Action plans for necessary remediation efforts | 1d? | 2016-04-01 | 2016-04-01 |  |  |  |
| 377 | 1.1.2.4.4 | **Assess Risk Culture across the Organization** | 1d? | 2016-04-01 | 2016-04-01 |  |  |  |
| 378 |  | Diagnostic of risk culture | 1d? | 2016-04-01 | 2016-04-01 |  |  |  |
| 379 |  | Definition of a multi-year plan to achieve a sound, well-respected risk culture | 1d? | 2016-04-01 | 2016-04-01 |  |  |  |
| 380 | 1.1.3 | **Risk Measurement** | 742d | 2015-05-28 | 2018-04-01 |  | 0d |  |
| 381 | 1.1.3.1 | **Risk Measurement Deliverables** | 97d | 2015-07-28 | 2015-12-10 |  | 602d |  |
| 382 |  | Business Entity Material Risk Program Established for SHUSA | 0d | 2015-12-10 | 2015-12-10 | 458 | 602d |  |
| 383 |  | Business Entity Material Risk Program Established for SBNA | 0d | 2015-07-28 | 2015-07-28 | 580 | 699d |  |
| 384 |  | Business Entity Material Risk Program Established for SCUSA | 0d | 2015-07-28 | 2015-07-28 | 638 | 699d |  |
| 385 |  | Business Entity Material Risk Program Established for New York(SIS) | 0d | 2015-07-28 | 2015-07-28 | 712 | 699d |  |
| 386 |  | Business Entity Material Risk Program Established for Puerto Rico | 0d | 2015-07-28 | 2015-07-28 | 829 | 699d |  |
| 387 |  | Business Entity Material Risk Program Established for Miami | 0d | 2015-07-28 | 2015-07-28 | 888 | 699d |  |
| 388 | 1.1.3.2 | **SHUSA - Business Entity Material Risk Program** | 45d | 2015-09-01 | 2015-10-31 |  |  |  |
| 389 | 1.1.3.2.1 | **Preparation for Aggregation to Create SHUSA Material Risk Inventory** | 11d | 2015-09-01 | 2015-09-15 |  |  |  |
| 390 |  | ERM Collects Risk Inventories from Entity Risk Managers | 6d? | 2015-09-01 | 2015-09-08 |  | 668d | finish no earlier than 2015-09-08 |
| 391 |  | ERM Sorts risks and groups by Risk Type | 6d? | 2015-09-01 | 2015-09-08 |  | 668d | finish no earlier than 2015-09-08 |
| 392 |  | ERM Creates pre-Workshop, pre-read Materials and instructions for SHUSA Risk Managers | 6d? | 2015-09-01 | 2015-09-08 |  | 668d | finish no earlier than 2015-09-08 |
| 393 |  | ERM Distributes Workshop Materials to Responsible parties | 2d? | 2015-09-08 | 2015-09-09 |  | 667d | finish no earlier than 2015-09-09 |
| 394 |  | Aggregation to Create SHUSA Material Risk Inventory Prepared | 0d | 2015-09-15 | 2015-09-15 |  | 664d | start no earlier than 2015-09-15 |
| 395 | 1.1.3.2.2 | **SHUSA Aggregation Workshops** | 13d | 2015-09-09 | 2015-09-25 |  |  |  |
| 396 | 1.1.3.2.2.1 | **Credit Risk Material Risk Aggregation** | 13d | 2015-09-09 | 2015-09-25 |  |  |  |
| 397 |  | Credit Risk performs pre-Read and analysis | 5d? | 2015-09-09 | 2015-09-15 |  | 663d | finish no earlier than 2015-09-15 |
| 398 |  | Risk Managers Conduct Credit pre-Workshop Enrichment and Aggregation Activites | 5d? | 2015-09-09 | 2015-09-15 |  | 663d | finish no earlier than 2015-09-15 |
| 399 |  | ERM facilitates Credit Aggregation and Enrichment Workshop | 7d? | 2015-09-15 | 2015-09-23 |  | 657d | finish no earlier than 2015-09-23 |
| 400 |  | Present to Level II Subcommittees | 3d? | 2015-09-23 | 2015-09-25 |  | 655d | finish no earlier than 2015-09-25 |
| 401 |  | Credit Risk Material Risk Aggregation Prepared | 0d | 2015-09-25 | 2015-09-25 |  | 656d | start no earlier than 2015-09-25 |
| 402 | 1.1.3.2.2.2 | **Operational Risk Material Risk Aggregation** | 13d | 2015-09-09 | 2015-09-25 |  |  |  |
| 403 |  | Operational Risk performs pre-Read and analysis | 5d? | 2015-09-09 | 2015-09-15 |  | 663d | finish no earlier than 2015-09-15 |
| 404 |  | Risk Managers Conduct Operational Risk pre-Workshop Enrichment and Aggregation Activites | 5d? | 2015-09-09 | 2015-09-15 |  | 663d | finish no earlier than 2015-09-15 |
| 405 |  | ERM facilitates Operational Risk Aggregation and Enrichment Workshop | 7d? | 2015-09-15 | 2015-09-23 |  | 657d | finish no earlier than 2015-09-23 |
| 406 |  | Present to Level II Subcommittees | 3d? | 2015-09-23 | 2015-09-25 |  | 655d | finish no earlier than 2015-09-25 |
| 407 |  | Operational Risk Material Risk Aggregation Prepared | 0d | 2015-09-25 | 2015-09-25 |  | 656d | start no earlier than 2015-09-25 |
| 408 | 1.1.3.2.2.3 | **Compliance Material Risk Aggregation** | 13d | 2015-09-09 | 2015-09-25 |  |  |  |
| 409 |  | Compliance performs pre-Read and analysis | 5d? | 2015-09-09 | 2015-09-15 |  | 663d | finish no earlier than 2015-09-15 |
| 410 |  | Risk Managers Conduct Compliance pre-Workshop Enrichment and Aggregation Activites | 5d? | 2015-09-09 | 2015-09-15 |  | 663d | finish no earlier than 2015-09-15 |
| 411 |  | ERM facilitates Compliance Aggregation and Enrichment Workshop | 7d? | 2015-09-15 | 2015-09-23 |  | 657d | finish no earlier than 2015-09-23 |
| 412 |  | Present to Level II Subcommittees | 3d? | 2015-09-23 | 2015-09-25 |  | 655d | finish no earlier than 2015-09-25 |
| 413 |  | Compliance Material Risk Aggregation Prepared | 0d | 2015-09-25 | 2015-09-25 |  | 656d | start no earlier than 2015-09-25 |
| 414 | 1.1.3.2.2.4 | **Model Material Risk Aggregation** | 13d | 2015-09-09 | 2015-09-25 |  |  |  |
| 415 |  | Model Risk performs pre-Read and analysis | 5d? | 2015-09-09 | 2015-09-15 |  | 663d | finish no earlier than 2015-09-15 |
| 416 |  | Risk Managers Conduct Model pre-Workshop Enrichment and Aggregation Activites | 5d? | 2015-09-09 | 2015-09-15 |  | 663d | finish no earlier than 2015-09-15 |
| 417 |  | ERM facilitates Model Aggregation and Enrichment Workshop | 7d? | 2015-09-15 | 2015-09-23 |  | 657d | finish no earlier than 2015-09-23 |
| 418 |  | Present to Level II Subcommittees | 3d? | 2015-09-23 | 2015-09-25 |  | 655d | finish no earlier than 2015-09-25 |
| 419 |  | Model Material Risk Aggregation Prepared | 0d | 2015-09-25 | 2015-09-25 |  | 656d | start no earlier than 2015-09-25 |
| 420 | 1.1.3.2.2.5 | **Market Material Risk Aggregation** | 13d | 2015-09-09 | 2015-09-25 |  |  |  |

| ID | WBS | Task | Duration | Start | Finish | Total float | Constraint |
| --- | --- | --- | --- | --- | --- | --- | --- |
| 421 |  | Market Risk performs pre-Read and analysis | 5d? | 2015-09-09 | 2015-09-15 | 663d | finish no earlier than 2015-09-15 |
| 422 |  | Risk Managers Conduct Market pre-Workshop Enrichment and Aggregation Activites | 5d? | 2015-09-09 | 2015-09-15 | 663d | finish no earlier than 2015-09-15 |
| 423 |  | ERM facilitates Market Aggregation and Enrichment Workshop | 7d? | 2015-09-15 | 2015-09-23 | 657d | finish no earlier than 2015-09-23 |
| 424 |  | Present to Level II Subcommittees | 3d? | 2015-09-23 | 2015-09-25 | 655d | finish no earlier than 2015-09-25 |
| 425 |  | Market Material Risk Aggregation Prepared | 0d | 2015-09-25 | 2015-09-25 | 656d | start no earlier than 2015-09-25 |
| 426 | 1.1.3.2.2.6 | **Liquidity Material Risk Aggregation** | 13d | 2015-09-09 | 2015-09-25 |  |  |
| 427 |  | Liquidity Risk performs pre-Read and analysis | 5d? | 2015-09-09 | 2015-09-15 | 663d | finish no earlier than 2015-09-15 |
| 428 |  | Risk Managers Conduct Liquidity pre-Workshop Enrichment and Aggregation Activites | 5d? | 2015-09-09 | 2015-09-15 | 663d | finish no earlier than 2015-09-15 |
| 429 |  | ERM facilitates Liquidity Aggregation and Enrichment Workshop | 7d? | 2015-09-15 | 2015-09-23 | 657d | finish no earlier than 2015-09-23 |
| 430 |  | Present to Level II Subcommittees | 3d? | 2015-09-23 | 2015-09-25 | 655d | finish no earlier than 2015-09-25 |
| 431 |  | Liquidity Material Risk Aggregation Prepared | 0d | 2015-09-25 | 2015-09-25 | 656d | start no earlier than 2015-09-25 |
| 432 | 1.1.3.2.2.7 | **Strategic Material Risk Aggregation** | 13d | 2015-09-09 | 2015-09-25 |  |  |
| 433 |  | Strategic Risk performs pre-Read and analysis | 5d? | 2015-09-09 | 2015-09-15 | 663d | finish no earlier than 2015-09-15 |
| 434 |  | Risk Managers Conduct Strategic pre-Workshop Enrichment and Aggregation Activites | 5d? | 2015-09-09 | 2015-09-15 | 663d | finish no earlier than 2015-09-15 |
| 435 |  | ERM facilitates Strategic Aggregation and Enrichment Workshop | 7d? | 2015-09-15 | 2015-09-23 | 657d | finish no earlier than 2015-09-23 |
| 436 |  | Present to Level II Subcommittees | 3d? | 2015-09-23 | 2015-09-25 | 655d | finish no earlier than 2015-09-25 |
| 437 |  | Strategic Material Risk Aggregation Prepared | 0d | 2015-09-25 | 2015-09-25 | 656d | start no earlier than 2015-09-25 |
| 438 | 1.1.3.2.2.8 | **Reputational Material Risk Aggregation** | 13d | 2015-09-09 | 2015-09-25 |  |  |
| 439 |  | Reputational Risk performs pre-Read and analysis | 5d? | 2015-09-09 | 2015-09-15 | 663d | finish no earlier than 2015-09-15 |
| 440 |  | Risk Managers Conduct Reputational pre-Workshop Enrichment and Aggregation Activites | 5d? | 2015-09-09 | 2015-09-15 | 663d | finish no earlier than 2015-09-15 |
| 441 |  | ERM facilitates Reputational Aggregation and Enrichment Workshop | 7d? | 2015-09-15 | 2015-09-23 | 657d | finish no earlier than 2015-09-23 |
| 442 |  | Present to Level II Subcommittees | 3d? | 2015-09-23 | 2015-09-25 | 655d | finish no earlier than 2015-09-25 |
| 443 |  | Reputational Material Risk Aggregation Prepared | 0d | 2015-09-25 | 2015-09-25 | 656d | start no earlier than 2015-09-25 |
| 444 | 1.1.3.2.3 | **SHUSA Top Down Aggregation** | 11d | 2015-09-25 | 2015-10-09 |  |  |
| 445 |  | ERM consolidates risks into SHUSA Inventory | 2d? | 2015-09-25 | 2015-09-28 | 654d | finish no earlier than 2015-09-28 |
| 446 |  | ERM distributes inventory to SHUSA Business and Risk executives | 3d? | 2015-09-28 | 2015-09-30 | 652d | finish no earlier than 2015-09-30 |
| 447 |  | ERM incorporates final risks into SHUSA Inventory | 5d? | 2015-10-05 | 2015-10-09 | 645d | start no earlier than 2015-10-05 |
| 448 |  | SHUSA Top Down Aggregation Prepared | 0d | 2015-10-09 | 2015-10-09 | 646d | start no earlier than 2015-10-09 |
| 449 | 1.1.3.2.4 | **Material Risk SHUSA Approval** | 16d | 2015-10-09 | 2015-10-30 |  |  |
| 450 |  | Present SHUSA Material Risks to BERC | 6d? | 2015-10-09 | 2015-10-16 | 640d | finish no earlier than 2015-10-16 |
| 451 |  | Present SHUSA Material Risks to ERMC | 11d? | 2015-10-16 | 2015-10-30 | 630d | finish no earlier than 2015-10-30 |
| 452 |  | Present SHUSA Material Risks to CCAR | 1d? | 2015-10-30 | 2015-10-30 | 630d | start no earlier than 2015-10-30 |
| 453 |  | Material Risk SHUSA Approval | 0d | 2015-10-30 | 2015-10-30 | 631d | start no earlier than 2015-10-30 |
| 454 | 1.1.3.2.5 | **Risk ID and Assessment Policy** | 55d? | 2015-09-25 | 2015-12-10 | -29d |  |
| 455 |  | Risk ID and Assessment group drafts policy | 26d? | 2015-09-25 | 2015-10-30 | 0d | finish no earlier than 2015-10-30 |
| 456 |  | Risk ID and Assessment group presents draft to ERMC for approval | 6d? | 2015-10-30 | 2015-11-08 | -5d | finish no earlier than 2015-11-08 |
| 457 |  | Risk ID and Assessment group presents to Risk Committee (BERC) | 29d? | 2015-11-02 | 2015-12-10 | -29d | finish no earlier than 2015-12-10 |
| 458 |  | Risk ID and Assessment Policy | 0d | 2015-12-10 | 2015-12-10 | -28d | start no earlier than 2015-12-10 |
| 459 | 1.1.3.3 | **SBNA - Business Entity Material Risk Program** | 68d | 2015-05-28 | 2015-08-31 | 0d |  |
| 460 | 1.1.3.3.1 | **Retail Banking Material Risk Inventory** | 2d | 2015-06-29 | 2015-06-30 | 0d |  |
| 461 | 1.1.3.3.1.1 | **Small Business Banking Material Risk Inventory** | 2d | 2015-06-29 | 2015-06-30 | 0d |  |
| 462 |  | Deliver Final Inventory to SBNA and SHUSA ERM | 2d | 2015-06-29 | 2015-06-30 |  |  |
| 463 |  | Small Business Banking Material Risk Inventory Prepared | 0d | 2015-06-30 | 2015-06-30 |  |  |
| 464 | 1.1.3.3.1.2 | **Cards Material Risk Inventory** | 2d | 2015-06-29 | 2015-06-30 | 0d |  |
| 465 |  | Deliver Final Inventory to SBNA and SHUSA ERM | 2d | 2015-06-29 | 2015-06-30 |  |  |
| 466 |  | Cards Material Risk Inventory Prepared | 0d | 2015-06-30 | 2015-06-30 |  |  |
| 467 | 1.1.3.3.1.3 | **Mortgages Material Risk Inventory** | 2d | 2015-06-29 | 2015-06-30 | 0d |  |
| 468 |  | Deliver Final Inventory to SBNA and SHUSA ERM | 2d | 2015-06-29 | 2015-06-30 |  |  |
| 469 |  | Mortgages Material Risk Inventory Prepared | 0d | 2015-06-30 | 2015-06-30 |  |  |
| 470 | 1.1.3.3.1.4 | **Purchased Portfolios (RV/Marine) Material Risk Inventory** | 2d | 2015-06-29 | 2015-06-30 | 0d |  |
| 471 |  | Deliver Final Inventory to SBNA and SHUSA ERM | 2d | 2015-06-29 | 2015-06-30 |  |  |
| 472 |  | Purchased Portfolios (RV/Marine) Material Risk Inventory Prepared | 0d | 2015-06-30 | 2015-06-30 |  |  |
| 473 | 1.1.3.3.1.5 | **Individual Material Risk Inventory** | 2d | 2015-06-29 | 2015-06-30 | 0d |  |
| 474 |  | Deliver Final Inventory to SBNA and SHUSA ERM | 2d | 2015-06-29 | 2015-06-30 |  |  |
| 475 |  | Individual Material Risk Inventory Prepared | 0d | 2015-06-30 | 2015-06-30 |  |  |
| 476 | 1.1.3.3.1.6 | **Wealth Management Material Risk Inventory** | 2d | 2015-06-29 | 2015-06-30 | 0d |  |
| 477 |  | Deliver Final Inventory to SBNA and SHUSA ERM | 2d | 2015-06-29 | 2015-06-30 |  |  |
| 478 |  | Wealth Management Material Risk Inventory Prepared | 0d | 2015-06-30 | 2015-06-30 |  |  |
| 479 | 1.1.3.3.2 | **Retail: Create Retail Banking Material Risk Inventory** | 24d | 2015-05-28 | 2015-06-30 | 0d |  |
| 480 |  | Create Segment Material Risk Inventory (Aggregation) | 24d | 2015-05-28 | 2015-06-30 |  |  |
| 481 |  | Segment head presents inventory to ERMC | 2d | 2015-06-29 | 2015-06-30 |  |  |
| 482 |  | Retail: Create Retail Banking Material Risk Inventory Prepared | 0d | 2015-06-30 | 2015-06-30 |  |  |
| 483 | 1.1.3.3.3 | **Commercial Banking Material Risk Inventory** | 2d | 2015-06-29 | 2015-06-30 | 0d |  |
| 484 | 1.1.3.3.3.1 | **Commercial and Industrial Material Risk Inventory** | 2d | 2015-06-29 | 2015-06-30 | 0d |  |
| 485 |  | Deliver Final Inventory to SBNA and SHUSA ERM | 2d | 2015-06-29 | 2015-06-30 |  |  |
| 486 |  | Commercial and Industrial Material Risk Inventory Prepared | 0d | 2015-06-30 | 2015-06-30 |  |  |
| 487 | 1.1.3.3.3.2 | **Specialties Material Risk Inventory** | 2d | 2015-06-29 | 2015-06-30 | 0d |  |
| 488 |  | Deliver Final Inventory to SBNA and SHUSA ERM | 2d | 2015-06-29 | 2015-06-30 |  |  |
| 489 |  | Specialties Material Risk Inventory Prepared | 0d | 2015-06-30 | 2015-06-30 |  |  |
| 490 | 1.1.3.3.3.3 | **Government Banking Material Risk Inventory** | 2d | 2015-06-29 | 2015-06-30 | 0d |  |

| ID | WBS | Task | Duration | Start | Finish | Predecessors | Total float | Constraint |
| --- | --- | --- | --- | --- | --- | --- | --- | --- |
| 491 |  | Deliver Final Inventory to SBNA and SHUSA ERM | 2d | 2015-06-29 | 2015-06-30 |  |  |  |
| 492 |  | Government Banking Material Risk Inventory Prepared | 0d | 2015-06-30 | 2015-06-30 |  |  |  |
| 493 | 1.1.3.3.4 | **Commercial: Create Commercial Banking Material Risk Inventory** | 24d | 2015-05-28 | 2015-06-30 |  | 0d |  |
| 494 |  | Create Segment Material Risk Inventory (Aggregation) | 24d | 2015-05-28 | 2015-06-30 |  |  |  |
| 495 |  | Segment head presents inventory to ERMC | 2d | 2015-06-29 | 2015-06-30 |  |  |  |
| 496 |  | Create Commercial Banking Material Risk Inventory Prepared | 0d | 2015-06-30 | 2015-06-30 |  |  |  |
| 497 | 1.1.3.3.5 | **Global Banking Material Risk Inventory** | 2d | 2015-06-29 | 2015-06-30 |  | 0d |  |
| 498 | 1.1.3.3.5.1 | **MRG Material Risk Inventory** | 2d | 2015-06-29 | 2015-06-30 |  | 0d |  |
| 499 |  | Deliver Final Inventory to SBNA and SHUSA ERM | 2d | 2015-06-29 | 2015-06-30 |  |  |  |
| 500 |  | MRG Material Risk Inventory Prepared | 0d | 2015-06-30 | 2015-06-30 |  |  |  |
| 501 | 1.1.3.3.5.2 | **Large Corporates Material Risk Inventory** | 2d | 2015-06-29 | 2015-06-30 |  | 0d |  |
| 502 |  | Deliver Final Inventory to SBNA and SHUSA ERM | 2d | 2015-06-29 | 2015-06-30 |  |  |  |
| 503 |  | Large Corporates Material Risk Inventory Prepared | 0d | 2015-06-30 | 2015-06-30 |  |  |  |
| 504 | 1.1.3.3.6 | **Global: Create Global Banking Material Risk Inventory** | 24d | 2015-05-28 | 2015-06-30 |  |  |  |
| 505 |  | Create Segment Material Risk Inventory (Aggregation) | 24d | 2015-05-28 | 2015-06-30 |  |  |  |
| 506 |  | Segment head presents inventory to ERMC | 2d | 2015-06-29 | 2015-06-30 |  |  |  |
| 507 |  | Global: Create Global Banking Material Risk Inventory Prepared | 0d | 2015-06-30 | 2015-06-30 |  |  |  |
| 508 | 1.1.3.3.7 | **Automotive Finance Material Risk Inventory** | 2d | 2015-06-29 | 2015-06-30 |  | 0d |  |
| 509 | 1.1.3.3.7.1 | **CEVF Material Risk Inventory** | 2d | 2015-06-29 | 2015-06-30 |  | 0d |  |
| 510 |  | Deliver Final Inventory to SBNA and SHUSA ERM | 2d | 2015-06-29 | 2015-06-30 |  |  |  |
| 511 |  | CEVF Material Risk Inventory Prepared | 0d | 2015-06-30 | 2015-06-30 |  |  |  |
| 512 | 1.1.3.3.7.2 | **Leasing Material Risk Inventory** | 2d | 2015-06-29 | 2015-06-30 |  | 0d |  |
| 513 |  | Deliver Final Inventory to SBNA and SHUSA ERM | 2d | 2015-06-29 | 2015-06-30 |  |  |  |
| 514 |  | Leasing Material Risk Inventory Prepared | 0d | 2015-06-30 | 2015-06-30 |  |  |  |
| 515 | 1.1.3.3.7.3 | **Dealer Floor Plan Material Risk Inventory** | 2d | 2015-06-29 | 2015-06-30 |  | 0d |  |
| 516 |  | Deliver Final Inventory to SBNA and SHUSA ERM | 2d | 2015-06-29 | 2015-06-30 |  |  |  |
| 517 |  | Dealer Floor Plan Material Risk Inventory Prepared | 0d | 2015-06-30 | 2015-06-30 |  |  |  |
| 518 | 1.1.3.3.8 | **Automotive: Create Automotive Finance Material Risk Inventory** | 24d | 2015-05-28 | 2015-06-30 |  | 0d |  |
| 519 |  | Create Segment Material Risk Inventory (Aggregation) | 24d | 2015-05-28 | 2015-06-30 |  |  |  |
| 520 |  | Segment head presents inventory to ERMC | 2d | 2015-06-29 | 2015-06-30 |  |  |  |
| 521 |  | Automotive Finance Material Risk Inventory Prepared | 0d | 2015-06-30 | 2015-06-30 |  |  |  |
| 522 | 1.1.3.3.9 | **Commerical Real Estate Material Risk Inventory** | 3d | 2015-06-26 | 2015-06-30 |  | 0d |  |
| 523 |  | Deliver Final Inventory to SBNA and SHUSA ERM | 2d | 2015-06-26 | 2015-06-29 |  |  |  |
| 524 |  | Present inventory to ERMC | 2d | 2015-06-29 | 2015-06-30 |  |  |  |
| 525 |  | Commerical Real Estate Material Risk Inventory Prepared | 0d | 2015-06-30 | 2015-06-30 |  |  |  |
| 526 | 1.1.3.3.10 | **Financial Management Material Risk Inventory** | 3d | 2015-06-26 | 2015-06-30 |  | 0d |  |
| 527 |  | Deliver Final Inventory to SBNA and SHUSA ERM | 2d | 2015-06-26 | 2015-06-29 |  |  |  |
| 528 |  | Present inventory to ERMC | 2d | 2015-06-29 | 2015-06-30 |  |  |  |
| 529 |  | Financial Management Material Risk Inventory Prepared | 0d | 2015-06-30 | 2015-06-30 |  |  |  |
| 530 | 1.1.3.3.11 | **Corporate Center Material Risk Inventory** | 3d | 2015-06-26 | 2015-06-30 |  | 0d |  |
| 531 |  | Deliver Final Inventory to SBNA and SHUSA ERM | 2d | 2015-06-26 | 2015-06-29 |  |  |  |
| 532 |  | Present inventory to ERMC | 2d | 2015-06-29 | 2015-06-30 |  |  |  |
| 533 |  | Corporate Center Material Risk Inventory Prepared | 0d | 2015-06-30 | 2015-06-30 |  |  |  |
| 534 | 1.1.3.3.12 | **Legal Material Risk Inventory** | 3d | 2015-06-26 | 2015-06-30 |  | 0d |  |
| 535 |  | Deliver Final Inventory to SBNA and SHUSA ERM | 2d | 2015-06-26 | 2015-06-29 |  |  |  |
| 536 |  | Present inventory to ERMC | 2d | 2015-06-29 | 2015-06-30 |  |  |  |
| 537 |  | Legal Material Risk Inventory Prepared | 0d | 2015-06-30 | 2015-06-30 |  |  |  |
| 538 | 1.1.3.3.13 | **HR Material Risk Inventory** | 3d | 2015-06-26 | 2015-06-30 |  | 0d |  |
| 539 |  | Deliver Final Inventory to SBNA and SHUSA ERM | 2d | 2015-06-26 | 2015-06-29 |  |  |  |
| 540 |  | Present inventory to ERMC | 2d | 2015-06-29 | 2015-06-30 |  |  |  |
| 541 |  | HR Material Risk Inventory Prepared | 0d | 2015-06-30 | 2015-06-30 |  |  |  |
| 542 | 1.1.3.3.14 | **Tech and Operations Material Risk Inventory** | 3d | 2015-06-26 | 2015-06-30 |  | 0d |  |
| 543 |  | Deliver Final Inventory to SBNA and SHUSA ERM | 2d | 2015-06-26 | 2015-06-29 |  |  |  |
| 544 |  | Present inventory to ERMC | 2d | 2015-06-29 | 2015-06-30 |  |  |  |
| 545 |  | Tech and Operations Material Risk Inventory Prepared | 0d | 2015-06-30 | 2015-06-30 |  |  |  |
| 546 | 1.1.3.3.15 | **Finance Material Risk Inventory** | 3d | 2015-06-26 | 2015-06-30 |  | 0d |  |
| 547 |  | Deliver Final Inventory to SBNA and SHUSA ERM | 2d | 2015-06-26 | 2015-06-29 |  |  |  |
| 548 |  | Present inventory to ERMC | 2d | 2015-06-29 | 2015-06-30 |  |  |  |
| 549 |  | Finance Material Risk Inventory Prepared | 0d | 2015-06-30 | 2015-06-30 |  |  |  |
| 550 | 1.1.3.3.16 | **SBNA Aggregation Workshops** | 20d | 2015-07-01 | 2015-07-28 |  |  |  |
| 551 | 1.1.3.3.16.1 | **Credit Risk Aggregation** | 20d? | 2015-07-01 | 2015-07-28 |  |  |  |
| 552 |  | ERM disseminates Workshop Pre-Read Materials to Risk Managers | 8d? | 2015-07-01 | 2015-07-10 |  | 2d | finish no earlier than 2015-07-10 |
| 553 |  | ERM facilitates Aggregation and Enrichment Activities | 10d? | 2015-07-13 | 2015-07-24 | 552 | 2d |  |
| 554 |  | Risk Manager presents inventory to level II subcommittee | 2d? | 2015-07-27 | 2015-07-28 |  | 698d | finish no earlier than 2015-07-28 |
| 555 |  | Credit Risk Aggregation Prepared | 0d | 2015-07-28 | 2015-07-28 |  | 699d | start no earlier than 2015-07-28 |
| 556 | 1.1.3.3.16.2 | **Operational Risk Material Risk Aggregation** | 20d | 2015-07-01 | 2015-07-28 |  |  |  |
| 557 |  | ERM disseminates Workshop Pre-Read Materials to Risk Managers | 8d? | 2015-07-01 | 2015-07-10 |  | 2d | finish no earlier than 2015-07-10 |
| 558 |  | ERM facilitates Aggregation and Enrichment Activities | 10d? | 2015-07-13 | 2015-07-24 | 557 | 2d |  |
| 559 |  | Risk Manager presents inventory to level II subcommittee | 2d? | 2015-07-27 | 2015-07-28 |  | 698d | finish no earlier than 2015-07-28 |
| 560 |  | Operational Risk Material Risk Aggregation Prepared | 0d | 2015-07-28 | 2015-07-28 |  | 699d | start no earlier than 2015-07-28 |

| ID | WBS | Task | Duration | Start | Finish | Predecessors | Total float | Constraint |
| --- | --- | --- | --- | --- | --- | --- | --- | --- |
| 561 | 1.1.3.3.16.3 | **Compliance Material Risk Aggregation** | 20d | 2015-07-01 | 2015-07-28 |  |  |  |
| 562 |  | ERM disseminates Workshop Pre-Read Materials to Risk Managers | 8d? | 2015-07-01 | 2015-07-10 |  | 2d | finish no earlier than 2015-07-10 |
| 563 |  | ERM facilitates Aggregation and Enrichment Activities | 10d? | 2015-07-13 | 2015-07-24 | 562 | 2d |  |
| 564 |  | Risk Manager presents inventory to level II subcommittee | 2d? | 2015-07-27 | 2015-07-28 |  | 698d | finish no earlier than 2015-07-28 |
| 565 |  | Compliance Material Risk Aggregation Prepared | 0d | 2015-07-28 | 2015-07-28 |  | 699d | start no earlier than 2015-07-28 |
| 566 | 1.1.3.3.16.4 | **Model Material Risk Aggregation** | 20d | 2015-07-01 | 2015-07-28 |  |  |  |
| 567 |  | ERM disseminates Workshop Pre-Read Materials to Risk Managers | 8d? | 2015-07-01 | 2015-07-10 |  | 2d | finish no earlier than 2015-07-10 |
| 568 |  | ERM facilitates Aggregation and Enrichment Activities | 10d? | 2015-07-13 | 2015-07-24 | 567 | 2d |  |
| 569 |  | Risk Manager presents inventory to level II subcommittee | 2d? | 2015-07-27 | 2015-07-28 |  | 698d | finish no earlier than 2015-07-28 |
| 570 |  | Model Material Risk Aggregation Prepared | 0d | 2015-07-28 | 2015-07-28 |  | 699d | start no earlier than 2015-07-28 |
| 571 | 1.1.3.3.16.5 | **Liquidity/Market Material Risk Aggregation** | 20d | 2015-07-01 | 2015-07-28 |  |  |  |
| 572 |  | ERM disseminates Workshop Pre-Read Materials to Risk Managers | 8d? | 2015-07-01 | 2015-07-10 |  | 2d | finish no earlier than 2015-07-10 |
| 573 |  | ERM facilitates Aggregation and Enrichment Activities | 10d? | 2015-07-13 | 2015-07-24 | 572 | 2d |  |
| 574 |  | Risk Manager presents inventory to level II subcommittee | 2d? | 2015-07-27 | 2015-07-28 |  | 698d | finish no earlier than 2015-07-28 |
| 575 |  | Liquidity/Market Material Risk Aggregation Prepared | 0d | 2015-07-28 | 2015-07-28 |  | 699d | start no earlier than 2015-07-28 |
| 576 | 1.1.3.3.16.6 | **Reputational/Strategic Material Risk Aggregation** | 20d | 2015-07-01 | 2015-07-28 |  |  |  |
| 577 |  | ERM disseminates Workshop Pre-Read Materials to Risk Managers | 8d? | 2015-07-01 | 2015-07-10 |  | 2d | finish no earlier than 2015-07-10 |
| 578 |  | ERM facilitates Aggregation and Enrichment Workshop | 10d? | 2015-07-13 | 2015-07-24 | 577 | 2d |  |
| 579 |  | Risk Manager presents inventory to level II subcommittee | 2d? | 2015-07-27 | 2015-07-28 |  | 698d | finish no earlier than 2015-07-28 |
| 580 |  | Reputational/Strategic Material Risk Aggregation Prepared | 0d | 2015-07-28 | 2015-07-28 |  | 699d | start no earlier than 2015-07-28 |
| 581 |  | Present Results to SBNA ERMC | 25d | 2015-07-28 | 2015-08-31 |  | 674d | start no earlier than 2015-07-28 |
| 582 |  | Present Results to SBNA BERC | 25d | 2015-07-28 | 2015-08-31 |  | 674d | start no earlier than 2015-07-28 |
| 583 | 1.1.3.4 | **SCUSA - Business Entity Material Risk Program** | 68d | 2015-05-28 | 2015-08-31 |  |  |  |
| 584 | 1.1.3.4.1 | **Automotive Finance Material Risk Inventory** | 2d | 2015-06-29 | 2015-06-30 |  | 44d |  |
| 585 |  | Deliver Final Inventory to SCUSA SHUSA ERM | 2d | 2015-06-29 | 2015-06-30 |  | 44d | start no earlier than 2015-06-29 |
| 586 |  | Present inventory to ERMC | 2d | 2015-06-29 | 2015-06-30 |  | 44d | start no earlier than 2015-06-29 |
| 587 |  | Automotive Finance Material Risk Inventory Prepared | 0d | 2015-06-30 | 2015-06-30 |  | 45d | start no earlier than 2015-06-30 |
| 588 | 1.1.3.4.2 | **Personal Lending Material Risk Inventory** | 2d | 2015-06-29 | 2015-06-30 |  | 44d |  |
| 589 |  | Deliver Final Inventory to SCUSA SHUSA ERM | 2d | 2015-06-29 | 2015-06-30 |  | 44d | start no earlier than 2015-06-29 |
| 590 |  | Present inventory to ERMC | 2d | 2015-06-29 | 2015-06-30 |  | 44d | start no earlier than 2015-06-29 |
| 591 |  | Personal Lending Material Risk Inventory Prepared | 0d | 2015-06-30 | 2015-06-30 |  | 45d | start no earlier than 2015-06-30 |
| 592 | 1.1.3.4.3 | **Human Resources Material Risk Inventory** | 2d | 2015-06-29 | 2015-06-30 |  | 44d |  |
| 593 |  | Deliver Final Inventory to SCUSA SHUSA ERM | 2d | 2015-06-29 | 2015-06-30 |  | 44d | start no earlier than 2015-06-29 |
| 594 |  | Present inventory to ERMC | 2d | 2015-06-29 | 2015-06-30 |  | 44d | start no earlier than 2015-06-29 |
| 595 |  | Human Resources Material Risk Inventory Prepared | 0d | 2015-06-30 | 2015-06-30 |  | 45d | start no earlier than 2015-06-30 |
| 596 | 1.1.3.4.4 | **Finance and Accounting Material Risk Inventory** | 2d | 2015-06-29 | 2015-06-30 |  | 44d |  |
| 597 |  | Deliver Final Inventory to SCUSA SHUSA ERM | 2d | 2015-06-29 | 2015-06-30 |  | 44d | start no earlier than 2015-06-29 |
| 598 |  | Present inventory to ERMC | 2d | 2015-06-29 | 2015-06-30 |  | 44d | start no earlier than 2015-06-29 |
| 599 |  | Finance and Accounting Material Risk Inventory Prepared | 0d | 2015-06-30 | 2015-06-30 |  | 45d | start no earlier than 2015-06-30 |
| 600 | 1.1.3.4.5 | **Technology and Operations Material Risk Inventory** | 2d | 2015-06-29 | 2015-06-30 |  | 44d |  |
| 601 |  | Deliver Final Inventory to SCUSA SHUSA ERM | 2d | 2015-06-29 | 2015-06-30 |  | 44d | start no earlier than 2015-06-29 |
| 602 |  | Present inventory to ERMC | 2d | 2015-06-29 | 2015-06-30 |  | 44d | start no earlier than 2015-06-29 |
| 603 |  | Technology and Operations Material Risk Inventory Prepared | 0d | 2015-06-30 | 2015-06-30 |  | 44d | finish no earlier than 2015-06-30 |
| 604 | 1.1.3.4.6 | **Legal Material Risk Inventory** | 2d | 2015-06-29 | 2015-06-30 |  | 44d |  |
| 605 |  | Deliver Final Inventory to SCUSA SHUSA ERM | 2d | 2015-06-29 | 2015-06-30 |  | 44d | start no earlier than 2015-06-29 |
| 606 |  | Present inventory to ERMC | 2d | 2015-06-29 | 2015-06-30 |  | 44d | start no earlier than 2015-06-29 |
| 607 |  | Legal Material Risk Inventory Prepared | 0d | 2015-06-30 | 2015-06-30 |  | 45d | start no earlier than 2015-06-30 |
| 608 | 1.1.3.4.7 | **SCUSA Aggregation Workshops** | 20d | 2015-07-01 | 2015-07-28 |  |  |  |
| 609 | 1.1.3.4.7.1 | **Credit Risk Aggregation** | 20d | 2015-07-01 | 2015-07-28 |  |  |  |
| 610 |  | ERM disseminates Workshop Pre-Read Materials to Risk Managers | 8d? | 2015-07-01 | 2015-07-10 |  | 2d | finish no earlier than 2015-07-10 |
| 611 |  | ERM facilitates Aggregation and Enrichment Activities | 10d? | 2015-07-13 | 2015-07-24 | 610 | 2d |  |
| 612 |  | Risk Manager presents inventory to level II subcommittee | 2d? | 2015-07-27 | 2015-07-28 |  | 698d | finish no earlier than 2015-07-28 |
| 613 |  | Credit Risk Aggregation Prepared | 0d | 2015-07-28 | 2015-07-28 |  | 699d | start no earlier than 2015-07-28 |
| 614 | 1.1.3.4.7.2 | **Operational Risk Material Risk Aggregation** | 20d | 2015-07-01 | 2015-07-28 |  |  |  |
| 615 |  | ERM disseminates Workshop Pre-Read Materials to Risk Managers | 8d? | 2015-07-01 | 2015-07-10 |  | 2d | finish no earlier than 2015-07-10 |
| 616 |  | ERM facilitates Aggregation and Enrichment Activities | 10d? | 2015-07-13 | 2015-07-24 | 615 | 2d |  |
| 617 |  | Risk Manager presents inventory to level II subcommittee | 2d? | 2015-07-27 | 2015-07-28 |  | 698d | finish no earlier than 2015-07-28 |
| 618 |  | Operational Risk Material Risk Aggregation Prepared | 0d | 2015-07-28 | 2015-07-28 |  | 699d | start no earlier than 2015-07-28 |
| 619 | 1.1.3.4.7.3 | **Compliance Material Risk Aggregation** | 20d | 2015-07-01 | 2015-07-28 |  |  |  |
| 620 |  | ERM disseminates Workshop Pre-Read Materials to Risk Managers | 8d? | 2015-07-01 | 2015-07-10 |  | 2d | finish no earlier than 2015-07-10 |
| 621 |  | ERM facilitates Aggregation and Enrichment Activities | 10d? | 2015-07-13 | 2015-07-24 | 620 | 2d |  |
| 622 |  | Risk Manager presents inventory to level II subcommittee | 2d? | 2015-07-27 | 2015-07-28 |  | 698d | finish no earlier than 2015-07-28 |
| 623 |  | Compliance Material Risk Aggregation Prepared | 0d | 2015-07-28 | 2015-07-28 |  | 699d | start no earlier than 2015-07-28 |
| 624 | 1.1.3.4.7.4 | **Model Material Risk Aggregation** | 20d | 2015-07-01 | 2015-07-28 |  |  |  |
| 625 |  | ERM disseminates Workshop Pre-Read Materials to Risk Managers | 8d? | 2015-07-01 | 2015-07-10 |  | 2d | finish no earlier than 2015-07-10 |
| 626 |  | ERM facilitates Aggregation and Enrichment Activities | 10d? | 2015-07-13 | 2015-07-24 | 625 | 2d |  |
| 627 |  | Risk Manager presents inventory to level II subcommittee | 2d? | 2015-07-27 | 2015-07-28 |  | 698d | finish no earlier than 2015-07-28 |
| 628 |  | Model Material Risk Aggregation Prepared | 0d | 2015-07-28 | 2015-07-28 |  | 699d | start no earlier than 2015-07-28 |
| 629 | 1.1.3.4.7.5 | **Liquidity/Market Material Risk Aggregation** | 20d | 2015-07-01 | 2015-07-28 |  |  |  |
| 630 |  | ERM disseminates Workshop Pre-Read Materials to Risk Managers | 8d? | 2015-07-01 | 2015-07-10 |  | 2d | finish no earlier than 2015-07-10 |

| ID | WBS | Task | Duration | Start | Finish | Predecessors | Total float | Constraint |
| --- | --- | --- | --- | --- | --- | --- | --- | --- |
| 631 |  | ERM facilitates Aggregation and Enrichment Activities | 10d? | 2015-07-13 | 2015-07-24 | 630 | 2d |  |
| 632 |  | Risk Manager presents inventory to level II subcommittee | 2d? | 2015-07-27 | 2015-07-28 |  | 698d | finish no earlier than 2015-07-28 |
| 633 |  | Liquidity/Market Material Risk Aggregation Prepared | 0d | 2015-07-28 | 2015-07-28 |  | 699d | start no earlier than 2015-07-28 |
| 634 | 1.1.3.4.7.6 | **Reputational/Strategic Material Risk Aggregation** | 20d | 2015-07-01 | 2015-07-28 |  |  |  |
| 635 |  | ERM disseminates Workshop Pre-Read Materials to Risk Managers | 8d? | 2015-07-01 | 2015-07-10 |  | 710d | finish no earlier than 2015-07-10 |
| 636 |  | ERM facilitates Aggregation and Enrichment Workshop | 5d? | 2015-07-20 | 2015-07-24 |  | 700d | finish no earlier than 2015-07-24 |
| 637 |  | Risk Manager presents inventory to level II subcommittee | 2d? | 2015-07-27 | 2015-07-28 |  | 698d | finish no earlier than 2015-07-28 |
| 638 |  | Reputational/Strategic Material Risk Aggregation Prepared | 0d | 2015-07-28 | 2015-07-28 |  | 699d | start no earlier than 2015-07-28 |
| 639 |  | Present Results to SCUSA ERMC | 25d | 2015-07-28 | 2015-08-31 |  | 674d | finish no earlier than 2015-08-31 |
| 640 |  | Present Results to SCUSA BERC | 25d | 2015-07-28 | 2015-08-31 |  | 674d | finish no earlier than 2015-08-31 |
| 641 | 1.1.3.5 | **New York Santander Investment Securities (SIS) - Business Entity Material Risk Program** | 68d | 2015-05-28 | 2015-08-31 |  |  |  |
| 642 | 1.1.3.5.1 | **GBM-Cash Equities Brokerage Material Risk Inventory** | 2d | 2015-06-29 | 2015-06-30 |  | 44d |  |
| 643 |  | Deliver Final Inventory to SIS and SHUSA ERM | 2d | 2015-06-29 | 2015-06-30 |  | 44d | start no earlier than 2015-06-29 |
| 644 |  | Present inventory to ERMC | 2d | 2015-06-29 | 2015-06-30 |  | 44d | start no earlier than 2015-06-29 |
| 645 |  | Cash Equities Brokerage Material Risk Inventory Prepared | 0d | 2015-06-30 | 2015-06-30 |  | 45d | start no earlier than 2015-06-30 |
| 646 | 1.1.3.5.2 | **GBM- Debt Underwriting Material Risk Inventory** | 2d | 2015-06-29 | 2015-06-30 |  | 44d |  |
| 647 |  | Deliver Final Inventory to SIS and SHUSA ERM | 2d | 2015-06-29 | 2015-06-30 |  | 44d | start no earlier than 2015-06-29 |
| 648 |  | Present inventory to ERMC | 2d | 2015-06-29 | 2015-06-30 |  | 44d | start no earlier than 2015-06-29 |
| 649 |  | Debt Underwriting Material Risk Inventory Prepared | 0d | 2015-06-30 | 2015-06-30 |  | 45d | start no earlier than 2015-06-30 |
| 650 | 1.1.3.5.3 | **GBM Equity Underwriting Material Risk Inventory** | 2d | 2015-06-29 | 2015-06-30 |  | 44d |  |
| 651 |  | Deliver Final Inventory to SIS and SHUSA ERM | 2d | 2015-06-29 | 2015-06-30 |  | 44d | start no earlier than 2015-06-29 |
| 652 |  | Present inventory to ERMC | 2d | 2015-06-29 | 2015-06-30 |  | 44d | start no earlier than 2015-06-29 |
| 653 |  | Equity Underwriting Material Risk Inventory Prepared | 0d | 2015-06-30 | 2015-06-30 |  | 45d | start no earlier than 2015-06-30 |
| 654 | 1.1.3.5.4 | **GBM- Fixed Income/Bond TradingMaterial Risk Inventory** | 2d | 2015-06-29 | 2015-06-30 |  | 44d |  |
| 655 |  | Deliver Final Inventory to SIS and SHUSA ERM | 2d | 2015-06-29 | 2015-06-30 |  | 44d | start no earlier than 2015-06-29 |
| 656 |  | Present inventory to ERMC | 2d | 2015-06-29 | 2015-06-30 |  | 44d | start no earlier than 2015-06-29 |
| 657 |  | Fixed Income/Bond TradingMaterial Risk Inventory Prepared | 0d | 2015-06-30 | 2015-06-30 |  | 45d | start no earlier than 2015-06-30 |
| 658 | 1.1.3.5.5 | **GBM - Futures Brokerage Material Risk Inventory** | 2d | 2015-06-29 | 2015-06-30 |  | 44d |  |
| 659 |  | Deliver Final Inventory to SIS and SHUSA ERM | 2d | 2015-06-29 | 2015-06-30 |  | 44d | start no earlier than 2015-06-29 |
| 660 |  | Present inventory to ERMC | 2d | 2015-06-29 | 2015-06-30 |  | 44d | start no earlier than 2015-06-29 |
| 661 |  | Futures Brokerage Material Risk Inventory Prepared | 0d | 2015-06-30 | 2015-06-30 |  | 45d | start no earlier than 2015-06-30 |
| 662 | 1.1.3.5.6 | **GBM - Fixed Income and Equity Research Material Risk Inventory** | 2d | 2015-06-29 | 2015-06-30 |  | 44d |  |
| 663 |  | Deliver Final Inventory to SIS and SHUSA ERM | 2d | 2015-06-29 | 2015-06-30 |  | 44d | start no earlier than 2015-06-29 |
| 664 |  | Present inventory to ERMC | 2d | 2015-06-29 | 2015-06-30 |  | 44d | start no earlier than 2015-06-29 |
| 665 |  | Fixed Income and Equity Research Material Risk Inventory Prepared | 0d | 2015-06-30 | 2015-06-30 |  | 45d | start no earlier than 2015-06-30 |
| 666 | 1.1.3.5.7 | **Human Resources Material Risk Inventory** | 2d | 2015-06-29 | 2015-06-30 |  | 44d |  |
| 667 |  | Deliver Final Inventory to SIS and SHUSA ERM | 2d | 2015-06-29 | 2015-06-30 |  | 44d | start no earlier than 2015-06-29 |
| 668 |  | Present inventory to ERMC | 2d | 2015-06-29 | 2015-06-30 |  | 44d | start no earlier than 2015-06-29 |
| 669 |  | Human Resources Material Risk Inventory Prepared | 0d | 2015-06-30 | 2015-06-30 |  | 45d | start no earlier than 2015-06-30 |
| 670 | 1.1.3.5.8 | **Finance Material Risk Inventory** | 2d | 2015-06-29 | 2015-06-30 |  | 44d |  |
| 671 |  | Deliver Final Inventory to SIS and SHUSA ERM | 2d | 2015-06-29 | 2015-06-30 |  | 44d | start no earlier than 2015-06-29 |
| 672 |  | Present inventory to ERMC | 2d | 2015-06-29 | 2015-06-30 |  | 44d | start no earlier than 2015-06-29 |
| 673 |  | Finance Material Risk Inventory Prepared | 0d | 2015-06-30 | 2015-06-30 |  | 45d | start no earlier than 2015-06-30 |
| 674 | 1.1.3.5.9 | **Technology and Operations Material Risk Inventory** | 2d | 2015-06-29 | 2015-06-30 |  | 44d |  |
| 675 |  | Deliver Final Inventory to SIS and SHUSA ERM | 2d | 2015-06-29 | 2015-06-30 |  | 44d | start no earlier than 2015-06-29 |
| 676 |  | Present inventory to ERMC | 2d | 2015-06-29 | 2015-06-30 |  | 44d | start no earlier than 2015-06-29 |
| 677 |  | Technology and Operations Material Risk Inventory Prepared | 0d | 2015-06-30 | 2015-06-30 |  | 45d | start no earlier than 2015-06-30 |
| 678 | 1.1.3.5.10 | **Legal Material Risk Inventory** | 2d | 2015-06-29 | 2015-06-30 |  | 44d |  |
| 679 |  | Deliver Final Inventory to SIS and SHUSA ERM | 2d | 2015-06-29 | 2015-06-30 |  | 44d | start no earlier than 2015-06-29 |
| 680 |  | Present inventory to ERMC | 2d | 2015-06-29 | 2015-06-30 |  | 44d | start no earlier than 2015-06-29 |
| 681 |  | Legal Material Risk Inventory Prepared | 0d | 2015-06-30 | 2015-06-30 |  | 45d | start no earlier than 2015-06-30 |
| 682 | 1.1.3.5.11 | **NY SIS Aggregation Workshops** | 20d? | 2015-07-01 | 2015-07-28 |  | 24d |  |
| 683 | 1.1.3.5.11.1 | **Credit Risk Aggregation** | 20d? | 2015-07-01 | 2015-07-28 |  | 24d |  |
| 684 |  | ERM disseminates Workshop Pre-Read Materials to Risk Managers | 8d? | 2015-07-01 | 2015-07-10 |  | 26d | finish no earlier than 2015-07-10 |
| 685 |  | ERM facilitates Aggregation and Enrichment Activities | 10d? | 2015-07-13 | 2015-07-24 | 684 | 26d |  |
| 686 |  | Risk Manager presents inventory to level II subcommittee | 2d? | 2015-07-27 | 2015-07-28 |  | 24d | finish no earlier than 2015-07-28 |
| 687 |  | Credit Risk Aggregation Prepared | 0d | 2015-07-28 | 2015-07-28 |  | 25d | start no earlier than 2015-07-28 |
| 688 | 1.1.3.5.11.2 | **Operational Risk Material Risk Aggregation** | 20d? | 2015-07-01 | 2015-07-28 |  | 24d |  |
| 689 |  | ERM disseminates Workshop Pre-Read Materials to Risk Managers | 8d? | 2015-07-01 | 2015-07-10 |  | 26d | finish no earlier than 2015-07-10 |
| 690 |  | ERM facilitates Aggregation and Enrichment Activities | 10d? | 2015-07-13 | 2015-07-24 | 689 | 26d |  |
| 691 |  | Risk Manager presents inventory to level II subcommittee | 2d? | 2015-07-27 | 2015-07-28 |  | 24d | finish no earlier than 2015-07-28 |
| 692 |  | Operational Risk Material Risk Aggregation Prepared | 0d | 2015-07-28 | 2015-07-28 |  | 25d | start no earlier than 2015-07-28 |
| 693 | 1.1.3.5.11.3 | **Compliance Material Risk Aggregation** | 20d? | 2015-07-01 | 2015-07-28 |  | 24d |  |
| 694 |  | ERM disseminates Workshop Pre-Read Materials to Risk Managers | 8d? | 2015-07-01 | 2015-07-10 |  | 26d | finish no earlier than 2015-07-10 |
| 695 |  | ERM facilitates Aggregation and Enrichment Activities | 10d? | 2015-07-13 | 2015-07-24 | 694 | 26d |  |
| 696 |  | Risk Manager presents inventory to level II subcommittee | 2d? | 2015-07-27 | 2015-07-28 |  | 24d | finish no earlier than 2015-07-28 |
| 697 |  | Compliance Material Risk Aggregation Prepared | 0d | 2015-07-28 | 2015-07-28 |  | 25d | start no earlier than 2015-07-28 |
| 698 | 1.1.3.5.11.4 | **Model Material Risk Aggregation** | 20d? | 2015-07-01 | 2015-07-28 |  | 24d |  |
| 699 |  | ERM disseminates Workshop Pre-Read Materials to Risk Managers | 8d? | 2015-07-01 | 2015-07-10 |  | 26d | finish no earlier than 2015-07-10 |
| 700 |  | ERM facilitates Aggregation and Enrichment Workshop | 10d? | 2015-07-13 | 2015-07-24 | 699 | 26d |  |

| ID | WBS | Task | Duration | Start | Finish | Predecessors | Total float | Constraint |
| --- | --- | --- | --- | --- | --- | --- | --- | --- |
| 701 |  | Risk Manager presents inventory to level II subcommittee | 2d? | 2015-07-27 | 2015-07-28 |  | 24d | finish no earlier than 2015-07-28 |
| 702 |  | Model Material Risk Aggregation Prepared | 0d | 2015-07-28 | 2015-07-28 |  | 25d | start no earlier than 2015-07-28 |
| 703 | 1.1.3.5.11.5 | **Liquidity/Market Material Risk Aggregation** | 20d? | 2015-07-01 | 2015-07-28 |  | 24d |  |
| 704 |  | ERM disseminates Workshop Pre-Read Materials to Risk Managers | 8d? | 2015-07-01 | 2015-07-10 |  | 26d | finish no earlier than 2015-07-10 |
| 705 |  | ERM facilitates Aggregation and Enrichment Activities | 10d? | 2015-07-13 | 2015-07-24 | 704 | 26d |  |
| 706 |  | Risk Manager presents inventory to level II subcommittee | 2d? | 2015-07-27 | 2015-07-28 |  | 24d | finish no earlier than 2015-07-28 |
| 707 |  | Liquidity/Market Material Risk Aggregation Prepared | 0d | 2015-07-28 | 2015-07-28 |  | 25d | start no earlier than 2015-07-28 |
| 708 | 1.1.3.5.11.6 | **Reputational/Strategic Material Risk Aggregation** | 20d? | 2015-07-01 | 2015-07-28 |  | 24d |  |
| 709 |  | ERM disseminates Workshop Pre-Read Materials to Risk Managers | 8d? | 2015-07-01 | 2015-07-10 |  | 26d | finish no earlier than 2015-07-10 |
| 710 |  | ERM facilitates Aggregation and Enrichment Activities | 10d? | 2015-07-13 | 2015-07-24 | 709 | 26d |  |
| 711 |  | Risk Manager presents inventory to level II subcommittee | 2d? | 2015-07-27 | 2015-07-28 |  | 24d | finish no earlier than 2015-07-28 |
| 712 |  | Reputational/Strategic Material Risk Aggregation Prepared | 0d | 2015-07-28 | 2015-07-28 |  | 25d | start no earlier than 2015-07-28 |
| 713 |  | Present Results to NY SIS ERMC | 25d | 2015-07-28 | 2015-08-31 |  | 674d | finish no earlier than 2015-08-31 |
| 714 |  | Present Results to NY SIS BERC | 25d | 2015-07-28 | 2015-08-31 |  | 674d | finish no earlier than 2015-08-31 |
| 715 | 1.1.3.6 | **Puerto Rico - Business Entity Material Risk Program** | 68d | 2015-05-28 | 2015-08-31 |  |  |  |
| 716 | 1.1.3.6.1 | **Retail Banking Material Risk Inventory** | 2d | 2015-06-29 | 2015-06-30 |  | 44d |  |
| 717 | 1.1.3.6.1.1 | **Personal Loans Banking Material Risk Inventory** | 2d | 2015-06-29 | 2015-06-30 |  | 44d |  |
| 718 |  | Deliver Final Inventory to PR and SHUSA ERM | 2d | 2015-06-29 | 2015-06-30 |  | 44d | start no earlier than 2015-06-29 |
| 719 |  | Personal Loans Banking Material Risk Inventory Prepared | 0d | 2015-06-30 | 2015-06-30 |  | 45d | start no earlier than 2015-06-30 |
| 720 | 1.1.3.6.1.2 | **Small Business Banking Material Risk Inventory** | 2d | 2015-06-29 | 2015-06-30 |  | 44d |  |
| 721 |  | Deliver Final Inventory to PR and SHUSA ERM | 2d | 2015-06-29 | 2015-06-30 |  | 44d | start no earlier than 2015-06-29 |
| 722 |  | Small Business Banking Material Risk Inventory Prepared | 0d | 2015-06-30 | 2015-06-30 |  | 45d | start no earlier than 2015-06-30 |
| 723 | 1.1.3.6.1.3 | **Santander Insurance Agency Material Risk Inventory** | 2d | 2015-06-29 | 2015-06-30 |  | 44d |  |
| 724 |  | Deliver Final Inventory to PR and SHUSA ERM | 2d | 2015-06-29 | 2015-06-30 |  | 44d | start no earlier than 2015-06-29 |
| 725 |  | Santander Insurance Agency Material Risk Inventory Prepared | 0d | 2015-06-30 | 2015-06-30 |  | 45d | start no earlier than 2015-06-30 |
| 726 | 1.1.3.6.1.4 | **Credit Cards Material Risk Inventory** | 2d | 2015-06-29 | 2015-06-30 |  | 44d |  |
| 727 |  | Deliver Final Inventory to PR and SHUSA ERM | 2d | 2015-06-29 | 2015-06-30 |  | 44d | start no earlier than 2015-06-29 |
| 728 |  | Credit Cards Material Risk Inventory Prepared | 0d | 2015-06-30 | 2015-06-30 |  | 45d | start no earlier than 2015-06-30 |
| 729 | 1.1.3.6.1.5 | **Mortgages Material Risk Inventory** | 2d | 2015-06-29 | 2015-06-30 |  | 44d |  |
| 730 |  | Deliver Final Inventory to PR and SHUSA ERM | 2d | 2015-06-29 | 2015-06-30 |  | 44d | start no earlier than 2015-06-29 |
| 731 |  | Mortgages Material Risk Inventory Prepared | 0d | 2015-06-30 | 2015-06-30 |  | 45d | start no earlier than 2015-06-30 |
| 732 | 1.1.3.6.2 | **Retail Banking: Create Retail Banking Material Risk Inventory** | 24d | 2015-05-28 | 2015-06-30 |  | 44d |  |
| 733 |  | Create Segment Material Risk Inventory (Aggregation) | 24d | 2015-05-28 | 2015-06-30 |  | 44d |  |
| 734 |  | Segment head presents inventory to ERMC | 2d | 2015-06-29 | 2015-06-30 |  | 44d | start no earlier than 2015-06-29 |
| 735 |  | Retail Banking Material Risk Inventory Prepared | 0d | 2015-06-30 | 2015-06-30 |  | 45d | start no earlier than 2015-06-30 |
| 736 | 1.1.3.6.3 | **Global Banking/Commercial Banking and CRE/Speciality and Gov't Banking Material Risk Inventory** | 2d | 2015-06-29 | 2015-06-30 |  | 44d |  |
| 737 | 1.1.3.6.3.1 | **GBM Material Risk Inventory** | 2d | 2015-06-29 | 2015-06-30 |  | 44d |  |
| 738 |  | Deliver Final Inventory to PR and SHUSA ERM | 2d | 2015-06-29 | 2015-06-30 |  | 44d | start no earlier than 2015-06-29 |
| 739 |  | GBM Material Risk Inventory Prepared | 0d | 2015-06-30 | 2015-06-30 |  | 45d | start no earlier than 2015-06-30 |
| 740 | 1.1.3.6.3.2 | **Enterprise Material Risk Inventory** | 2d | 2015-06-29 | 2015-06-30 |  | 44d |  |
| 741 |  | Deliver Final Inventory to PR and SHUSA ERM | 2d | 2015-06-29 | 2015-06-30 |  | 44d | start no earlier than 2015-06-29 |
| 742 |  | Enterprise Material Risk Inventory Prepared | 0d | 2015-06-30 | 2015-06-30 |  | 45d | start no earlier than 2015-06-30 |
| 743 | 1.1.3.6.3.3 | **Institutional/Public Sector Material Risk Inventory** | 2d | 2015-06-29 | 2015-06-30 |  | 44d |  |
| 744 |  | Deliver Final Inventory to PR and SHUSA ERM | 2d | 2015-06-29 | 2015-06-30 |  | 44d | start no earlier than 2015-06-29 |
| 745 |  | Institutional/Public Sector Material Risk Inventory Prepared | 0d | 2015-06-30 | 2015-06-30 |  | 45d | start no earlier than 2015-06-30 |
| 746 | 1.1.3.6.4 | **Global Banking/Commercial Banking/CRE & Speciality: Create Global Banking Material Risk Inventory** | 24d | 2015-05-28 | 2015-06-30 |  | 44d |  |
| 747 |  | Create Segment Material Risk Inventory (Aggregation) | 24d | 2015-05-28 | 2015-06-30 |  | 44d |  |
| 748 |  | Segment head presents inventory to ERMC | 2d | 2015-06-29 | 2015-06-30 |  | 44d | start no earlier than 2015-06-29 |
| 749 |  | Global Banking Material Risk Inventory Prepared | 0d | 2015-06-30 | 2015-06-30 |  | 45d | start no earlier than 2015-06-30 |
| 750 | 1.1.3.6.5 | **Mortgage Servicing Material Risk Inventory** | 2d | 2015-06-29 | 2015-06-30 |  | 44d |  |
| 751 |  | Deliver Final Inventory to PR and SHUSA ERM | 2d | 2015-06-29 | 2015-06-30 |  | 44d | start no earlier than 2015-06-29 |
| 752 |  | Present inventory to ERMC | 2d | 2015-06-29 | 2015-06-30 |  | 44d | start no earlier than 2015-06-29 |
| 753 |  | Mortgage Servicing Material Risk Inventory Prepared | 0d | 2015-06-30 | 2015-06-30 |  | 45d | start no earlier than 2015-06-30 |
| 754 | 1.1.3.6.6 | **Investment Services Material Risk Inventory** | 2d | 2015-06-29 | 2015-06-30 |  | 44d |  |
| 755 |  | Deliver Final Inventory to PR and SHUSA ERM | 2d | 2015-06-29 | 2015-06-30 |  | 44d | start no earlier than 2015-06-29 |
| 756 |  | Present inventory to ERMC | 2d | 2015-06-29 | 2015-06-30 |  | 44d | start no earlier than 2015-06-29 |
| 757 |  | Investment Services Material Risk Inventory Prepared | 0d | 2015-06-30 | 2015-06-30 |  | 45d | start no earlier than 2015-06-30 |
| 758 | 1.1.3.6.7 | **Trust Material Risk Inventory** | 2d | 2015-06-29 | 2015-06-30 |  | 44d |  |
| 759 |  | Deliver Final Inventory to PR and SHUSA ERM | 2d | 2015-06-29 | 2015-06-30 |  | 44d | start no earlier than 2015-06-29 |
| 760 |  | Present inventory to ERMC | 2d | 2015-06-29 | 2015-06-30 |  | 44d | start no earlier than 2015-06-29 |
| 761 |  | Trust Material Risk Inventory Prepared | 0d | 2015-06-30 | 2015-06-30 |  | 45d | start no earlier than 2015-06-30 |
| 762 | 1.1.3.6.8 | **Pension Plan Material Risk Inventory** | 2d | 2015-06-29 | 2015-06-30 |  | 44d |  |
| 763 |  | Deliver Final Inventory to PR and SHUSA ERM | 2d | 2015-06-29 | 2015-06-30 |  | 44d | start no earlier than 2015-06-29 |
| 764 |  | Present inventory to ERMC | 2d | 2015-06-29 | 2015-06-30 |  | 44d | start no earlier than 2015-06-29 |
| 765 |  | Pension Plan Material Risk Inventory Prepared | 0d | 2015-06-30 | 2015-06-30 |  | 45d | start no earlier than 2015-06-30 |
| 766 | 1.1.3.6.9 | **Foreign Accounts Material Risk Inventory** | 2d | 2015-06-29 | 2015-06-30 |  | 44d |  |
| 767 |  | Deliver Final Inventory to PR and SHUSA ERM | 2d | 2015-06-29 | 2015-06-30 |  | 44d | start no earlier than 2015-06-29 |
| 768 |  | Present inventory to ERMC | 2d | 2015-06-29 | 2015-06-30 |  | 44d | start no earlier than 2015-06-29 |
| 769 |  | Foreign Accounts Material Risk Inventory Prepared | 0d | 2015-06-30 | 2015-06-30 |  | 45d | start no earlier than 2015-06-30 |
| 770 | 1.1.3.6.10 | **Human Resources Material Risk Inventory** | 24d | 2015-05-28 | 2015-06-30 |  | 44d |  |

| ID | WBS | Task | Duration | Start | Finish | Predecessors | Total float | Constraint |
| --- | --- | --- | --- | --- | --- | --- | --- | --- |
| 771 |  | Create risk Inventory | 17d | 2015-05-28 | 2015-06-19 |  | 51d |  |
| 772 |  | Deliver Final Inventory to PR and SHUSA ERM | 2d | 2015-06-29 | 2015-06-30 |  | 44d | start no earlier than 2015-06-29 |
| 773 |  | Present inventory to ERMC | 2d | 2015-06-29 | 2015-06-30 |  | 44d | start no earlier than 2015-06-29 |
| 774 |  | Human Resources Material Risk Inventory Prepared | 0d | 2015-06-30 | 2015-06-30 |  | 45d | start no earlier than 2015-06-30 |
| 775 | 1.1.3.6.11 | **Technology and Operations Material Risk Inventory** | 2d | 2015-06-29 | 2015-06-30 |  | 44d |  |
| 776 |  | Deliver Final Inventory to PR and SHUSA ERM | 2d | 2015-06-29 | 2015-06-30 |  | 44d | start no earlier than 2015-06-29 |
| 777 |  | Present inventory to ERMC | 2d | 2015-06-29 | 2015-06-30 |  | 44d | start no earlier than 2015-06-29 |
| 778 |  | Technology and Operations Material Risk Inventory Prepared | 0d | 2015-06-30 | 2015-06-30 |  | 45d | start no earlier than 2015-06-30 |
| 779 | 1.1.3.6.12 | **Legal Material Risk Inventory** | 2d | 2015-06-29 | 2015-06-30 |  | 44d |  |
| 780 |  | Deliver Final Inventory to PR and SHUSA ERM | 2d | 2015-06-29 | 2015-06-30 |  | 44d | start no earlier than 2015-06-29 |
| 781 |  | Present inventory to ERMC | 2d | 2015-06-29 | 2015-06-30 |  | 44d | start no earlier than 2015-06-29 |
| 782 |  | Legal Material Risk Inventory Prepared | 0d | 2015-06-30 | 2015-06-30 |  | 45d | start no earlier than 2015-06-30 |
| 783 | 1.1.3.6.13 | **Finance Material Risk Inventory** | 2d | 2015-06-29 | 2015-06-30 |  | 44d |  |
| 784 |  | Deliver Final Inventory to PR and SHUSA ERM | 2d | 2015-06-29 | 2015-06-30 |  | 44d | start no earlier than 2015-06-29 |
| 785 |  | Present inventory to ERMC | 2d | 2015-06-29 | 2015-06-30 |  | 44d | start no earlier than 2015-06-29 |
| 786 |  | Finance Material Risk Inventory Prepared | 0d | 2015-06-30 | 2015-06-30 |  | 45d | start no earlier than 2015-06-30 |
| 787 | 1.1.3.6.14 | **SFS - Island Finance Material Risk Inventory** | 2d | 2015-06-29 | 2015-06-30 |  | 44d |  |
| 788 |  | Deliver Final Inventory to PR and SHUSA ERM | 2d | 2015-06-29 | 2015-06-30 |  | 44d | start no earlier than 2015-06-29 |
| 789 |  | Present inventory to ERMC | 2d | 2015-06-29 | 2015-06-30 |  | 44d | start no earlier than 2015-06-29 |
| 790 |  | SFS - Island Finance Material Risk Inventory Prepared | 0d | 2015-06-30 | 2015-06-30 |  | 45d | start no earlier than 2015-06-30 |
| 791 | 1.1.3.6.15 | **SFS - Special Assets Material Risk Inventory** | 2d | 2015-06-29 | 2015-06-30 |  | 44d |  |
| 792 |  | Deliver Final Inventory to PR and SHUSA ERM | 2d | 2015-06-29 | 2015-06-30 |  | 44d | start no earlier than 2015-06-29 |
| 793 |  | Present inventory to ERMC | 2d | 2015-06-29 | 2015-06-30 |  | 44d | start no earlier than 2015-06-29 |
| 794 |  | SFS - Special Assets Material Risk Inventory Prepared | 0d | 2015-06-30 | 2015-06-30 |  | 45d | start no earlier than 2015-06-30 |
| 795 | 1.1.3.6.16 | **Santander Overseas Bank - GBM Material Risk Inventory** | 2d | 2015-06-29 | 2015-06-30 |  | 44d |  |
| 796 |  | Deliver Final Inventory to PR and SHUSA ERM | 2d | 2015-06-29 | 2015-06-30 |  | 44d | start no earlier than 2015-06-29 |
| 797 |  | Present inventory to ERMC | 2d | 2015-06-29 | 2015-06-30 |  | 44d | start no earlier than 2015-06-29 |
| 798 |  | Santander Overseas Bank - GBM Material Risk Inventory Prepared | 0d | 2015-06-30 | 2015-06-30 |  | 45d | start no earlier than 2015-06-30 |
| 799 | 1.1.3.6.17 | **Puerto Rico - Santander Bancorp Aggregation Workshops** | 20d | 2015-07-01 | 2015-07-28 |  |  |  |
| 800 | 1.1.3.6.17.1 | **Credit Risk Aggregation** | 20d | 2015-07-01 | 2015-07-28 |  |  |  |
| 801 |  | ERM disseminates Workshop Pre-Read Materials to Risk Managers | 8d? | 2015-07-01 | 2015-07-10 |  | 2d | finish no earlier than 2015-07-10 |
| 802 |  | ERM facilitates Aggregation and Enrichment Activities | 10d? | 2015-07-13 | 2015-07-24 | 801 | 2d |  |
| 803 |  | Risk Manager presents inventory to level II subcommittee | 2d? | 2015-07-27 | 2015-07-28 |  | 698d | finish no earlier than 2015-07-28 |
| 804 |  | Credit Risk Aggregation Prepared | 0d | 2015-07-28 | 2015-07-28 |  | 699d | start no earlier than 2015-07-28 |
| 805 | 1.1.3.6.17.2 | **Operational Risk Material Risk Aggregation** | 20d | 2015-07-01 | 2015-07-28 |  |  |  |
| 806 |  | ERM disseminates Workshop Pre-Read Materials to Risk Managers | 8d? | 2015-07-01 | 2015-07-10 |  | 2d | finish no earlier than 2015-07-10 |
| 807 |  | ERM facilitates Aggregation and Enrichment Activities | 10d? | 2015-07-13 | 2015-07-24 | 806 | 2d |  |
| 808 |  | Risk Manager presents inventory to level II subcommittee | 2d? | 2015-07-27 | 2015-07-28 |  | 698d | finish no earlier than 2015-07-28 |
| 809 |  | Operational Risk Material Risk Aggregation Prepared | 0d | 2015-07-28 | 2015-07-28 |  | 699d | start no earlier than 2015-07-28 |
| 810 | 1.1.3.6.17.3 | **Compliance Material Risk Aggregation** | 20d | 2015-07-01 | 2015-07-28 |  |  |  |
| 811 |  | ERM disseminates Workshop Pre-Read Materials to Risk Managers | 8d? | 2015-07-01 | 2015-07-10 |  | 2d | finish no earlier than 2015-07-10 |
| 812 |  | ERM facilitates Aggregation and Enrichment Workshop | 10d? | 2015-07-13 | 2015-07-24 | 811 | 2d |  |
| 813 |  | Risk Manager presents inventory to level II subcommittee | 2d? | 2015-07-27 | 2015-07-28 |  | 698d | finish no earlier than 2015-07-28 |
| 814 |  | Compliance Material Risk Aggregation Prepared | 0d | 2015-07-28 | 2015-07-28 |  | 699d | start no earlier than 2015-07-28 |
| 815 | 1.1.3.6.17.4 | **Model Material Risk Aggregation** | 20d | 2015-07-01 | 2015-07-28 |  |  |  |
| 816 |  | ERM disseminates Workshop Pre-Read Materials to Risk Managers | 8d? | 2015-07-01 | 2015-07-10 |  | 2d | finish no earlier than 2015-07-10 |
| 817 |  | ERM facilitates Aggregation and Enrichment Activities | 10d? | 2015-07-13 | 2015-07-24 | 816 | 2d |  |
| 818 |  | Risk Manager presents inventory to level II subcommittee | 2d? | 2015-07-27 | 2015-07-28 |  | 698d | finish no earlier than 2015-07-28 |
| 819 |  | Model Material Risk Aggregation Prepared | 0d | 2015-07-28 | 2015-07-28 |  | 699d | start no earlier than 2015-07-28 |
| 820 | 1.1.3.6.17.5 | **Liquidity/Market Material Risk Aggregation** | 20d | 2015-07-01 | 2015-07-28 |  |  |  |
| 821 |  | ERM disseminates Workshop Pre-Read Materials to Risk Managers | 8d? | 2015-07-01 | 2015-07-10 |  | 2d | finish no earlier than 2015-07-10 |
| 822 |  | ERM facilitates Aggregation and Enrichment Activities | 10d? | 2015-07-13 | 2015-07-24 | 821 | 2d |  |
| 823 |  | Risk Manager presents inventory to level II subcommittee | 2d? | 2015-07-27 | 2015-07-28 |  | 698d | finish no earlier than 2015-07-28 |
| 824 |  | Liquidity/Market Material Risk Aggregation Prepared | 0d | 2015-07-28 | 2015-07-28 |  | 699d | start no earlier than 2015-07-28 |
| 825 | 1.1.3.6.17.6 | **Reputational/Strategic Material Risk Aggregation** | 20d | 2015-07-01 | 2015-07-28 |  |  |  |
| 826 |  | ERM disseminates Workshop Pre-Read Materials to Risk Managers | 8d? | 2015-07-01 | 2015-07-10 |  | 710d | finish no earlier than 2015-07-10 |
| 827 |  | ERM facilitates Aggregation and Enrichment Workshop | 5d? | 2015-07-20 | 2015-07-24 |  | 700d | finish no earlier than 2015-07-24 |
| 828 |  | Risk Manager presents inventory to level II subcommittee | 2d? | 2015-07-27 | 2015-07-28 |  | 698d | finish no earlier than 2015-07-28 |
| 829 |  | Reputational/Strategic Material Risk Aggregation Prepared | 0d | 2015-07-28 | 2015-07-28 |  | 699d | start no earlier than 2015-07-28 |
| 830 |  | Present Results to PR Santander Bancorp ERMC | 25d | 2015-07-28 | 2015-08-31 |  | 674d | start no earlier than 2015-07-28 |
| 831 |  | Present Results to PR Santander Bancorp BERC | 25d | 2015-07-28 | 2015-08-31 |  | 674d | start no earlier than 2015-07-28 |
| 832 | 1.1.3.7 | **Miami - Business Entity Material Risk Program** | 68d | 2015-05-28 | 2015-08-31 |  |  |  |
| 833 | 1.1.3.7.1 | **Private Banking Material Risk Inventory** | 2d | 2015-06-29 | 2015-06-30 |  | 44d |  |
| 834 |  | Deliver Final Inventory to Miami and SHUSA ERM | 2d | 2015-06-29 | 2015-06-30 |  | 44d | start no earlier than 2015-06-29 |
| 835 |  | Present inventory to ERMC | 2d | 2015-06-29 | 2015-06-30 |  | 44d | start no earlier than 2015-06-29 |
| 836 |  | Private Banking Material Risk Inventory Prepared | 0d | 2015-06-30 | 2015-06-30 |  | 45d | start no earlier than 2015-06-30 |
| 837 | 1.1.3.7.2 | **Personal Lending Material Risk Inventory** | 2d | 2015-06-29 | 2015-06-30 |  | 44d |  |
| 838 |  | Deliver Final Inventory to Miami and SHUSA ERM | 2d | 2015-06-29 | 2015-06-30 |  | 44d | start no earlier than 2015-06-29 |
| 839 |  | Present inventory to ERMC | 2d | 2015-06-29 | 2015-06-30 |  | 44d | start no earlier than 2015-06-29 |
| 840 |  | Personal Lending Material Risk Inventory Prepared | 0d | 2015-06-30 | 2015-06-30 |  | 45d | start no earlier than 2015-06-30 |

| ID | WBS | Task | Duration | Start | Finish | Predecessors | Total float | Constraint |
| --- | --- | --- | --- | --- | --- | --- | --- | --- |
| 841 | 1.1.3.7.3 | **Human Resources Material Risk Inventory** | 2d | 2015-06-29 | 2015-06-30 |  | 44d |  |
| 842 |  | Deliver Final Inventory to Miami and SHUSA ERM | 2d | 2015-06-29 | 2015-06-30 |  | 44d | start no earlier than 2015-06-29 |
| 843 |  | Present inventory to ERMC | 2d | 2015-06-29 | 2015-06-30 |  | 44d | start no earlier than 2015-06-29 |
| 844 |  | Human Resources Material Risk Inventory Prepared | 0d | 2015-06-30 | 2015-06-30 |  | 45d | start no earlier than 2015-06-30 |
| 845 | 1.1.3.7.4 | **Finance and Accounting Material Risk Inventory** | 24d | 2015-05-28 | 2015-06-30 |  | 44d |  |
| 846 |  | Create risk Inventory | 17d | 2015-05-28 | 2015-06-19 |  | 51d |  |
| 847 |  | Deliver Final Inventory to Miami and SHUSA ERM | 2d | 2015-06-29 | 2015-06-30 |  | 44d | start no earlier than 2015-06-29 |
| 848 |  | Present inventory to ERMC | 2d | 2015-06-29 | 2015-06-30 |  | 44d | start no earlier than 2015-06-29 |
| 849 |  | Finance and Accounting Material Risk Inventory Prepared | 0d | 2015-06-30 | 2015-06-30 |  | 45d | start no earlier than 2015-06-30 |
| 850 | 1.1.3.7.5 | **Technology and Operations Material Risk Inventory** | 2d | 2015-06-29 | 2015-06-30 |  | 44d |  |
| 851 |  | Deliver Final Inventory to Miami and SHUSA ERM | 2d | 2015-06-29 | 2015-06-30 |  | 44d | start no earlier than 2015-06-29 |
| 852 |  | Present inventory to ERMC | 2d | 2015-06-29 | 2015-06-30 |  | 44d | start no earlier than 2015-06-29 |
| 853 |  | Technology and Operations Material Risk Inventory Prepared | 0d | 2015-06-30 | 2015-06-30 |  | 45d | start no earlier than 2015-06-30 |
| 854 | 1.1.3.7.6 | **Legal Material Risk Inventory** | 2d | 2015-06-29 | 2015-06-30 |  | 44d |  |
| 855 |  | Deliver Final Inventory to Miami and SHUSA ERM | 2d | 2015-06-29 | 2015-06-30 |  | 44d | start no earlier than 2015-06-29 |
| 856 |  | Present inventory to ERMC | 2d | 2015-06-29 | 2015-06-30 |  | 44d | start no earlier than 2015-06-29 |
| 857 |  | Legal Material Risk Inventory Prepared | 0d | 2015-06-30 | 2015-06-30 |  | 45d | start no earlier than 2015-06-30 |
| 858 | 1.1.3.7.7 | **Miami Aggregation Workshops** | 20d | 2015-07-01 | 2015-07-28 |  |  |  |
| 859 | 1.1.3.7.7.1 | **Credit Risk Aggregation** | 20d | 2015-07-01 | 2015-07-28 |  |  |  |
| 860 |  | ERM disseminates Workshop Pre-Read Materials to Risk Managers | 8d? | 2015-07-01 | 2015-07-10 |  | 2d | finish no earlier than 2015-07-10 |
| 861 |  | ERM facilitates Aggregation and Enrichment Activities | 10d? | 2015-07-13 | 2015-07-24 | 860 | 2d |  |
| 862 |  | Risk Manager presents inventory to level II subcommittee | 2d? | 2015-07-27 | 2015-07-28 |  | 698d | finish no earlier than 2015-07-28 |
| 863 |  | Credit Risk Aggregation Prepared | 0d | 2015-07-28 | 2015-07-28 |  | 699d | start no earlier than 2015-07-28 |
| 864 | 1.1.3.7.7.2 | **Operational Risk Material Risk Aggregation** | 20d | 2015-07-01 | 2015-07-28 |  |  |  |
| 865 |  | ERM disseminates Workshop Pre-Read Materials to Risk Managers | 8d? | 2015-07-01 | 2015-07-10 |  | 2d | finish no earlier than 2015-07-10 |
| 866 |  | ERM facilitates Aggregation and Enrichment Activities | 10d? | 2015-07-13 | 2015-07-24 | 865 | 2d |  |
| 867 |  | Risk Manager presents inventory to level II subcommittee | 2d? | 2015-07-27 | 2015-07-28 |  | 698d | finish no earlier than 2015-07-28 |
| 868 |  | Operational Risk Material Risk Aggregation Prepared | 0d | 2015-07-28 | 2015-07-28 |  | 699d | start no earlier than 2015-07-28 |
| 869 | 1.1.3.7.7.3 | **Compliance Material Risk Aggregation** | 20d | 2015-07-01 | 2015-07-28 |  |  |  |
| 870 |  | ERM disseminates Workshop Pre-Read Materials to Risk Managers | 8d? | 2015-07-01 | 2015-07-10 |  | 2d | finish no earlier than 2015-07-10 |
| 871 |  | ERM facilitates Aggregation and Enrichment Activities | 10d? | 2015-07-13 | 2015-07-24 | 870 | 2d |  |
| 872 |  | Risk Manager presents inventory to level II subcommittee | 2d? | 2015-07-27 | 2015-07-28 |  | 698d | finish no earlier than 2015-07-28 |
| 873 |  | Compliance Material Risk Aggregation Prepared | 0d | 2015-07-28 | 2015-07-28 |  | 699d | start no earlier than 2015-07-28 |
| 874 | 1.1.3.7.7.4 | **Model Material Risk Aggregation** | 20d | 2015-07-01 | 2015-07-28 |  |  |  |
| 875 |  | ERM disseminates Workshop Pre-Read Materials to Risk Managers | 8d? | 2015-07-01 | 2015-07-10 |  | 2d | finish no earlier than 2015-07-10 |
| 876 |  | ERM facilitates Aggregation and Enrichment Workshop | 10d? | 2015-07-13 | 2015-07-24 | 875 | 2d |  |
| 877 |  | Risk Manager presents inventory to level II subcommittee | 2d? | 2015-07-27 | 2015-07-28 |  | 698d | finish no earlier than 2015-07-28 |
| 878 |  | Model Material Risk Aggregation Prepared | 0d | 2015-07-28 | 2015-07-28 |  | 699d | start no earlier than 2015-07-28 |
| 879 | 1.1.3.7.7.5 | **Liquidity/Market Material Risk Aggregation** | 20d | 2015-07-01 | 2015-07-28 |  |  |  |
| 880 |  | ERM disseminates Workshop Pre-Read Materials to Risk Managers | 8d? | 2015-07-01 | 2015-07-10 |  | 2d | finish no earlier than 2015-07-10 |
| 881 |  | ERM facilitates Aggregation and Enrichment Activities | 10d? | 2015-07-13 | 2015-07-24 | 880 | 2d |  |
| 882 |  | Risk Manager presents inventory to level II subcommittee | 2d? | 2015-07-27 | 2015-07-28 |  | 698d | finish no earlier than 2015-07-28 |
| 883 |  | Liquidity/Market Material Risk Aggregation Prepared | 0d | 2015-07-28 | 2015-07-28 |  | 699d | start no earlier than 2015-07-28 |
| 884 | 1.1.3.7.7.6 | **Reputational/Strategic Material Risk Aggregation** | 20d | 2015-07-01 | 2015-07-28 |  |  |  |
| 885 |  | ERM disseminates Workshop Pre-Read Materials to Risk Managers | 8d? | 2015-07-01 | 2015-07-10 |  | 2d | finish no earlier than 2015-07-10 |
| 886 |  | ERM facilitates Aggregation and Enrichment Workshop | 10d? | 2015-07-13 | 2015-07-24 | 885 | 2d |  |
| 887 |  | Risk Manager presents inventory to level II subcommittee | 2d? | 2015-07-27 | 2015-07-28 |  | 698d | finish no earlier than 2015-07-28 |
| 888 |  | Reputational/Strategic Material Risk Aggregation Prepared | 0d | 2015-07-28 | 2015-07-28 |  | 699d | start no earlier than 2015-07-28 |
| 889 |  | Present Miami to SCUSA ERMC | 25d | 2015-07-28 | 2015-08-31 |  | 674d | finish no earlier than 2015-08-31 |
| 890 |  | Present Miami to SCUSA BERC | 25d | 2015-07-28 | 2015-08-31 |  | 674d | finish no earlier than 2015-08-31 |
| 891 | 1.1.3.8 | **Year 2 and Year 3 Priorities** | 522d | 2016-04-01 | 2018-04-01 |  |  |  |
| 892 |  | Update and refine the SHUSA Material Risk Program, revising tools, templates, risk taxonomy, guidance, policies and procedures as necessary | 1d | 2016-04-01 | 2016-04-01 |  |  |  |
| 893 |  | Continually enhance foundational risk identification processes and data sources to align with established multi-year objectives | 1d | 2016-04-01 | 2016-04-01 |  |  |  |
| 894 | 1.1.4 | **Risk Management Processes** | 182d | 2015-09-11 | 2016-05-22 |  |  |  |
| 895 |  | Risk type A (Most likely Credit) | 62d | 2015-09-11 | 2015-12-06 |  |  |  |
| 896 |  | Risk type B (Most likely ERM + RAS + Strategic) | 62d | 2015-09-11 | 2015-12-06 |  |  |  |
| 897 |  | Risk type C (Most likely Market & Liquidity) | 62d | 2015-12-04 | 2016-02-28 |  |  |  |
| 898 |  | Risk type D (Most likely Compliance) | 62d | 2015-12-04 | 2016-02-28 |  |  |  |
| 899 |  | Risk type E (Most likely Risk Management Information) | 62d | 2016-02-26 | 2016-05-22 |  |  |  |
| 900 |  | Risk type F (Most likely Capital Risk) | 62d | 2016-02-26 | 2016-05-22 |  |  |  |
| 901 | 1.1.5 | **Risk Monitoring** | 145d | 2015-06-08 | 2015-12-25 |  |  |  |
| 902 | 1.1.5.1 | **Internal Reporting** | 205d? | 2015-06-08 | 2016-03-18 |  |  |  |
| 903 | 1.1.5.1.1 | **List of Deliverables** | 0d | 2015-06-08 | 2015-06-08 |  |  |  |
| 904 |  | example deliverable (linked to the detail below) | 0d | 2015-06-09 | 2015-06-09 |  |  | finish no earlier than 2015-06-08 |
| 905 | 1.1.5.1.2 | **Deliverables Detail** | 145d | 2015-06-08 | 2015-12-25 |  |  |  |
| 906 | 1.1.5.1.2.1 | **Quick-win enhancements for priority reports (Board and Level 1 Risk Committees)** | 45d | 2015-06-15 | 2015-08-14 |  |  |  |
| 907 | 1.1.5.1.2.1.1 | **Assessment of current reporting landscape (for Board and Level 1 Risk Committee reports only)** | 30d | 2015-06-15 | 2015-07-24 |  |  |  |
| 908 |  | Inventory existing reports | 10d | 2015-06-15 | 2015-06-26 |  |  | start no earlier than 2015-06-15 |
| 909 |  | Assess reports against best practice | 10d | 2015-06-22 | 2015-07-03 |  |  | start no earlier than 2015-06-22 |
| 910 |  | Determine if any quick-win enhancements can be made in terms of audience, content, frequency, format, etc. | 10d | 2015-07-06 | 2015-07-17 | 909 |  | finish no earlier than 2015-07-03 |

| ID | WBS | Task | Duration | Start | Finish | Predecessors | Constraint |
| --- | --- | --- | --- | --- | --- | --- | --- |
| 911 |  | Detail prioritization of and plan for enhancements | 5d | 2015-07-20 | 2015-07-24 | 910 | finish no earlier than 2015-07-03 |
| 912 |  | Completion of assessment and plan for implementation of enhancements | 0d | 2015-07-27 | 2015-07-27 | 911 | finish no earlier than 2015-07-03 |
| 913 | 1.1.5.1.2.1.2 | **Assessment of governance around reports (for Board and Level 1 Risk Committee reports only)** | 25d | 2015-06-22 | 2015-07-24 |  |  |
| 914 |  | Assess governance around internal reporting | 10d | 2015-06-22 | 2015-07-03 |  | start no earlier than 2015-06-22 |
| 915 |  | Determine if any quick-win enhancements can be made in terms of standards, processes (e.g. review process), documentation, controls, etc. | 10d | 2015-07-06 | 2015-07-17 | 914 | finish no earlier than 2015-07-17 |
| 916 |  | Detail prioritization of and plan for enhancements | 5d | 2015-07-20 | 2015-07-24 | 915 | finish no earlier than 2015-07-17 |
| 917 |  | Completion of assessment and plan for implementation of enhancements | 0d | 2015-07-27 | 2015-07-27 | 916 | finish no earlier than 2015-07-17 |
| 918 | 1.1.5.1.2.1.3 | **Implementation of quick-win enhancements (for Board and Level 1 Risk Committee reports only)** | 15d | 2015-07-27 | 2015-08-14 |  |  |
| 919 |  | Implement quick-win enhancements for priority reports | 10d | 2015-07-27 | 2015-08-07 |  | start no earlier than 2015-07-27 |
| 920 |  | Socialize with key stakeholders (SHUSA Board and Risk Managers) | 5d | 2015-08-10 | 2015-08-14 | 919 | finish no earlier than 2015-07-31 |
| 921 |  | Updated priority reports | 0d | 2015-08-17 | 2015-08-17 | 920 | finish no earlier than 2015-07-31 |
| 922 | 1.1.5.1.2.2 | **Definition of target risk reporting landscape** | 30d | 2015-07-27 | 2015-09-04 |  |  |
| 923 | 1.1.5.1.2.2.1 | **Definition of target risk reporting landscape** | 30d | 2015-07-27 | 2015-09-04 |  |  |
| 924 |  | Determine different audiences of Risk reporting (Group, local, regulatory, etc.) | 5d | 2015-07-27 | 2015-07-31 |  | start no earlier than 2015-07-27 |
| 925 |  | For each audience, outline essential content and frequency of reporting and document as target risk reporting landscape | 25d | 2015-07-27 | 2015-08-28 |  | start no earlier than 2015-07-27 |
| 926 |  | Socialize with key stakeholders (SHUSA) and update target landscape as necessary | 5d | 2015-08-31 | 2015-09-04 | 925 | finish no earlier than 2015-08-14 |
| 927 |  | Socialize with key stakeholders (SBNA) and update target landscape as necessary | 5d | 2015-08-31 | 2015-09-04 |  |  |
| 928 |  | Socialize with key stakeholders (SCUSA) and update target landscape as necessary | 5d | 2015-08-31 | 2015-09-04 |  |  |
| 929 |  | Prioritize reports for enhancement and assign reports to Wave 1 vs. Wave 2 of enhancements based on materiality | 5d | 2015-08-31 | 2015-09-04 |  | start no earlier than 2015-08-31 |
| 930 |  | Documented target risk reporting landscape | 0d | 2015-09-07 | 2015-09-07 | 929 | finish no earlier than 2015-08-14 |
| 931 | 1.1.5.1.2.3 | **Wave 1 of reporting enhancements** | 60d | 2015-08-17 | 2015-11-06 |  |  |
| 932 | 1.1.5.1.2.3.1 | **Development of template reports and socialization of Wave 1** | 20d | 2015-08-31 | 2015-09-25 |  |  |
| 933 |  | Design reporting templates/dashboard based on latest industry practices, leveraging existing work | 15d | 2015-08-31 | 2015-09-18 |  | start no earlier than 2015-08-31 |
| 934 |  | Socialize with key stakeholders (SHUSA) and update target landscape as necessary | 5d | 2015-09-21 | 2015-09-25 | 933 | start no earlier than 2015-09-21 |
| 935 |  | Socialize with key stakeholders (SBNA) and update target landscape as necessary | 5d | 2015-09-21 | 2015-09-25 |  |  |
| 936 |  | Socialize with key stakeholders (SCUSA) and update target landscape as necessary | 5d | 2015-09-21 | 2015-09-25 |  |  |
| 937 |  | Completed templates for Wave 1 reports | 0d | 2015-09-25 | 2015-09-25 |  | start no earlier than 2015-09-25 |
| 938 | 1.1.5.1.2.3.2 | **Roll-out of Wave 1 reports** | 25d | 2015-10-05 | 2015-11-06 |  |  |
| 939 |  | Review business and data requirements for both interim and target state of Wave 1 reports and make additions as necessary | 20d | 2015-09-28 | 2015-10-23 |  | start no earlier than 2015-09-28 |
| 940 |  | Pilot reports using available data (manual where necessary) | 20d | 2015-09-28 | 2015-10-23 |  | start no earlier than 2015-09-28 |
| 941 |  | Collect feedback from key stakeholders (SHUSA) | 5d | 2015-10-26 | 2015-10-30 |  | finish no earlier than 2015-10-30 |
| 942 |  | Collect feedback from key stakeholders (SBNA) | 5d | 2015-10-26 | 2015-10-30 |  |  |
| 943 |  | Collect feedback from key stakeholders (SCUSA) | 5d | 2015-10-26 | 2015-10-30 |  |  |
| 944 |  | Refine reports based on stakeholder feedback | 5d | 2015-11-02 | 2015-11-06 |  | finish no earlier than 2015-11-06 |
| 945 |  | Completion of Wave 1 roll-out | 0d | 2015-11-09 | 2015-11-09 |  | finish no earlier than 2015-11-06 |
| 946 | 1.1.5.1.2.4 | **Wave 2 of reporting enhancements** | 60d | 2015-10-05 | 2015-12-25 |  |  |
| 947 | 1.1.5.1.2.4.1 | **Development of template reports and socialization of Wave 2** | 20d | 2015-10-05 | 2015-10-30 |  |  |
| 948 |  | Design reporting templates/dashboard based on latest industry practices, leveraging existing work | 15d | 2015-10-05 | 2015-10-23 |  | start no earlier than 2015-10-05 |
| 949 |  | Socialize with key stakeholders (SHUSA) and update target landscape as necessary | 5d | 2015-10-26 | 2015-10-30 | 948 | start no earlier than 2015-10-26 |
| 950 |  | Socialize with key stakeholders (SBNA) and update target landscape as necessary | 5d | 2015-10-26 | 2015-10-30 |  |  |
| 951 |  | Socialize with key stakeholders (SCUSA) and update target landscape as necessary | 5d | 2015-10-26 | 2015-10-30 |  |  |
| 952 |  | Completed templates for Wave 2 reports | 0d | 2015-10-30 | 2015-10-30 |  | start no earlier than 2015-10-30 |
| 953 | 1.1.5.1.2.4.2 | **Roll-out of Wave 2 reports** | 25d | 2015-11-23 | 2015-12-25 |  |  |
| 954 |  | Review business and data requirements for both interim and target state of Wave 2 reports and make additions as necessary | 35d | 2015-11-02 | 2015-12-18 |  | finish no earlier than 2015-12-18 |
| 955 |  | Pilot reports using available data (manual where necessary) | 30d | 2015-11-02 | 2015-12-11 |  | finish no earlier than 2015-12-11 |
| 956 |  | Collect feedback from key stakeholders (SHUSA) | 5d | 2015-12-14 | 2015-12-18 |  | finish no earlier than 2015-12-18 |
| 957 |  | Collect feedback from key stakeholders (SBNA) | 5d | 2015-12-14 | 2015-12-18 |  |  |
| 958 |  | Collect feedback from key stakeholders (SCUSA) | 5d | 2015-12-14 | 2015-12-18 |  |  |
| 959 |  | Refine reports based on stakeholder feedback | 5d | 2015-12-21 | 2015-12-25 |  | finish no earlier than 2015-12-25 |
| 960 |  | Completion of Wave 2 roll-out | 0d | 2015-12-28 | 2015-12-28 |  | finish no earlier than 2015-12-25 |
| 961 | 1.1.5.1.2.5 | **Wave 3 of reporting enhancements** | 60d | 2015-12-28 | 2016-03-18 |  |  |
| 962 |  | Expansion to include IHC and all US entities, same steps as Wave 1 and 2 - timeline TBD | 1d? | 2015-12-28 | 2015-12-28 |  |  |
| 963 | 1.1.5.1.3 | **Years 2-3 Plans** | 522d | 2016-04-01 | 2018-04-01 |  |  |
| 964 |  | Develop templates and launch reports at multiple levels of granularity, including management committee (Level 2) and sub-committees level, Line of Business, and day-to-day operations level | 1d? | 2016-04-01 | 2016-04-01 |  |  |
| 965 |  | Continually update business requirements for reporting, and assess resources to produce and deliver reports | 1d? | 2016-04-01 | 2016-04-01 |  |  |

## Version 2 (saved 2015-06-24, file 20150624 1240  Risk Transformation Master Plan.mpp)

Last finish stays 2018-04-01. Complete tasks 0 → 13.

Added:

| ID | Task | Duration | Start | Finish | Predecessors | Constraint | Resources |
| --- | --- | --- | --- | --- | --- | --- | --- |
| 181 | **Cascade RAS to Santander Investment Securities (SIS NY)** | 109d | 2016-02-01 | 2016-06-30 |  |  |  |
| 182 | Detail material risks specific to subsidiary (leveraging SHUSA-level list, but making additions as necessary) | 109d | 2016-02-01 | 2016-06-30 |  |  |  |
| 183 | For each risk, determine a qualitative risk appetite statement (leveraging SHUSA-level RAS) | 109d | 2016-02-01 | 2016-06-30 |  |  |  |
| 184 | For quantifiable statements, identify key metrics and calibrate limits (leveraging SHUSA-level RAS) | 109d | 2016-02-01 | 2016-06-30 |  |  |  |
| 185 | Consolidate qualitative and quantitative statements into subsidiary RAS and socialize with stakeholders | 109d | 2016-02-01 | 2016-06-30 |  |  |  |
| 186 | Secure Board approval of RAS for priority subsidiaries | 109d | 2016-02-01 | 2016-06-30 |  |  |  |
| 187 | Communicate subsidiary RAS to enterprise | 109d | 2016-02-01 | 2016-06-30 |  |  |  |
| 188 | **Cascade RAS to Puerto Rico** | 109d | 2016-02-01 | 2016-06-30 |  |  |  |
| 189 | Detail material risks specific to subsidiary (leveraging SHUSA-level list, but making additions as necessary) | 109d | 2016-02-01 | 2016-06-30 |  |  |  |
| 190 | For each risk, determine a qualitative risk appetite statement (leveraging SHUSA-level RAS) | 109d | 2016-02-01 | 2016-06-30 |  |  |  |
| 191 | For quantifiable statements, identify key metrics and calibrate limits (leveraging SHUSA-level RAS) | 109d | 2016-02-01 | 2016-06-30 |  |  |  |
| 192 | Consolidate qualitative and quantitative statements into subsidiary RAS and socialize with stakeholders | 109d | 2016-02-01 | 2016-06-30 |  |  |  |
| 193 | Secure Board approval of RAS for priority subsidiaries | 109d | 2016-02-01 | 2016-06-30 |  |  |  |
| 194 | Communicate subsidiary RAS to enterprise | 109d | 2016-02-01 | 2016-06-30 |  |  |  |
| 195 | **Cascade RAS to Miami** | 109d | 2016-02-01 | 2016-06-30 |  |  |  |
| 196 | Detail material risks specific to subsidiary (leveraging SHUSA-level list, but making additions as necessary) | 109d | 2016-02-01 | 2016-06-30 |  |  |  |
| 197 | For each risk, determine a qualitative risk appetite statement (leveraging SHUSA-level RAS) | 109d | 2016-02-01 | 2016-06-30 |  |  |  |
| 198 | For quantifiable statements, identify key metrics and calibrate limits (leveraging SHUSA-level RAS) | 109d | 2016-02-01 | 2016-06-30 |  |  |  |
| 199 | Consolidate qualitative and quantitative statements into subsidiary RAS and socialize with stakeholders | 109d | 2016-02-01 | 2016-06-30 |  |  |  |
| 200 | Secure Board approval of RAS for priority subsidiaries | 109d | 2016-02-01 | 2016-06-30 |  |  |  |
| 201 | Communicate subsidiary RAS to enterprise | 109d | 2016-02-01 | 2016-06-30 |  |  |  |
| 202 | **Cascade RAS to remainder of subsidiaries and select BUs** | 109d? | 2016-02-01 | 2016-06-30 |  |  |  |
| 203 | Detail material risks specific to subsidiary (leveraging SHUSA-level list, but making additions as necessary) | 109d | 2016-02-01 | 2016-06-30 |  |  |  |
| 204 | For each risk, determine a qualitative risk appetite statement (leveraging SHUSA-level RAS) | 109d | 2016-02-01 | 2016-06-30 |  |  |  |
| 205 | For quantifiable statements, identify key metrics and calibrate limits (leveraging SHUSA-level RAS) | 109d | 2016-02-01 | 2016-06-30 |  |  |  |
| 206 | Consolidate qualitative and quantitative statements into subsidiary RAS and socialize with stakeholders | 109d | 2016-02-01 | 2016-06-30 |  |  |  |
| 207 | Secure Board approval of RAS for priority subsidiaries | 109d | 2016-02-01 | 2016-06-30 |  |  |  |
| 208 | Communicate subsidiary RAS to enterprise | 109d | 2016-02-01 | 2016-06-30 |  |  |  |
| 229 | **Continue to cascade the risk appetite statement for the remainder of subsidiaries and business units and ensure alignment with overall SHUSA risk appetite statement** | 130d | 2016-01-01 | 2016-06-30 |  |  |  |
| 230 | Complete similar process (as SHUSA, SBNA and SCUSA RAS development) for remainder of subsidiaries and select BUs | 130d | 2016-01-01 | 2016-06-30 |  |  |  |
| 231 | Finalized RAS for remainder of subsidiaries and BUs - aligned with SHUSA-level RAS | 0d | 2016-06-30 | 2016-06-30 |  |  |  |
| 232 | **Embed risk appetite statement in key processes at lower levels of the organization** | 130d | 2016-01-01 | 2016-06-30 |  |  |  |
| 233 | Execute plan for implementation of embedding in key processes at lower levels | 130d | 2016-01-01 | 2016-06-30 |  |  |  |
| 234 | Completion of embedding RAS in key processses at lower levels of organization | 0d | 2016-06-30 | 2016-06-30 |  |  |  |
| 235 | **Continue to communicate risk appetite statement throughout the enterprise, including training in the new escalation and remediation process** | 131d | 2016-04-01 | 2016-09-30 |  |  |  |
| 236 | Continue communication of RAS throughout enterprise | 131d | 2016-04-01 | 2016-09-30 |  |  |  |
| 237 | Conduct training in new escalation and remediation process | 131d | 2016-04-01 | 2016-09-30 |  |  |  |
| 238 | Completed communication and training throughout enterprise | 0d | 2016-09-30 | 2016-09-30 |  |  |  |
| 241 | Completion of Round 1 of RAS enhancements | 0d | 2016-12-30 | 2016-12-30 |  |  |  |
| 243 | Completion of Round 2 of RAS enhancements | 0d | 2017-06-30 | 2017-06-30 |  |  |  |
| 316 | Rollout Performance Assessment and Compensation Frameworks across the Organization Completed | 0d | 2016-04-01 | 2016-04-01 |  |  |  |
| 321 | Roll-Out of New Target Operating Model Completed | 0d | 2016-04-01 | 2016-04-01 |  |  |  |
| 326 | Talent Management Mechanisms Completed | 0d | 2016-04-01 | 2016-04-01 |  |  |  |
| 330 | Risk Culture across the Organization Completed | 0d | 2016-04-01 | 2016-04-01 |  |  |  |
| 852 | **New Credit Risk Rating System** | 327d | 2014-10-01 A | 2015-12-31 |  |  | D. Spector |
| 853 | **Implementation of new ratings to reflect statistically valid rating methodology (CRE Q1-16 /C&I Q2-16)** | 327d | 2014-10-01 A | 2015-12-31 |  |  |  |
| 854 | **Rating Determination (Includes Model Development)** | 304d | 2014-10-01 A | 2015-11-30 |  |  |  |
| 855 | **CRE** | 304d | 2014-10-01 A | 2015-11-30 |  |  |  |
| 856 | Complete Road Map for CRE and C&I internal risk rating framework | 44d | 2014-10-01 A | 2014-12-01 A |  |  | Mc Kinsey |
| 857 | Data Selection and Sample Procurement for CRE & C&I for internal risk rating framework | 65d | 2014-10-01 A | 2014-12-30 A |  |  | Internal |
| 858 | CRE Model developed on sample data (good end results) | 44d | 2014-11-01 A | 2014-12-31 A |  |  | Internal |
| 859 | CRE data procurement process completed | 43d | 2015-01-01 A | 2015-02-28 A |  |  | Internal |
| 860 | Phase I CRE Model developed on data from 2005 - 2009 (statistical and expert model) | 23d | 2015-03-01 A | 2015-03-31 A |  |  | Mc Kinsey / Internal |
| 861 | Phase I CRE Model documentation completed | 23d | 2015-03-01 A | 2015-03-31 A |  |  | Mc Kinsey / Internal |
| 862 | Phase II CRE Model development in process (includes data from 2005 to 2014) (statistical and expert model) | 33d | 2015-04-01 A | 2015-05-15 A |  |  | Mc Kinsey / Internal |
| 863 | Phase II CRE Model documentation in progress | 33d | 2015-04-01 A | 2015-05-15 A |  |  | Mc Kinsey / Internal |
| 864 | IT Requirements submission | 21d | 2015-05-01 A | 2015-05-29 A |  |  | Internal |
| 865 | Data Technology to implement models CRE | 88d | 2015-06-01 A | 2015-09-30 |  |  | Produban / Diego Lago |
| 866 | QA Submission for CRE Models | 22d | 2015-06-01 | 2015-06-30 |  |  | Internal |
| 867 | QA Approval for CRE Models (David Spector) | 65d | 2015-06-01 | 2015-08-28 |  |  | Internal - Validation Team |
| 868 | Credit Professional start testing and using the CRE Model | 22d | 2015-10-01 | 2015-10-30 |  |  | D. Spector |
| 869 | Final Rollout | 21d | 2015-11-02 | 2015-11-30 |  |  | D. Spector |
| 870 | CRE Part Prepared | 0d | 2015-11-30 | 2015-11-30 |  |  |  |
| 871 | **C&I (Start after the CRE, structure can be leverage from CRE)** | 216d | 2015-02-02 A | 2015-11-30 |  |  |  |
| 872 | Prepare plan for C&I - dependent on CRE IT requirements submission (completion date estimated for 12/3/15) | 1d | 2015-05-01 A | 2015-05-01 A |  |  | Internal |
| 873 | C&I data procurement process completed | 20d | 2015-02-02 A | 2015-02-27 A |  |  | Internal |
| 874 | C&I Model developed on sample data (good end results) | 20d | 2015-02-02 A | 2015-02-27 A |  |  | Internal |
| 875 | Phase II C&I Model development in process (includes data from 2005 to 2014) (statistical and expert model) | 23d | 2015-07-01 | 2015-07-31 |  |  | Mc Kinsey / Internal |
| 876 | Phase II C&I Model documentation in progress | 1d | 2015-08-31 | 2015-08-31 |  |  | Mc Kinsey / Internal |
| 877 | IT Requirements submission | 1d | 2015-09-30 | 2015-09-30 |  |  | Internal |
| 878 | Data Technology to implement models C&I | 1d | 2015-10-30 | 2015-10-30 |  |  | Produban / Diego Lago |
| 879 | QA Submission for C&I Models | 1d | 2015-10-30 | 2015-10-30 |  |  | Internal |
| 880 | QA Approval for C&I Models (David Spector) | 1d | 2015-11-30 | 2015-11-30 |  |  | Internal - Validation Team |
| 881 | C&I Part Prepared | 0d | 2015-11-30 | 2015-11-30 |  |  |  |
| 882 | **Governance** | 45d | 2015-06-01 A | 2015-07-31 |  |  |  |
| 883 | Finalize Risk Rating Charter | 22d | 2015-06-01 A | 2015-06-30 A |  |  | C. Nelson |
| 884 | Finalize Rating Policy Document | 23d | 2015-07-01 | 2015-07-31 |  |  | C. Nelson |
| 885 | Obtain Policy Approval from CRC | 23d | 2015-07-01 | 2015-07-31 |  |  | C. Nelson |
| 886 | Governance Part Prepared | 0d | 2015-07-31 | 2015-07-31 |  |  |  |
| 887 | **Training** | 153d | 2015-06-01 | 2015-12-30 |  |  |  |
| 888 | Complete internal socialization document | 22d | 2015-06-01 | 2015-06-30 |  |  | C. Nelson |
| 889 | Develop CRE Training Module | 22d | 2015-09-01 | 2015-09-30 |  |  | C. Nelson |
| 890 | CRE Training Rollout | 22d | 2015-12-01 | 2015-12-30 |  |  | C. Nelson |
| 891 | Develop C&I Training | 22d | 2015-12-01 | 2015-12-30 |  |  | C. Nelson |
| 892 | Training Prepared | 0d | 2015-12-30 | 2015-12-30 |  |  |  |
| 893 | **Testing** | 88d | 2015-06-01 | 2015-09-30 |  |  |  |
| 894 | In conjunction with Modeling, prepare for User Testing | 22d | 2015-06-01 | 2015-06-30 |  |  | C. Nelson |
| 895 | UAT feedback and Modeling | 22d | 2015-09-01 | 2015-09-30 |  |  | C. Nelson |
| 896 | Testing Prepared | 0d | 2015-09-30 | 2015-09-30 |  |  |  |
| 897 | **Implementation** | 219d | 2015-06-01 | 2016-03-31 |  |  |  |
| 898 | T&O coordination/input | 22d | 2015-06-01 | 2015-06-30 |  |  | C. Nelson |
| 899 | CRE Implementation | 1d | 2016-03-31 | 2016-03-31 |  |  | C. Nelson |
| 900 | Implementation Prepared | 0d | 2016-03-31 | 2016-03-31 |  |  |  |
| 901 | **Procedures** | 21d | 2015-08-03 | 2015-08-31 |  |  |  |
| 902 | Develop Standards and Processes for Users | 21d | 2015-08-03 | 2015-08-31 |  |  | C. Nelson |
| 903 | Standards and Processes Prepared | 0d | 2015-08-31 | 2015-08-31 |  |  |  |
| 904 | **Approval Committee** | 22d | 2015-06-01 | 2015-06-30 |  |  |  |
| 905 | Create Draft Committee Calendar for Q3 and Q4 2015 | 22d | 2015-06-01 | 2015-06-30 |  |  | C. Nelson |
| 906 | Draft Committee Calendar Prepared | 0d | 2015-06-30 | 2015-06-30 |  |  |  |
| 907 | **Staffing** | 22d | 2015-09-01 | 2015-09-30 |  |  |  |
| 908 | Decide on hire | 22d | 2015-09-01 | 2015-09-30 |  |  | C. Nelson |
| 909 | Communication | 22d | 2015-06-01 | 2015-06-30 |  |  | C. Nelson |
| 910 | Staffing Completed | 0d | 2015-06-30 | 2015-06-30 |  |  |  |
| 911 | **Liquidity Stress Test Challenge Process Framework** | 154d | 2015-06-01 | 2015-12-31 |  |  |  |
| 912 | Document the roles and responsibilities of all parties involved with the liquidity stress test operating model | 11d | 2015-06-01 | 2015-06-15 |  |  |  |
| 913 | Define specific steps of the liquidity stress test process, including the review and approval process to the committees | 11d | 2015-06-01 | 2015-06-15 |  |  |  |
| 914 | Liquidity Stress Test Challenge Process Framework Prepared | 0d | 2015-06-15 | 2015-06-15 |  |  |  |
| 915 | **Committees Approvals and Review** | 2d | 2015-06-29 | 2015-06-30 |  |  |  |
| 916 | Submit to the Market Risk Committee for approval | 2d | 2015-06-29 | 2015-06-30 |  |  |  |
| 917 | Submit to the Liquidity Risk Management Committee for approval | 2d | 2015-06-29 | 2015-06-30 |  |  |  |
| 918 | Submit to the Enterprise Risk Management Committee for approval | 2d | 2015-06-29 | 2015-06-30 |  |  |  |
| 919 | Submit to BERC for review & Approval | 11d | 2015-09-01 | 2015-09-15 |  |  |  |
| 920 | Implement operating model | 66d | 2015-10-01 | 2015-12-31 |  |  |  |
| 921 | Committees Approvals and Review Completed | 0d | 2015-12-31 | 2015-12-31 |  |  |  |
| 922 | <New Task> | 1d? | 2015-06-24 | 2015-06-24 |  |  |  |
| 923 | **Year 2 & 3 Deliverable / Milestone** | 1d? | 2015-09-11 | 2015-09-11 |  |  |  |
| 924 | Update and refine the SHUSA Material Risk Program, revising tools, templates, risk taxonomy, guidance, policies and procedures as necessary | 1d? | 2015-09-11 | 2015-09-11 |  |  |  |
| 925 | Continually enhance foundational risk identification processes and data sources to align with established multi-year objectives | 1d? | 2015-09-11 | 2015-09-11 |  |  |  |
| 949 | Refine different audiences of Risk reporting (Group, local, regulatory, etc.) | 5d | 2015-07-27 | 2015-07-31 |  | start no earlier than 2015-07-27 |  |
| 957 | Review glossary of definitions to use across subsidiaries and business units | 15d | 2015-08-31 | 2015-09-18 |  |  |  |
| 965 | Implement refined reports in-production | 1d | 2015-11-06 | 2015-11-06 |  |  |  |
| 968 | **Development of template reports and socialization of Wave 2 (based on materiality)** | 20d | 2015-10-05 | 2015-10-30 |  |  |  |
| 977 | Implement refined reports in-production | 1d | 2015-12-25 | 2015-12-25 |  |  |  |
| 981 | Completion of Wave 3 roll-out | 0d | 2016-04-01 | 2016-04-01 |  |  |  |
| 983 | **Develop and launch additional waves of reporting enhancements** | 131d | 2016-04-01 | 2016-09-30 |  |  |  |
| 984 | **Develop templates reports at multiple levels of granularity (TBD), including management committee (based on materiality) and sub-committees level, Line of Business, and day-to-day operations level** | 65d | 2016-04-01 | 2016-06-30 |  |  |  |
| 985 | Design reporting templates/dashboard based on latest industry practices, leveraging existing work | 65d | 2016-04-01 | 2016-06-30 |  | start no earlier than 2016-04-01 |  |
| 986 | Review glossary of definitions to use across subsidiaries and business units | 65d | 2016-04-01 | 2016-06-30 |  | start no earlier than 2016-04-01 |  |
| 987 | Socialize with key stakeholders (SHUSA) and update target landscape as necessary | 65d | 2016-04-01 | 2016-06-30 | 985 | start no earlier than 2016-04-01 |  |
| 988 | Completed template development for additional levels of granularity | 0d | 2016-06-30 | 2016-06-30 |  | start no earlier than 2016-06-30 |  |
| 989 | **Launch reports at multiple levels of granularity** | 66d | 2016-07-01 | 2016-09-30 |  |  |  |
| 990 | Review business and data requirements for both interim and target state of Wave 1 reports and make additions as necessary | 66d | 2016-07-01 | 2016-09-30 |  | start no earlier than 2016-07-01 |  |
| 991 | Pilot reports using available data (manual where necessary) | 66d | 2016-07-01 | 2016-09-30 |  | start no earlier than 2016-07-01 |  |
| 992 | Collect feedback from key stakeholders (SHUSA) | 66d | 2016-07-01 | 2016-09-30 |  | start no earlier than 2016-07-01 |  |
| 993 | Refine reports based on stakeholder feedback | 66d | 2016-07-01 | 2016-09-30 |  | start no earlier than 2016-07-01 |  |
| 994 | Implement refined reports in-production | 66d | 2016-07-01 | 2016-09-30 |  |  |  |
| 995 | Completed launch | 0d | 2016-09-30 | 2016-09-30 |  | start no earlier than 2016-09-30 |  |
| 996 | **Refinements to monitoring documentation and automation** | 131d | 2016-04-01 | 2016-09-30 |  |  |  |
| 997 | Document methodology for creating all adjusted/new reports | 131d | 2016-04-01 | 2016-09-30 |  |  |  |
| 998 | Test and implement technology to automate the completion of the Y2/Q1 reports | 131d | 2016-04-01 | 2016-09-30 |  |  |  |
| 999 | Completion of methodology documentation and technology implementation | 0d | 2016-09-30 | 2016-09-30 |  |  |  |
| 1000 | **Develop controls for additional reporting** | 261d | 2016-04-01 | 2017-03-31 |  |  |  |
| 1001 | Develop quality assurance controls for newly enhanced reports | 131d | 2016-04-01 | 2016-09-30 |  |  |  |
| 1002 | Completion of QA controls | 0d | 2016-09-30 | 2016-09-30 |  |  |  |
| 1003 | **Assess resource needs and conduct additional refinements to monitoring requirements** | 261d | 2016-04-01 | 2017-03-31 |  |  |  |
| 1004 | Assess resources to produce and deliver reports | 196d | 2016-04-01 | 2016-12-30 |  |  |  |
| 1006 | Completion of additional refinements to monitoring requirements | 0d | 2017-03-31 | 2017-03-31 |  |  |  |

Removed: 181 Definition of approach for cascading SHUSA-level RAS to subsidiaries and levels below; 182 Document approach for cascading SHUSA-level RAS to subsidiaries and levels below; 183 Determine organizational levels to which cascading is appropriate and draft planned approach; 184 Facilitate review and challenge sessions for cascading approach with stakeholders (SIS NY); 185 Facilitate review and challenge sessions for cascading approach with stakeholders (Puerto Rico); 186 Facilitate review and challenge sessions for cascading approach with stakeholders (Miami); 187 Update documentation for cascading approach, given stakeholder input; 188 Finalized plan for cascading SHUSA-level RAS to subsidiaries and levels below; 189 RAS for SIS NY, Puerto Rico, Miami – follow similar process as SHUSA; 190 Detail material risks specific to SIS NY, Puerto Rico, Miami (leveraging SHUSA-level list, but making additions as necessary); 191 Identify and document subsidiary-specific risks and constraints, including those not captured in SHUSA-level RAS(SIS NY); 192 Identify and document subsidiary-specific risks and constraints, including those not captured in SHUSA-level RAS(Puerto Rico); 193 Identify and document subsidiary-specific risks and constraints, including those not captured in SHUSA-level RAS(Miami); 194 Identify and document constraints from Group, regulators and other stakeholders (i.e. ratings agencies); 195 Facilitate review and challenge session for list of material risks with key stakeholders (SHUSA); 196 Facilitate review and challenge session for list of material risks with key stakeholders (SIS NY); 197 Facilitate review and challenge session for list of material risks with key stakeholders (Puerto Rico); 198 Facilitate review and challenge session for list of material risks with key stakeholders (Miami); 199 Update documentation of subsidiary-specific risks and constraints, given stakeholder input(SIS NY); 200 Update documentation of subsidiary-specific risks and constraints, given stakeholder input(Puerto Rico); 201 Update documentation of subsidiary-specific risks and constraints, given stakeholder input(Miami); 202 Finalized documentation of material risks and constraints specific to priority subsidiaries; 203 For each risk, determine a qualitative risk appetite statement (leveraging SHUSA-level RAS); 204 Determine SHUSA-level RAS statements relevant to subsidiaries(SIS NY); 205 Determine SHUSA-level RAS statements relevant to subsidiaries(Puerto Rico); 206 Determine SHUSA-level RAS statements relevant to subsidiaries(Miami); 207 Detail statements for material risks specific to the subsidiary, not captured in SHUSA-level RAS(SIS NY); 208 Detail statements for material risks specific to the subsidiary, not captured in SHUSA-level RAS(Puerto Rico); 209 Detail statements for material risks specific to the subsidiary, not captured in SHUSA-level RAS(Miami); 210 Consolidate into subsidiary specific-list of statements (leverage existing work) (SIS NY); 211 Consolidate into subsidiary specific-list of statements (leverage existing work) (Puerto Rico); 212 Consolidate into subsidiary specific-list of statements (leverage existing work) (Miami); 213 Socialize SIS NY, Puerto Rico, Miami qualitative statements with key stakeholders (SHUSA); 214 Socialize SIS NY, Puerto Rico, Miami qualitative statements with key stakeholders (SIS NY); 215 Socialize SIS NY, Puerto Rico, Miami qualitative statements with key stakeholders (Puerto Rico); 216 Socialize SIS NY, Puerto Rico, Miami qualitative statements with key stakeholders (Miami); 217 Finalized qualitative risk appetite statements for subsidiary-specific risks; 218 For quantifiable statements, identify key metrics and calibrate limits (leveraging SHUSA-level RAS); 219 Determine SHUSA-level RAS metrics relevant to subsidiaries(SIS NY); 220 Determine SHUSA-level RAS metrics relevant to subsidiaries(Puerto Rico); 221 Determine SHUSA-level RAS metrics relevant to subsidiaries(Miami); 222 Identify metrics for material risks specific to the subsidiary, not captured in SHUSA-level RAS, and compile in list with relevant metrics from SHUSA-level RAS(SIS NY); 223 Identify metrics for material risks specific to the subsidiary, not captured in SHUSA-level RAS, and compile in list with relevant metrics from SHUSA-level RAS(Puerto Rico); 224 Identify metrics for material risks specific to the subsidiary, not captured in SHUSA-level RAS, and compile in list with relevant metrics from SHUSA-level RAS(Miami); 225 Facilitate review and challenge session for proposed metrics, limits and thresholds with key stakeholders (SHUSA); 226 Facilitate review and challenge session for proposed metrics, limits and thresholds with key stakeholders (SIS NY); 227 Facilitate review and challenge session for proposed metrics, limits and thresholds with key stakeholders (Puerto Rico); 228 Facilitate review and challenge session for proposed metrics, limits and thresholds with key stakeholders (Miami); 229 Update list of subsidiary-specific metrics, given stakeholder input, and identify and document owners for each metric(SIS NY); 230 Update list of subsidiary-specific metrics, given stakeholder input, and identify and document owners for each metric(Puerto Rico); 231 Update list of subsidiary-specific metrics, given stakeholder input, and identify and document owners for each metric(Miami); 232 Detail limits and thresholds for list of subsidiary-specific metrics(SIS NY); 233 Detail limits and thresholds for list of subsidiary-specific metrics(Puerto Rico); 234 Detail limits and thresholds for list of subsidiary-specific metrics(Miami); 235 Calibrate limits for subsidiary risks, ensure subsidiary-level limits align to SHUSA-level limits(SIS NY); 236 Calibrate limits for subsidiary risks, ensure subsidiary-level limits align to SHUSA-level limits(Puerto Rico); 237 Calibrate limits for subsidiary risks, ensure subsidiary-level limits align to SHUSA-level limits(Miami); 238 Document rationale for SHUSA metrics; 239 Document IT requirements for SHUSA metrics; 240 Consolidate metrics, limits and thresholds into quantifiable statements for subsidiary-specific risks(SIS NY); 241 Consolidate metrics, limits and thresholds into quantifiable statements for subsidiary-specific risks(Puerto Rico); 242 Consolidate metrics, limits and thresholds into quantifiable statements for subsidiary-specific risks(Miami); 243 Socialize SBNA and SCUSA quantitative statements with stakeholders (SHUSA); 244 Socialize SBNA and SCUSA quantitative statements with stakeholders (SIS NY); 245 Socialize SBNA and SCUSA quantitative statements with stakeholders (Puerto Rico); 246 Socialize SBNA and SCUSA quantitative statements with stakeholders (Miami); 247 Finalized quantitative risk appetite statements for subsidiary-specific risks; 248 Consolidate qualitative and quantitative statements into SIS NY RAS, Puerto Rico RAS and Miami RAS socialize with stakeholders; 249 Draft SIS NY RAS; 250 Draft Puerto Rico RAS; 251 Draft Miami RAS; 252 Socialize SIS NY RAS, Puerto Rico RAS and Miami RAS with stakeholders (SHUSA); 253 Socialize SIS NY RAS, Puerto Rico RAS and Miami RAS with stakeholders (SIS NY RAS); 254 Socialize SIS NY RAS, Puerto Rico RAS and Miami RAS with stakeholders (Puerto Rico RAS); 255 Socialize SIS NY RAS, Puerto Rico RAS and Miami RAS with stakeholders (Miami RAS); 256 Final drafts of SBNA RAS and SCUSA RAS; 257 Secure Board approval of RAS for other subsidiaries; 258 6-week buffer for governance process(SHUSA); 259 6-week buffer for governance process(SIS NY RAS); 260 6-week buffer for governance process(Puerto Rico RAS); 261 6-week buffer for governance process(Miami RAS); 262 Board-approved SHUSA-level RAS; 263 Communicate SIS NY RAS, Puerto Rico RAS and Miami RAS to enterprise; 264 Create communication materials to aid in socialization process(SIS NY); 265 Create communication materials to aid in socialization process(Puerto Rico); 266 Create communication materials to aid in socialization process(Miami); 267 Facilitate training, town halls, etc. to communicate RAS to enterprise(SIS NY); 268 Facilitate training, town halls, etc. to communicate RAS to enterprise(Puerto Rico); 269 Facilitate training, town halls, etc. to communicate RAS to enterprise(Miami); 270 Completed formal communication process to enterprise; 291 Continue to cascade the risk appetite statement for the remainder of subsidiaries and business units and ensure alignment with overall SHUSA risk appetite statement; 292 Embed risk appetite statement in key processes at lower levels of the organization; 293 Continue to communicate risk appetite statement throughout the enterprise, including training in the new escalation and remediation process; 924 Determine different audiences of Risk reporting (Group, local, regulatory, etc.); 927 Socialize with key stakeholders (SBNA) and update target landscape as necessary; 928 Socialize with key stakeholders (SCUSA) and update target landscape as necessary; 935 Socialize with key stakeholders (SBNA) and update target landscape as necessary; 936 Socialize with key stakeholders (SCUSA) and update target landscape as necessary; 942 Collect feedback from key stakeholders (SBNA); 943 Collect feedback from key stakeholders (SCUSA); 947 Development of template reports and socialization of Wave 2; 950 Socialize with key stakeholders (SBNA) and update target landscape as necessary; 951 Socialize with key stakeholders (SCUSA) and update target landscape as necessary; 957 Collect feedback from key stakeholders (SBNA); 958 Collect feedback from key stakeholders (SCUSA); 964 Develop templates and launch reports at multiple levels of granularity, including management committee (Level 2) and sub-committees level, Line of Business, and day-to-day operations level

Changed:

| ID | Task | Start | Finish | Duration | Complete | Other |
| --- | --- | --- | --- | --- | --- | --- |
| 1 | **Capital and Risk Transformation SHUSA** | 2014-09-19 A |  |  | 0% → 4% |  |
| 2 | **Risk Transformation** | 2014-09-19 A |  |  | 0% → 4% |  |
| 9 | Finalize CART plan at task-level |  |  |  |  | resources none → Oliver Wyman |
| 10 | Socialize plan with key stakeholders (SHUSA) |  |  |  |  | resources none → Oliver Wyman |
| 11 | Socialize plan with key stakeholders (SBNA) |  |  |  |  | resources none → Oliver Wyman |
| 12 | Socialize plan with key stakeholders (SCUSA) |  |  |  |  | resources none → Oliver Wyman |
| 13 | Communicate plan to CART stakeholders |  |  |  |  | resources none → Oliver Wyman |
| 16 | Draft guidelines and approach for metrics and limits (no Finance metrics, risk profile, risk appetite, stressed metrics) |  |  |  |  | resources none → Oliver Wyman |
| 17 | Socialize Risk Appetite guidelines to stakeholders (SHUSA) |  |  |  |  | resources none → Oliver Wyman |
| 18 | Socialize plan with key stakeholders (SBNA) |  |  |  |  | resources none → Oliver Wyman |
| 19 | Socialize plan with key stakeholders (SCUSA) |  |  |  |  | resources none → Oliver Wyman |
| 20 | Update guidelines per stakeholder feedback |  |  |  |  | resources none → Oliver Wyman |
| 23 | Draft of enterprise-wide core values, RAS principles and major risk categories (e.g. credit) |  |  |  |  | resources none → Oliver Wyman |
| 24 | Socialize Risk Appetite philosophy to stakeholders (SHUSA) |  |  |  |  | resources none → Oliver Wyman |
| 25 | Socialize Risk Appetite philosophy to stakeholders (SBNA) |  |  |  |  | resources none → Oliver Wyman |
| 26 | Socialize Risk Appetite philosophy to stakeholders (SCUSA) |  |  |  |  | resources none → Oliver Wyman |
| 27 | Update values, principles and risk categories per stakeholder feedback |  |  |  |  | resources none → Oliver Wyman |
| 30 | Identify and document material risks for enterprise, including input from stakeholders (SHUSA) |  |  |  |  | resources none → Oliver Wyman |
| 31 | Identify and document material risks for enterprise, including input from stakeholders (SBNA) |  |  |  |  | resources none → Oliver Wyman |
| 32 | Identify and document material risks for enterprise, including input from stakeholders (SCUSA) |  |  |  |  | resources none → Oliver Wyman |
| 33 | Identify and document constraints from regulators and other stakeholders (i.e. ratings agencies) |  |  |  |  | resources none → Oliver Wyman |
| 34 | Consolidate all requirements from Group, including updated corporate metrics (recalculated with April numbers) |  |  |  |  | resources none → Oliver Wyman |
| 35 | Document owners and rationale for all corporate metrics |  |  |  |  | resources none → Oliver Wyman |
| 36 | Facilitate review and challenge session for list of material risks with key stakeholders (SHUSA) |  |  |  |  | resources none → Oliver Wyman |
| 37 | Facilitate review and challenge session for list of material risks with key stakeholders (SBNA) |  |  |  |  | resources none → Oliver Wyman |
| 38 | Facilitate review and challenge session for list of material risks with key stakeholders (SCUSA) |  |  |  |  | resources none → Oliver Wyman |
| 39 | Update documentation of material risks and constraints, given stakeholder input |  |  |  |  | resources none → Oliver Wyman |
| 42 | Draft a qualitative risk appetite statement for all risks detailed in documentation of material risks for enterprise, considering documented constraints |  |  |  |  | resources none → Oliver Wyman |
| 43 | Socialize SHUSA-level qualitative statements with stakeholders (SHUSA) |  |  |  |  | resources none → Oliver Wyman |
| 44 | Socialize SHUSA-level qualitative statements with stakeholders (SBNA) |  |  |  |  | resources none → Oliver Wyman |
| 45 | Socialize SHUSA-level qualitative statements with stakeholders (SCUSA) |  |  |  |  | resources none → Oliver Wyman |
| 48 | Finalize list of proposed SHUSA metrics |  |  |  |  | resources none → Oliver Wyman |
| 49 | Facilitate review and challenge session for proposed metrics, limits and thresholds with key stakeholders (SHUSA) |  |  |  |  | resources none → Oliver Wyman |
| 50 | Facilitate review and challenge session for proposed metrics, limits and thresholds with key stakeholders (SBNA) |  |  |  |  | resources none → Oliver Wyman |
| 51 | Facilitate review and challenge session for proposed metrics, limits and thresholds with key stakeholders (SCUSA) |  |  |  |  | resources none → Oliver Wyman |
| 52 | Update list of SHUSA metrics, given stakeholder input, and identify and document owners for each metric |  |  |  |  | resources none → Oliver Wyman |
| 53 | Detail limits and thresholds for list of SHUSA metrics |  |  |  |  | resources none → Oliver Wyman |
| 54 | Calibrate limits based on analysis of historical data, industry benchmarking, etc. |  |  |  |  | resources none → Oliver Wyman |
| 55 | Document rationale for SHUSA metrics |  |  |  |  | resources none → Oliver Wyman |
| 56 | Document IT requirements for SHUSA metrics |  |  |  |  | resources none → Oliver Wyman |
| 57 | Consolidate metrics, limits and thresholds into quantifiable statements for material risks |  |  |  |  | resources none → Oliver Wyman |
| 58 | Socialize quantitative statements with stakeholders (SHUSA) |  |  |  |  | resources none → Oliver Wyman |
| 59 | Socialize quantitative statements with stakeholders (SBNA) |  |  |  |  | resources none → Oliver Wyman |
| 60 | Socialize quantitative statements with stakeholders (SCUSA) |  |  |  |  | resources none → Oliver Wyman |
| 63 | Draft SHUSA-level RAS |  |  |  |  | resources none → Oliver Wyman |
| 64 | Socialize SHUSA-level RAS with stakeholders (SHUSA) |  |  |  |  | resources none → Oliver Wyman |
| 65 | Socialize SHUSA-level RAS with stakeholders (SBNA) |  |  |  |  | resources none → Oliver Wyman |
| 66 | Socialize SHUSA-level RAS with stakeholders (SCUSA) |  |  |  |  | resources none → Oliver Wyman |
| 70 | Draft SHUSA-level RAS reporting and monitoring process |  |  |  |  | resources none → Oliver Wyman |
| 71 | Draft SHUSA-level RAS breach escalation process and detail consequences |  |  |  |  | resources none → Oliver Wyman |
| 72 | Socialize processes with stakeholders (SHUSA) |  |  |  |  | resources none → Oliver Wyman |
| 73 | Socialize processes with stakeholders (SBNA) |  |  |  |  | resources none → Oliver Wyman |
| 74 | Socialize processes with stakeholders (SCUSA) |  |  |  |  | resources none → Oliver Wyman |
| 77 | Draft SHUSA-level RAS development documentation and governance process |  |  |  |  | resources none → Oliver Wyman |
| 78 | Socialize documents with stakeholders (SHUSA) |  |  |  |  | resources none → Oliver Wyman |
| 79 | Socialize documents with stakeholders (SBNA) |  |  |  |  | resources none → Oliver Wyman |
| 80 | Socialize documents with stakeholders (SCUSA) |  |  |  |  | resources none → Oliver Wyman |
| 84 | Create materials for Board training on RAS roles & responsibilities |  |  |  |  | resources none → Oliver Wyman |
| 85 | Create materials for Board training on RAS structure and metrics |  |  |  |  | resources none → Oliver Wyman |
| 86 | Deliver Board training session(s) |  |  |  |  | resources none → Oliver Wyman |
| 87 | Present SHUSA-level RAS to ERMC/EMC |  |  |  |  | resources none → Oliver Wyman |
| 88 | Present CDR presentation to Madrid for review |  |  |  |  | resources none → Oliver Wyman |
| 89 | Update RAS given feedback from SHUSA and Madrid risk committees |  |  |  |  | resources none → Oliver Wyman |
| 90 | Present to Board/BERC for review |  |  |  |  | resources none → Oliver Wyman |
| 91 | Present SHUSA-level RAS to CDR |  |  |  |  | resources none → Oliver Wyman |
| 92 | Update RAS given feedback from CDR |  |  |  |  | resources none → Oliver Wyman |
| 93 | Submit SHUSA-level RAS for Board approval |  |  |  |  | resources none → Oliver Wyman |
| 95 | **Cascaded RAS across enterprise through creation of subsidiary-level and, where ncessary, BU-level statements** |  | 2016-05-27 → 2016-06-30 (+34d) | 260d? → 284d? |  |  |
| 98 | Assess current state of SCUSA RAS, focusing on pre-determined "pain points" (not reviewing RAS in entirety) |  |  |  |  | resources none → Oliver Wyman |
| 99 | Determine plan for short-term remediation |  |  |  |  | resources none → Oliver Wyman |

| ID | Task | Finish | Duration | Other |
| --- | --- | --- | --- | --- |
| 102 | Redefine SCUSA liquidity limit |  |  | resources none → Oliver Wyman |
| 103 | Redefine SCUSA RWA limit |  |  | resources none → Oliver Wyman |
| 104 | Redefine SCUSA total asset limit |  |  | resources none → Oliver Wyman |
| 105 | Socialize updated limits and all proposed remediations to SCUSA RAS |  |  | resources none → Oliver Wyman |
| 106 | Update SCUSA RAS based on agreed upon remediations |  |  | resources none → Oliver Wyman |
| 110 | Determine organizational levels to which cascading is appropriate and draft planned approach |  |  | resources none → Oliver Wyman |
| 111 | Facilitate review and challenge sessions for cascading approach with stakeholders (SHUSA) |  |  | resources none → Oliver Wyman |
| 112 | Facilitate review and challenge sessions for cascading approach with stakeholders (SBNA) |  |  | resources none → Oliver Wyman |
| 113 | Facilitate review and challenge sessions for cascading approach with stakeholders (SCUSA) |  |  | resources none → Oliver Wyman |
| 114 | Update documentation for cascading approach, given stakeholder input |  |  | resources none → Oliver Wyman |
| 118 | Identify and document subsidiary-specific risks and constraints, including those not captured in SHUSA-level RAS(SBNA) |  |  | resources none → Oliver Wyman |
| 119 | Identify and document subsidiary-specific risks and constraints, including those not captured in SHUSA-level RAS(SCUSA) |  |  | resources none → Oliver Wyman |
| 120 | Identify and document constraints from Group, regulators and other stakeholders (i.e. ratings agencies) |  |  | resources none → Oliver Wyman |
| 121 | Facilitate review and challenge session for list of material risks with key stakeholders (SHUSA) |  |  | resources none → Oliver Wyman |
| 122 | Facilitate review and challenge session for list of material risks with key stakeholders (SBNA) |  |  | resources none → Oliver Wyman |
| 123 | Facilitate review and challenge session for list of material risks with key stakeholders (SCUSA) |  |  | resources none → Oliver Wyman |
| 124 | Update documentation of subsidiary-specific risks and constraints, given stakeholder input(SBNA) |  |  | resources none → Oliver Wyman |
| 125 | Update documentation of subsidiary-specific risks and constraints, given stakeholder input(SCUSA) |  |  | resources none → Oliver Wyman |
| 128 | Determine SHUSA-level RAS statements relevant to subsidiaries(SBNA) |  |  | resources none → Oliver Wyman |
| 129 | Determine SHUSA-level RAS statements relevant to subsidiaries(SCUSA) |  |  | resources none → Oliver Wyman |
| 130 | Detail statements for material risks specific to the subsidiary, not captured in SHUSA-level RAS(SBNA) |  |  | resources none → Oliver Wyman |
| 131 | Detail statements for material risks specific to the subsidiary, not captured in SHUSA-level RAS(SCUSA) |  |  | resources none → Oliver Wyman |
| 132 | Consolidate into subsidiary specific-list of statements (leverage existing work) (SBNA) |  |  | resources none → Oliver Wyman |
| 133 | Consolidate into subsidiary specific-list of statements (leverage existing work) (SCUSA) |  |  | resources none → Oliver Wyman |
| 134 | Socialize SBNA and SCUSA qualitative statements with key stakeholders (SHUSA) |  |  | resources none → Oliver Wyman |
| 135 | Socialize SBNA and SCUSA qualitative statements with key stakeholders (SBNA) |  |  | resources none → Oliver Wyman |
| 136 | Socialize SBNA and SCUSA qualitative statements with key stakeholders (SCUSA) |  |  | resources none → Oliver Wyman |
| 139 | Determine SHUSA-level RAS metrics relevant to subsidiaries(SBNA) |  |  | resources none → Oliver Wyman |
| 140 | Determine SHUSA-level RAS metrics relevant to subsidiaries(SCUSA) |  |  | resources none → Oliver Wyman |
| 141 | Identify metrics for material risks specific to the subsidiary, not captured in SHUSA-level RAS, and compile in list with relevant metrics from SHUSA-level RAS(SBNA) |  |  | resources none → Oliver Wyman |
| 142 | Identify metrics for material risks specific to the subsidiary, not captured in SHUSA-level RAS, and compile in list with relevant metrics from SHUSA-level RAS(SCUSA) |  |  | resources none → Oliver Wyman |
| 143 | Facilitate review and challenge session for proposed metrics, limits and thresholds with key stakeholders (SHUSA) |  |  | resources none → Oliver Wyman |
| 144 | Facilitate review and challenge session for proposed metrics, limits and thresholds with key stakeholders (SBNA) |  |  | resources none → Oliver Wyman |
| 145 | Facilitate review and challenge session for proposed metrics, limits and thresholds with key stakeholders (SCUSA) |  |  | resources none → Oliver Wyman |
| 146 | Update list of subsidiary-specific metrics, given stakeholder input, and identify and document owners for each metric(SBNA) |  |  | resources none → Oliver Wyman |
| 147 | Update list of subsidiary-specific metrics, given stakeholder input, and identify and document owners for each metric(SCUSA) |  |  | resources none → Oliver Wyman |
| 148 | Detail limits and thresholds for list of subsidiary-specific metrics(SBNA) |  |  | resources none → Oliver Wyman |
| 149 | Detail limits and thresholds for list of subsidiary-specific metrics(SCUSA) |  |  | resources none → Oliver Wyman |
| 150 | Calibrate limits for subsidiary risks, ensure subsidiary-level limits align to SHUSA-level limits(SBNA) |  |  | resources none → Oliver Wyman |
| 151 | Calibrate limits for subsidiary risks, ensure subsidiary-level limits align to SHUSA-level limits(SCUSA) |  |  | resources none → Oliver Wyman |
| 152 | Document rationale for SHUSA metrics |  |  | resources none → Oliver Wyman |
| 153 | Document IT requirements for SHUSA metrics |  |  | resources none → Oliver Wyman |
| 154 | Consolidate metrics, limits and thresholds into quantifiable statements for subsidiary-specific risks(SBNA) |  |  | resources none → Oliver Wyman |
| 155 | Consolidate metrics, limits and thresholds into quantifiable statements for subsidiary-specific risks(SCUSA) |  |  | resources none → Oliver Wyman |
| 156 | Socialize SBNA and SCUSA quantitative statements with stakeholders (SHUSA) |  |  | resources none → Oliver Wyman |
| 157 | Socialize SBNA and SCUSA quantitative statements with stakeholders (SBNA) |  |  | resources none → Oliver Wyman |
| 158 | Socialize SBNA and SCUSA quantitative statements with stakeholders (SCUSA) |  |  | resources none → Oliver Wyman |
| 161 | Draft SBNA RAS |  |  | resources none → Oliver Wyman |
| 162 | Draft SCUSA RAS |  |  | resources none → Oliver Wyman |
| 163 | Socialize SBNA RAS and SCUSA RAS with stakeholders (SHUSA) |  |  | resources none → Oliver Wyman |
| 164 | Socialize SBNA RAS and SCUSA RAS with stakeholders (SBNA) |  |  | resources none → Oliver Wyman |
| 165 | Socialize SBNA RAS and SCUSA RAS with stakeholders (SCUSA) |  |  | resources none → Oliver Wyman |
| 168 | 6-week buffer for governance process(SHUSA) |  |  | resources none → Oliver Wyman |
| 169 | 6-week buffer for governance process(SBNA) |  |  | resources none → Oliver Wyman |
| 170 | 6-week buffer for governance process(SCUSA) |  |  | resources none → Oliver Wyman |
| 173 | Create communication materials to aid in socialization process(SHUSA) |  |  | resources none → Oliver Wyman |
| 174 | Create communication materials to aid in socialization process(SBNA) |  |  | resources none → Oliver Wyman |
| 175 | Create communication materials to aid in socialization process(SCUSA) |  |  | resources none → Oliver Wyman |
| 176 | Facilitate training, town halls, etc. to communicate RAS to enterprise(SHUSA) |  |  | resources none → Oliver Wyman |
| 177 | Facilitate training, town halls, etc. to communicate RAS to enterprise(SBNA) |  |  | resources none → Oliver Wyman |
| 178 | Facilitate training, town halls, etc. to communicate RAS to enterprise(SCUSA) |  |  | resources none → Oliver Wyman |
| 180 | **RAS for remainder of subsidiaries and select Bus (SIS NY, Puerto Rico, Miami)** | 2016-05-27 → 2016-06-30 (+34d) | 85d → 109d |  |
| 212 | Compare draft of SHUSA-level RAS against draft of strategic plan |  |  | resources none → Oliver Wyman |
| 213 | Identify gaps and adjust strategic plan as necessary |  |  | resources none → Oliver Wyman |
| 214 | Socialize with key stakeholders (SHUSA) |  |  | resources none → Oliver Wyman |
| 215 | Socialize with key stakeholders (SBNA) |  |  | resources none → Oliver Wyman |
| 216 | Socialize with key stakeholders (SCUSA) |  |  | resources none → Oliver Wyman |
| 219 | Identify processes that should be explicitly linked to RAS (e.g. strategic planning, capital planning) |  |  | resources none → Oliver Wyman |
| 220 | Detail nature of process linkage, including alignment to statements, metrics and limits described in the RAS |  |  | resources none → Oliver Wyman |
| 221 | Assess degree to which RAS considerations are already embedded in key processes |  |  | resources none → Oliver Wyman |

| ID | Task | Finish | Duration | Complete | Other |
| --- | --- | --- | --- | --- | --- |
| 225 | Detail plan for implementation of RAS in material processes (e.g. new product and business activity approval process) |  |  |  | resources none → Oliver Wyman |
| 226 | Detail processes/controls to ensure that RAS is being further integrated into all processes until BAU |  |  |  | resources none → Oliver Wyman |
| 249 | Diagnostic of Risk Mgmt. Committee effectiveness |  |  |  | resources none → Oliver Wyman |
| 251 | Delivery of Board Training (session 1) |  |  |  | resources none → Oliver Wyman |
| 252 | Board risk training curriculum and schedule |  |  |  | resources none → Oliver Wyman |
| 253 | Delivery of Board Training (session 2) |  |  |  | resources none → Oliver Wyman |
| 255 | Governance and coordination mechanisms between SHUSA and parent |  |  |  | resources none → Oliver Wyman |
| 256 | Definition of composition / mandates / charters for BERC and Level 1 Risk Committees |  |  |  | resources none → Oliver Wyman |
| 257 | Definition of composition / mandates / charters for Level 2 Risk Committees |  |  |  | resources none → Oliver Wyman |
| 259 | High level assessment and remediation of performance scorecards |  |  |  | resources none → Oliver Wyman |
| 265 | Formalize subsidiary CRO reporting lines, socialize and refine solution (SHUSA) |  |  |  | resources none → Oliver Wyman |
| 266 | Define implications of reporting lines (for Performance assessment and hiring/firing authority) (SHUSA) |  |  |  | resources none → Oliver Wyman |
| 267 | Design 1st LoD risk organization leadership structure including the role of RCO (SHUSA) |  |  |  | resources none → Oliver Wyman |
| 268 | Formalize subsidiary CRO reporting lines, socialize and refine solution (SBNA) |  |  |  | resources none → Oliver Wyman |
| 269 | Define implications of reporting lines (for Performance assessment and hiring/firing authority) (SBNA) |  |  |  | resources none → Oliver Wyman |
| 270 | Design 1st LoD risk organization leadership structure including the role of RCO (SBNA) |  |  |  | resources none → Oliver Wyman |
| 271 | Formalize subsidiary CRO reporting lines, socialize and refine solution (SCUSA) |  |  |  | resources none → Oliver Wyman |
| 272 | Define implications of reporting lines (for Performance assessment and hiring/firing authority) (SCUSA) |  |  |  | resources none → Oliver Wyman |
| 273 | Design 1st LoD risk organization leadership structure including the role of RCO (SCUSA) |  |  |  | resources none → Oliver Wyman |
| 275 | Review of existing 1st LoD structure and capabilities |  |  |  | resources none → Oliver Wyman |
| 277 | Framework update with refined Roles and Responsibilities splits |  |  |  | resources none → Oliver Wyman |
| 278 | Formalized Risk group Org. Structure and Talent Assessment |  |  |  | resources none → Oliver Wyman |
| 279 | Implementation Planning, specification of interrelationships |  |  |  | resources none → Oliver Wyman |
| 282 | Framework update with refined Roles and Responsibilities splits |  |  |  | resources none → Oliver Wyman |
| 283 | Formalized Risk group Org. Structure and Talent Assessment |  |  |  | resources none → Oliver Wyman |
| 284 | Implementation Planning, specification of interrelationships |  |  |  | resources none → Oliver Wyman |
| 287 | Framework update with refined Roles and Responsibilities splits |  |  |  | resources none → Oliver Wyman |
| 288 | Formalized Risk group Org. Structure and Talent Assessment |  |  |  | resources none → Oliver Wyman |
| 289 | Implementation Planning, specification of interrelationships |  |  |  | resources none → Oliver Wyman |
| 292 | Framework update with refined Roles and Responsibilities splits |  |  |  | resources none → Oliver Wyman |
| 293 | Formalized Risk group Org. Structure and Talent Assessment |  |  |  | resources none → Oliver Wyman |
| 294 | Implementation Planning, specification of interrelationships |  |  |  | resources none → Oliver Wyman |
| 297 | Framework update with refined Roles and Responsibilities splits |  |  |  | resources none → Oliver Wyman |
| 298 | Formalized Risk group Org. Structure and Talent Assessment |  |  |  | resources none → Oliver Wyman |
| 299 | Implementation Planning, specification of interrelationships |  |  |  | resources none → Oliver Wyman |
| 302 | Framework update with refined Roles and Responsibilities splits |  |  |  | resources none → Oliver Wyman |
| 303 | Formalized Risk group Org. Structure and Talent Assessment |  |  |  | resources none → Oliver Wyman |
| 304 | Implementation Planning, specification of interrelationships |  |  |  | resources none → Oliver Wyman |
| 306 | Post Implementation Review (First Round) |  |  |  | resources none → Oliver Wyman |
| 307 | Post Implementation Review (Second Round) |  |  |  | resources none → Oliver Wyman |
| 308 | Post Implementation Review (Third Round) |  |  |  | resources none → Oliver Wyman |
| 309 | Strong and desired culture |  |  |  | resources none → Oliver Wyman |
| 312 | Authority to set compensation/benefits based on performance and aligned with peers |  |  |  | resources none → Oliver Wyman |
| 313 | Communication and stakeholder engagement |  |  |  | resources none → Oliver Wyman |
| 314 | Updates to performance assessment templates |  |  |  | resources none → Oliver Wyman |
| 315 | Compensation impact analysis |  |  |  | resources none → Oliver Wyman |
| 318 | Communications |  |  |  | resources none → Oliver Wyman |
| 319 | Development and delivery of materials to convey organizational changes to the enterprise |  |  |  | resources none → Oliver Wyman |
| 320 | Enterprise-wide training and development of job descriptions with explicit focus on three lines of defense |  |  |  | resources none → Oliver Wyman |
| 323 | Recruitment and retention mechanisms |  |  |  | resources none → Oliver Wyman |
| 324 | Professional development and job rotation programs, job satisfaction assessments, and compensation structure |  |  |  | resources none → Oliver Wyman |
| 325 | Action plans for necessary remediation efforts |  |  |  | resources none → Oliver Wyman |
| 328 | Diagnostic of risk culture |  |  |  | resources none → Oliver Wyman |
| 329 | Definition of a multi-year plan to achieve a sound, well-respected risk culture |  |  |  | resources none → Oliver Wyman |
| 845 | **Risk Management Processes** |  |  | 0% → 28% |  |
| 962 | Pilot reports using available data (manual where necessary) | 2015-10-23 → 2015-10-09 (-14d) | 20d → 10d |  |  |
| 979 | **Wave 3 of reporting enhancements** | 2016-03-18 → 2016-04-01 (+14d) | 60d → 70d |  |  |
| 980 | Expansion to include IHC and all US entities, same steps as Wave 1 and 2 - timeline TBD | 2015-12-28 → 2016-04-01 (+95d) | 1d? → 70d |  |  |
| 982 | **Years 2-3 Plans** | 2018-04-01 → 2016-09-30 (-548d) | 522d → 131d |  |  |
| 1005 | Continually update business requirements for reporting, and assess resources to produce and deliver reports | 2016-04-01 → 2017-03-31 (+364d) | 1d? → 261d |  |  |
