# CART Template 06102015 RT

How a schedule from MS Project changed from version to version. A marks actual dates.

## Version 1 (saved 2015-06-25, file 20150624 1655 Risk Transformation Master Plan.mpp)

| ID | WBS | Task | Duration | Start | Finish | Predecessors | Complete | Total float | Constraint |
| --- | --- | --- | --- | --- | --- | --- | --- | --- | --- |
| 1 | 1 | **Capital and Risk Transformation SHUSA** | 726d? | 2014-09-19 A | 2017-06-30 |  | 3% | 0d |  |
| 2 | 1.1 | **Risk Transformation** | 726d? | 2014-09-19 A | 2017-06-30 |  | 3% | 0d |  |
| 3 | 1.1.1 | **Risk Appetite Statement(RAS)** | 545d? | 2015-06-01 | 2017-06-30 |  |  | 0d |  |
| 4 | 1.1.1.1 | **Risk Appetite Statement(RAS) Deliverables** | 489d | 2015-08-17 | 2017-06-30 |  |  | 1d |  |
| 5 |  | DELIVERABLE: SHUSA-level RAS Design | 0d | 2015-10-30 | 2015-10-30 | 20, 27, 34, 46, 52, 67, 73, 81, 87, 100 |  |  |  |
| 6 |  | DELIVERABLE: Cascaded RAS across enterprise through creation of subsidiary-level and, where ncessary, BU-level statements | 0d | 2015-08-17 | 2015-08-17 | 106, 121, 132 |  | 490d |  |
| 7 |  | DELIVERABLE: Embedded RAS in material processes across the enterprise | 0d | 2016-01-11 | 2016-01-11 | 223, 229, 234 |  |  |  |
| 8 |  | DELIVERABLE: Continue to cascade the risk appetite statement for the remainder of subsidiaries and business units and ensure alignment with overall SHUSA risk appetite statement | 0d | 2016-06-30 | 2016-06-30 | 239 |  |  |  |
| 9 |  | DELIVERABLE: Embed risk appetite statement in key processes at lower levels of the organization | 0d | 2016-06-30 | 2016-06-30 | 243 |  |  |  |
| 10 |  | DELIVERABLE: Continue to communicate risk appetite statement throughout the enterprise, including training in the new escalation and remediation process | 0d | 2016-09-30 | 2016-09-30 | 248 |  |  |  |
| 11 |  | DELIVERABLE: Periodically enhance risk appetite statement based on the latest results of material risk identification and improved risk measurement across the enterprise | 0d | 2017-06-30 | 2017-06-30 | 255, 252 |  |  |  |
| 12 | 1.1.1.2 | **Re-designed SHUSA RAS framework** | 105d | 2015-06-08 | 2015-10-30 |  |  | 435d |  |
| 13 | 1.1.1.2.1 | **DELIVERABLE: SHUSA-level RAS Design** | 60d | 2015-06-08 | 2015-08-28 |  |  | 480d |  |
| 14 | 1.1.1.2.1.1 | **MILESTONE: Finalize project plan and communicate to CART stakeholders** | 10d | 2015-06-08 | 2015-06-19 |  |  | 530d |  |
| 15 |  | Finalize CART plan at task-level | 1d | 2015-06-08 | 2015-06-08 |  |  | 539d | finish no earlier than 2015-06-08 |
| 16 |  | Socialize plan with key stakeholders (SHUSA) | 9d | 2015-06-09 | 2015-06-19 |  |  | 530d | finish no earlier than 2015-06-19 |
| 17 |  | Socialize plan with key stakeholders (SBNA) | 9d | 2015-06-09 | 2015-06-19 |  |  | 530d | start no earlier than 2015-06-09 |
| 18 |  | Socialize plan with key stakeholders (SCUSA) | 9d | 2015-06-09 | 2015-06-19 |  |  | 530d | start no earlier than 2015-06-09 |
| 19 |  | Communicate plan to CART stakeholders | 5d | 2015-06-15 | 2015-06-19 |  |  | 530d | finish no earlier than 2015-06-19 |
| 20 |  | Plan submitted to CART / Leadership Committee | 0d | 2015-06-19 | 2015-06-19 |  |  | 531d | start no earlier than 2015-06-19 |
| 21 | 1.1.1.2.1.2 | **MILESTONE: Define guidelines and approach for choosing metrics and setting limits** | 15d | 2015-06-08 | 2015-06-26 |  |  | 525d |  |
| 22 |  | Draft guidelines and approach for metrics and limits (no Finance metrics, risk profile, risk appetite, stressed metrics) | 5d | 2015-06-08 | 2015-06-12 |  |  | 535d | finish no earlier than 2015-06-12 |
| 23 |  | Socialize Risk Appetite guidelines to stakeholders (SHUSA) | 5d | 2015-06-15 | 2015-06-19 |  |  | 530d | finish no earlier than 2015-06-19 |
| 24 |  | Socialize plan with key stakeholders (SBNA) | 5d | 2015-06-15 | 2015-06-19 |  |  | 530d | start no earlier than 2015-06-15 |
| 25 |  | Socialize plan with key stakeholders (SCUSA) | 5d | 2015-06-15 | 2015-06-19 |  |  | 530d | start no earlier than 2015-06-15 |
| 26 |  | Update guidelines per stakeholder feedback | 5d | 2015-06-22 | 2015-06-26 |  |  | 525d | finish no earlier than 2015-06-26 |
| 27 |  | Finalized guidelines and approach for choosing metrics and setting limits | 0d | 2015-06-26 | 2015-06-26 |  |  | 526d | start no earlier than 2015-06-26 |
| 28 | 1.1.1.2.1.3 | **MILESTONE: Articulate enterprise-wide core values, RAS principles and major risk categories** | 15d | 2015-06-08 | 2015-06-26 |  |  | 525d |  |
| 29 |  | Draft of enterprise-wide core values, RAS principles and major risk categories (e.g. credit) | 5d | 2015-06-08 | 2015-06-12 |  |  | 535d | finish no earlier than 2015-06-12 |
| 30 |  | Socialize Risk Appetite philosophy to stakeholders (SHUSA) | 5d | 2015-06-15 | 2015-06-19 |  |  | 530d | finish no earlier than 2015-06-19 |
| 31 |  | Socialize Risk Appetite philosophy to stakeholders (SBNA) | 5d | 2015-06-15 | 2015-06-19 |  |  | 530d | start no earlier than 2015-06-15 |
| 32 |  | Socialize Risk Appetite philosophy to stakeholders (SCUSA) | 5d | 2015-06-15 | 2015-06-19 |  |  | 530d | start no earlier than 2015-06-15 |
| 33 |  | Update values, principles and risk categories per stakeholder feedback | 5d | 2015-06-22 | 2015-06-26 |  |  | 525d | finish no earlier than 2015-06-26 |
| 34 |  | Finalized enterprise-wide RAS philosophy and major risk categories | 0d | 2015-06-26 | 2015-06-26 |  |  | 526d | start no earlier than 2015-06-26 |
| 35 | 1.1.1.2.1.4 | **MILESTONE: Detail material risks and constraints for enterprise** | 15d | 2015-06-08 | 2015-06-26 |  |  | 525d |  |
| 36 |  | Identify and document material risks for enterprise, including input from stakeholders (SHUSA) | 5d | 2015-06-08 | 2015-06-12 |  |  | 535d | finish no earlier than 2015-06-12 |
| 37 |  | Identify and document material risks for enterprise, including input from stakeholders (SBNA) | 5d | 2015-06-08 | 2015-06-12 |  |  | 535d | start no earlier than 2015-06-08 |
| 38 |  | Identify and document material risks for enterprise, including input from stakeholders (SCUSA) | 5d | 2015-06-08 | 2015-06-12 |  |  | 535d | start no earlier than 2015-06-08 |
| 39 |  | Identify and document constraints from regulators and other stakeholders (i.e. ratings agencies) | 5d | 2015-06-15 | 2015-06-19 |  |  | 530d | finish no earlier than 2015-06-19 |
| 40 |  | Consolidate all requirements from Group, including updated corporate metrics (recalculated with April numbers) | 5d | 2015-06-15 | 2015-06-19 |  |  | 530d | finish no earlier than 2015-06-19 |
| 41 |  | Document owners and rationale for all corporate metrics | 5d | 2015-06-15 | 2015-06-19 |  |  | 530d | finish no earlier than 2015-06-19 |
| 42 |  | Facilitate review and challenge session for list of material risks with key stakeholders (SHUSA) | 3d | 2015-06-22 | 2015-06-24 |  |  | 527d | finish no earlier than 2015-06-24 |
| 43 |  | Facilitate review and challenge session for list of material risks with key stakeholders (SBNA) | 3d | 2015-06-22 | 2015-06-24 |  |  | 527d | start no earlier than 2015-06-22 |
| 44 |  | Facilitate review and challenge session for list of material risks with key stakeholders (SCUSA) | 3d | 2015-06-22 | 2015-06-24 |  |  | 527d | start no earlier than 2015-06-22 |
| 45 |  | Update documentation of material risks and constraints, given stakeholder input | 3d | 2015-06-24 | 2015-06-26 |  |  | 525d | finish no earlier than 2015-06-26 |
| 46 |  | Finalized documentation of material risks and constraints for enterprise | 0d | 2015-06-26 | 2015-06-26 |  |  | 526d | start no earlier than 2015-06-26 |
| 47 | 1.1.1.2.1.5 | **MILESTONE: For each risk, determine a qualitative risk appetite statement** | 25d | 2015-06-08 | 2015-07-10 |  |  | 515d |  |
| 48 |  | Draft a qualitative risk appetite statement for all risks detailed in documentation of material risks for enterprise, considering documented constraints | 20d | 2015-06-08 | 2015-07-03 |  |  | 520d | finish no earlier than 2015-07-03 |
| 49 |  | Socialize SHUSA-level qualitative statements with stakeholders (SHUSA) | 5d | 2015-07-06 | 2015-07-10 |  |  | 515d | finish no earlier than 2015-07-10 |
| 50 |  | Socialize SHUSA-level qualitative statements with stakeholders (SBNA) | 5d | 2015-07-06 | 2015-07-10 |  |  | 515d | start no earlier than 2015-07-06 |
| 51 |  | Socialize SHUSA-level qualitative statements with stakeholders (SCUSA) | 5d | 2015-07-06 | 2015-07-10 |  |  | 515d | start no earlier than 2015-07-06 |
| 52 |  | Finalized qualitative risk appetite statements for material risks | 0d | 2015-07-10 | 2015-07-10 |  |  | 516d | start no earlier than 2015-07-10 |
| 53 | 1.1.1.2.1.6 | **MILESTONE: For quantifiable statements, identify key metrics and calibrate limits** | 45d | 2015-06-15 | 2015-08-14 |  |  | 490d |  |
| 54 |  | Finalize list of proposed SHUSA metrics | 1d | 2015-06-15 | 2015-06-15 |  |  | 534d | finish no earlier than 2015-06-15 |
| 55 |  | Facilitate review and challenge session for proposed metrics, limits and thresholds with key stakeholders (SHUSA) | 1d | 2015-06-16 | 2015-06-16 |  |  | 533d | finish no earlier than 2015-06-16 |
| 56 |  | Facilitate review and challenge session for proposed metrics, limits and thresholds with key stakeholders (SBNA) | 1d | 2015-06-16 | 2015-06-16 |  |  | 533d | start no earlier than 2015-06-16 |
| 57 |  | Facilitate review and challenge session for proposed metrics, limits and thresholds with key stakeholders (SCUSA) | 1d | 2015-06-16 | 2015-06-16 |  |  | 533d | start no earlier than 2015-06-16 |
| 58 |  | Update list of SHUSA metrics, given stakeholder input, and identify and document owners for each metric | 3d | 2015-06-17 | 2015-06-19 |  |  | 530d | finish no earlier than 2015-06-19 |
| 59 |  | Detail limits and thresholds for list of SHUSA metrics | 5d | 2015-06-22 | 2015-06-26 |  |  | 525d | finish no earlier than 2015-06-26 |
| 60 |  | Calibrate limits based on analysis of historical data, industry benchmarking, etc. | 30d | 2015-06-29 | 2015-08-07 |  |  | 495d | finish no earlier than 2015-08-07 |
| 61 |  | Document rationale for SHUSA metrics | 5d | 2015-07-13 | 2015-07-17 |  |  | 510d | finish no earlier than 2015-07-17 |
| 62 |  | Document IT requirements for SHUSA metrics | 15d | 2015-07-13 | 2015-07-31 |  |  | 500d | finish no earlier than 2015-07-31 |
| 63 |  | Consolidate metrics, limits and thresholds into quantifiable statements for material risks | 3d | 2015-08-10 | 2015-08-12 |  |  | 492d | finish no earlier than 2015-08-12 |
| 64 |  | Socialize quantitative statements with stakeholders (SHUSA) | 2d | 2015-08-13 | 2015-08-14 |  |  | 490d | finish no earlier than 2015-08-14 |
| 65 |  | Socialize quantitative statements with stakeholders (SBNA) | 2d | 2015-08-13 | 2015-08-14 |  |  | 490d | start no earlier than 2015-08-13 |
| 66 |  | Socialize quantitative statements with stakeholders (SCUSA) | 2d | 2015-08-13 | 2015-08-14 |  |  | 490d | start no earlier than 2015-08-13 |
| 67 |  | Finalized quantitative risk appetite statements for material risks | 0d | 2015-08-14 | 2015-08-14 |  |  | 491d | start no earlier than 2015-08-14 |
| 68 | 1.1.1.2.1.7 | **MILESTONE: Consolidate qualitative and quantitative statements into SHUSA-level RAS and socialize with stakeholders** | 10d | 2015-08-17 | 2015-08-28 |  |  | 480d |  |
| 69 |  | Draft SHUSA-level RAS | 5d | 2015-08-17 | 2015-08-21 |  |  | 485d | finish no earlier than 2015-08-21 |
| 70 |  | Socialize SHUSA-level RAS with stakeholders (SHUSA) | 5d | 2015-08-24 | 2015-08-28 |  |  | 480d | finish no earlier than 2015-08-28 |

| ID | WBS | Task | Duration | Start | Finish | Total float | Constraint |
| --- | --- | --- | --- | --- | --- | --- | --- |
| 71 |  | Socialize SHUSA-level RAS with stakeholders (SBNA) | 5d | 2015-08-24 | 2015-08-28 | 480d | start no earlier than 2015-08-24 |
| 72 |  | Socialize SHUSA-level RAS with stakeholders (SCUSA) | 5d | 2015-08-24 | 2015-08-28 | 480d | start no earlier than 2015-08-24 |
| 73 |  | Final draft of SHUSA-level RAS | 0d | 2015-08-28 | 2015-08-28 | 481d | start no earlier than 2015-08-28 |
| 74 | 1.1.1.2.2 | **DELIVERABLE: SHUSA-level RAS Implementation, supporting processes and documentation** | 30d | 2015-07-06 | 2015-08-14 | 490d |  |
| 75 | 1.1.1.2.2.1 | **MILESTONE: Document SHUSA-level RAS reporting, monitoring and escalation processes** | 20d | 2015-07-06 | 2015-07-31 | 500d |  |
| 76 |  | Draft SHUSA-level RAS reporting and monitoring process | 15d | 2015-07-06 | 2015-07-24 | 505d | finish no earlier than 2015-07-24 |
| 77 |  | Draft SHUSA-level RAS breach escalation process and detail consequences | 15d | 2015-07-06 | 2015-07-24 | 505d | finish no earlier than 2015-07-24 |
| 78 |  | Socialize processes with stakeholders (SHUSA) | 5d | 2015-07-27 | 2015-07-31 | 500d | start no earlier than 2015-07-27 |
| 79 |  | Socialize processes with stakeholders (SBNA) | 5d | 2015-07-27 | 2015-07-31 | 500d | start no earlier than 2015-07-27 |
| 80 |  | Socialize processes with stakeholders (SCUSA) | 5d | 2015-07-27 | 2015-07-31 | 500d | finish no earlier than 2015-07-31 |
| 81 |  | Finalized SHUSA-level RAS reporting, monitoring and escalation processes | 0d | 2015-07-31 | 2015-07-31 | 501d | start no earlier than 2015-07-31 |
| 82 | 1.1.1.2.2.2 | **MILESTONE: Document SHUSA-level RAS development and governance process** | 20d | 2015-07-20 | 2015-08-14 | 490d |  |
| 83 |  | Draft SHUSA-level RAS development documentation and governance process | 15d | 2015-07-20 | 2015-08-07 | 495d | finish no earlier than 2015-08-07 |
| 84 |  | Socialize documents with stakeholders (SHUSA) | 5d | 2015-08-10 | 2015-08-14 | 490d | start no earlier than 2015-08-10 |
| 85 |  | Socialize documents with stakeholders (SBNA) | 5d | 2015-08-10 | 2015-08-14 | 490d | start no earlier than 2015-08-10 |
| 86 |  | Socialize documents with stakeholders (SCUSA) | 5d | 2015-08-10 | 2015-08-14 | 490d | finish no earlier than 2015-08-14 |
| 87 |  | Finalized SHUSA-level RAS development documentation and governance process | 0d | 2015-08-14 | 2015-08-14 | 491d | start no earlier than 2015-08-14 |
| 88 | 1.1.1.2.3 | **DELIVERABLE: SHUSA-level RAS framework approval process** | 45d | 2015-08-31 | 2015-10-30 | 435d |  |
| 89 | 1.1.1.2.3.1 | **MILESTONE: Educate Board and senior committees on RAS and secure approval** | 45d | 2015-08-31 | 2015-10-30 | 435d |  |
| 90 |  | Create materials for Board training on RAS roles & responsibilities | 5d | 2015-08-31 | 2015-09-04 | 475d | finish no earlier than 2015-09-04 |
| 91 |  | Create materials for Board training on RAS structure and metrics | 5d | 2015-08-31 | 2015-09-04 | 475d | finish no earlier than 2015-09-04 |
| 92 |  | Deliver Board training session(s) | 5d | 2015-09-21 | 2015-09-25 | 460d | finish no earlier than 2015-09-25 |
| 93 |  | Present SHUSA-level RAS to ERMC/EMC | 10d | 2015-08-31 | 2015-09-11 | 470d | finish no earlier than 2015-09-11 |
| 94 |  | Present CDR presentation to Madrid for review | 10d | 2015-08-31 | 2015-09-11 | 470d | finish no earlier than 2015-09-11 |
| 95 |  | Update RAS given feedback from SHUSA and Madrid risk committees | 5d | 2015-09-14 | 2015-09-18 | 465d | finish no earlier than 2015-09-18 |
| 96 |  | Present to Board/BERC for review | 10d | 2015-09-21 | 2015-10-02 | 455d | finish no earlier than 2015-10-02 |
| 97 |  | Present SHUSA-level RAS to CDR | 5d | 2015-10-05 | 2015-10-09 | 450d | finish no earlier than 2015-10-09 |
| 98 |  | Update RAS given feedback from CDR | 10d | 2015-10-12 | 2015-10-23 | 440d | finish no earlier than 2015-10-23 |
| 99 |  | Submit SHUSA-level RAS for Board approval | 5d | 2015-10-26 | 2015-10-30 | 435d | finish no earlier than 2015-10-30 |
| 100 |  | Board-approved SHUSA-level RAS | 0d | 2015-10-30 | 2015-10-30 | 436d | start no earlier than 2015-10-30 |
| 101 | 1.1.1.3 | **Cascaded RAS across enterprise through creation of subsidiary-level and, where necessary, BU-level statements** | 284d? | 2015-06-01 | 2016-06-30 | 65d |  |
| 102 | 1.1.1.3.1 | **DELIVERABLE: Assessment of short-term SCUSA RAS** | 20d | 2015-06-01 | 2015-06-26 | 525d |  |
| 103 | 1.1.1.3.1.1 | **MILESTONE: Assess SCUSA RAS and determine plan for short-term remediation** | 5d | 2015-06-01 | 2015-06-05 | 540d |  |
| 104 |  | Assess current state of SCUSA RAS, focusing on pre-determined "pain points" (not reviewing RAS in entirety) | 1d | 2015-06-01 | 2015-06-01 | 544d | finish no earlier than 2015-06-01 |
| 105 |  | Determine plan for short-term remediation | 5d | 2015-06-01 | 2015-06-05 | 540d | finish no earlier than 2015-06-05 |
| 106 |  | Finalized plan for SCUSA RAS short-term remediation | 0d | 2015-06-05 | 2015-06-05 | 541d | start no earlier than 2015-06-05 |
| 107 | 1.1.1.3.1.2 | **MILESTONE: Implement remediations in the form of updated key limits** | 15d | 2015-06-08 | 2015-06-26 | 525d |  |
| 108 |  | Redefine SCUSA liquidity limit | 5d | 2015-06-08 | 2015-06-12 | 535d | finish no earlier than 2015-06-12 |
| 109 |  | Redefine SCUSA RWA limit | 5d | 2015-06-08 | 2015-06-12 | 535d | finish no earlier than 2015-06-12 |
| 110 |  | Redefine SCUSA total asset limit | 5d | 2015-06-08 | 2015-06-12 | 535d | finish no earlier than 2015-06-12 |
| 111 |  | Socialize updated limits and all proposed remediations to SCUSA RAS | 5d | 2015-06-15 | 2015-06-19 | 530d | finish no earlier than 2015-06-19 |
| 112 |  | Update SCUSA RAS based on agreed upon remediations | 5d | 2015-06-22 | 2015-06-26 | 525d | finish no earlier than 2015-06-26 |
| 113 |  | Finalized SCUSA RAS (for short-term use) | 0d | 2015-06-26 | 2015-06-26 | 526d | start no earlier than 2015-06-26 |
| 114 | 1.1.1.3.2 | **DELIVERABLE: Definition of approach for cascading SHUSA-level RAS to subsidiaries and levels below** | 10d | 2015-08-03 | 2015-08-14 | 490d |  |
| 115 | 1.1.1.3.2.1 | **MILESTONE: Document approach for cascading SHUSA-level RAS to subsidiaries and levels below** | 10d | 2015-08-03 | 2015-08-14 | 490d |  |
| 116 |  | Determine organizational levels to which cascading is appropriate and draft planned approach | 5d | 2015-08-03 | 2015-08-07 | 495d | finish no earlier than 2015-08-07 |
| 117 |  | Facilitate review and challenge sessions for cascading approach with stakeholders (SHUSA) | 3d | 2015-08-10 | 2015-08-12 | 492d | finish no earlier than 2015-08-12 |
| 118 |  | Facilitate review and challenge sessions for cascading approach with stakeholders (SBNA) | 3d | 2015-08-10 | 2015-08-12 | 492d | start no earlier than 2015-08-10 |
| 119 |  | Facilitate review and challenge sessions for cascading approach with stakeholders (SCUSA) | 3d | 2015-08-10 | 2015-08-12 | 492d | start no earlier than 2015-08-10 |
| 120 |  | Update documentation for cascading approach, given stakeholder input | 3d | 2015-08-12 | 2015-08-14 | 490d | finish no earlier than 2015-08-14 |
| 121 |  | Finalized plan for cascading SHUSA-level RAS to subsidiaries and levels below | 0d | 2015-08-14 | 2015-08-14 | 491d | start no earlier than 2015-08-14 |
| 122 | 1.1.1.3.3 | **DELIVERABLE: RAS for priority subsidiaries SBNA & SCUSA – follow similar process as SHUSA** | 138d? | 2015-08-17 | 2016-02-24 | 10d |  |
| 123 | 1.1.1.3.3.1 | **MILESTONE: Detail material risks specific to SBNA and SCUSA (leveraging SHUSA-level list, but making additions as necessary)** | 10d | 2015-08-17 | 2015-08-28 | 480d |  |
| 124 |  | Identify and document subsidiary-specific risks and constraints, including those not captured in SHUSA-level RAS(SBNA) | 5d | 2015-08-17 | 2015-08-21 | 485d | finish no earlier than 2015-08-21 |
| 125 |  | Identify and document subsidiary-specific risks and constraints, including those not captured in SHUSA-level RAS(SCUSA) | 5d | 2015-08-17 | 2015-08-21 | 485d | start no earlier than 2015-08-17 |
| 126 |  | Identify and document constraints from Group, regulators and other stakeholders (i.e. ratings agencies) | 5d | 2015-08-17 | 2015-08-21 | 485d | finish no earlier than 2015-08-21 |
| 127 |  | Facilitate review and challenge session for list of material risks with key stakeholders (SHUSA) | 3d | 2015-08-24 | 2015-08-26 | 482d | finish no earlier than 2015-08-26 |
| 128 |  | Facilitate review and challenge session for list of material risks with key stakeholders (SBNA) | 3d | 2015-08-24 | 2015-08-26 | 482d | start no earlier than 2015-08-24 |
| 129 |  | Facilitate review and challenge session for list of material risks with key stakeholders (SCUSA) | 3d | 2015-08-24 | 2015-08-26 | 482d | start no earlier than 2015-08-24 |
| 130 |  | Update documentation of subsidiary-specific risks and constraints, given stakeholder input(SBNA) | 2d | 2015-08-27 | 2015-08-28 | 480d | finish no earlier than 2015-08-28 |
| 131 |  | Update documentation of subsidiary-specific risks and constraints, given stakeholder input(SCUSA) | 2d | 2015-08-27 | 2015-08-28 | 480d | start no earlier than 2015-08-27 |
| 132 |  | Finalized documentation of material risks and constraints specific to priority subsidiaries | 0d | 2015-08-17 | 2015-08-17 | 490d | start no earlier than 2015-08-17 |
| 133 | 1.1.1.3.3.2 | **MILESTONE: For each risk, determine a qualitative risk appetite statement (leveraging SHUSA-level RAS)** | 15d? | 2015-08-31 | 2015-09-18 | 0d |  |
| 134 |  | Determine SHUSA-level RAS statements relevant to subsidiaries(SBNA) | 3d | 2015-08-31 | 2015-09-02 | 477d | finish no earlier than 2015-09-02 |
| 135 |  | Determine SHUSA-level RAS statements relevant to subsidiaries(SCUSA) | 1d? | 2015-08-31 | 2015-08-31 |  |  |
| 136 |  | Detail statements for material risks specific to the subsidiary, not captured in SHUSA-level RAS(SBNA) | 7d | 2015-09-03 | 2015-09-11 | 470d | finish no earlier than 2015-09-11 |
| 137 |  | Detail statements for material risks specific to the subsidiary, not captured in SHUSA-level RAS(SCUSA) | 7d | 2015-09-03 | 2015-09-11 | 470d | start no earlier than 2015-09-03 |
| 138 |  | Consolidate into subsidiary specific-list of statements (leverage existing work) (SBNA) | 3d | 2015-09-14 | 2015-09-16 | 467d | finish no earlier than 2015-09-16 |
| 139 |  | Consolidate into subsidiary specific-list of statements (leverage existing work) (SCUSA) | 3d | 2015-09-14 | 2015-09-16 | 467d | start no earlier than 2015-09-14 |
| 140 |  | Socialize SBNA and SCUSA qualitative statements with key stakeholders (SHUSA) | 2d | 2015-09-17 | 2015-09-18 | 465d | finish no earlier than 2015-09-18 |

| ID | WBS | Task | Duration | Start | Finish | Total float | Constraint |
| --- | --- | --- | --- | --- | --- | --- | --- |
| 141 |  | Socialize SBNA and SCUSA qualitative statements with key stakeholders (SBNA) | 2d | 2015-09-17 | 2015-09-18 | 465d | start no earlier than 2015-09-17 |
| 142 |  | Socialize SBNA and SCUSA qualitative statements with key stakeholders (SCUSA) | 2d | 2015-09-17 | 2015-09-18 | 465d | start no earlier than 2015-09-17 |
| 143 |  | Finalized qualitative risk appetite statements for subsidiary-specific risks | 0d | 2015-09-18 | 2015-09-18 | 466d | start no earlier than 2015-09-18 |
| 144 | 1.1.1.3.3.3 | **MILESTONE: For quantifiable statements, identify key metrics and calibrate limits (leveraging SHUSA-level RAS)** | 40d | 2015-09-14 | 2015-11-06 | 430d |  |
| 145 |  | Determine SHUSA-level RAS metrics relevant to subsidiaries(SBNA) | 3d | 2015-09-14 | 2015-09-16 | 467d | start no earlier than 2015-09-14 |
| 146 |  | Determine SHUSA-level RAS metrics relevant to subsidiaries(SCUSA) | 3d | 2015-09-14 | 2015-09-16 | 467d | finish no earlier than 2015-09-16 |
| 147 |  | Identify metrics for material risks specific to the subsidiary, not captured in SHUSA-level RAS, and compile in list with relevant metrics from SHUSA-level RAS(SBNA) | 2d | 2015-09-17 | 2015-09-18 | 465d | start no earlier than 2015-09-17 |
| 148 |  | Identify metrics for material risks specific to the subsidiary, not captured in SHUSA-level RAS, and compile in list with relevant metrics from SHUSA-level RAS(SCUSA) | 2d | 2015-09-17 | 2015-09-18 | 465d | finish no earlier than 2015-09-18 |
| 149 |  | Facilitate review and challenge session for proposed metrics, limits and thresholds with key stakeholders (SHUSA) | 1d | 2015-09-28 | 2015-09-28 | 459d | finish no earlier than 2015-09-28 |
| 150 |  | Facilitate review and challenge session for proposed metrics, limits and thresholds with key stakeholders (SBNA) | 1d | 2015-09-28 | 2015-09-28 | 459d | start no earlier than 2015-09-28 |
| 151 |  | Facilitate review and challenge session for proposed metrics, limits and thresholds with key stakeholders (SCUSA) | 1d | 2015-09-28 | 2015-09-28 | 459d | start no earlier than 2015-09-28 |
| 152 |  | Update list of subsidiary-specific metrics, given stakeholder input, and identify and document owners for each metric(SBNA) | 4d | 2015-09-29 | 2015-10-02 | 455d | finish no earlier than 2015-10-02 |
| 153 |  | Update list of subsidiary-specific metrics, given stakeholder input, and identify and document owners for each metric(SCUSA) | 4d | 2015-09-29 | 2015-10-02 | 455d | start no earlier than 2015-09-29 |
| 154 |  | Detail limits and thresholds for list of subsidiary-specific metrics(SBNA) | 5d | 2015-09-21 | 2015-09-25 | 460d | finish no earlier than 2015-09-25 |
| 155 |  | Detail limits and thresholds for list of subsidiary-specific metrics(SCUSA) | 5d | 2015-09-21 | 2015-09-25 | 460d | start no earlier than 2015-09-21 |
| 156 |  | Calibrate limits for subsidiary risks, ensure subsidiary-level limits align to SHUSA-level limits(SBNA) | 30d | 2015-09-21 | 2015-10-30 | 435d | finish no earlier than 2015-10-30 |
| 157 |  | Calibrate limits for subsidiary risks, ensure subsidiary-level limits align to SHUSA-level limits(SCUSA) | 30d | 2015-09-21 | 2015-10-30 | 435d | start no earlier than 2015-09-21 |
| 158 |  | Document rationale for SHUSA metrics | 5d | 2015-09-21 | 2015-09-25 | 460d | finish no earlier than 2015-09-25 |
| 159 |  | Document IT requirements for SHUSA metrics | 15d | 2015-09-14 | 2015-10-02 | 455d | finish no earlier than 2015-10-02 |
| 160 |  | Consolidate metrics, limits and thresholds into quantifiable statements for subsidiary-specific risks(SBNA) | 3d | 2015-11-02 | 2015-11-04 | 432d | finish no earlier than 2015-11-04 |
| 161 |  | Consolidate metrics, limits and thresholds into quantifiable statements for subsidiary-specific risks(SCUSA) | 3d | 2015-11-02 | 2015-11-04 | 432d | start no earlier than 2015-11-02 |
| 162 |  | Socialize SBNA and SCUSA quantitative statements with stakeholders (SHUSA) | 2d | 2015-11-05 | 2015-11-06 | 430d | finish no earlier than 2015-11-06 |
| 163 |  | Socialize SBNA and SCUSA quantitative statements with stakeholders (SBNA) | 2d | 2015-11-05 | 2015-11-06 | 430d | start no earlier than 2015-11-05 |
| 164 |  | Socialize SBNA and SCUSA quantitative statements with stakeholders (SCUSA) | 2d | 2015-11-05 | 2015-11-06 | 430d | start no earlier than 2015-11-05 |
| 165 |  | Finalized quantitative risk appetite statements for subsidiary-specific risks | 0d | 2015-11-06 | 2015-11-06 | 431d | start no earlier than 2015-11-06 |
| 166 | 1.1.1.3.3.4 | **MILESTONE: Consolidate qualitative and quantitative statements into SBNA RAS and SCUSA RAS and socialize with stakeholders** | 10d | 2015-11-09 | 2015-11-20 | 420d |  |
| 167 |  | Draft SBNA RAS | 5d | 2015-11-09 | 2015-11-13 | 425d | finish no earlier than 2015-11-13 |
| 168 |  | Draft SCUSA RAS | 5d | 2015-11-09 | 2015-11-13 | 425d | start no earlier than 2015-11-09 |
| 169 |  | Socialize SBNA RAS and SCUSA RAS with stakeholders (SHUSA) | 5d | 2015-11-16 | 2015-11-20 | 420d | start no earlier than 2015-11-16 |
| 170 |  | Socialize SBNA RAS and SCUSA RAS with stakeholders (SBNA) | 5d | 2015-11-16 | 2015-11-20 | 420d | start no earlier than 2015-11-16 |
| 171 |  | Socialize SBNA RAS and SCUSA RAS with stakeholders (SCUSA) | 5d | 2015-11-16 | 2015-11-20 | 420d | finish no earlier than 2015-11-20 |
| 172 |  | Final drafts of SBNA RAS and SCUSA RAS | 0d | 2015-11-20 | 2015-11-20 | 421d | start no earlier than 2015-11-20 |
| 173 | 1.1.1.3.3.5 | **MILESTONE: Secure Board approval of RAS for priority subsidiaries** | 30d | 2015-11-20 | 2015-12-31 | 391d |  |
| 174 |  | 6-week buffer for governance process(SHUSA) | 30d | 2015-11-20 | 2015-12-31 | 391d | finish no earlier than 2015-12-31 |
| 175 |  | 6-week buffer for governance process(SBNA) | 30d | 2015-11-20 | 2015-12-31 | 391d | start no earlier than 2015-11-20 |
| 176 |  | 6-week buffer for governance process(SCUSA) | 30d | 2015-11-20 | 2015-12-31 | 391d | start no earlier than 2015-11-20 |
| 177 |  | Board-approved SHUSA-level RAS | 0d | 2015-12-31 | 2015-12-31 | 392d | start no earlier than 2015-12-31 |
| 178 | 1.1.1.3.3.6 | **MILESTONE: Communicate SHUSA, SBNA, and SCUSA RAS to enterprise** | 40d | 2015-12-31 | 2016-02-24 | 352d |  |
| 179 |  | Create communication materials to aid in socialization process(SHUSA) | 10d | 2015-12-31 | 2016-01-13 | 382d | finish no earlier than 2016-01-13 |
| 180 |  | Create communication materials to aid in socialization process(SBNA) | 10d | 2015-12-31 | 2016-01-13 | 382d | start no earlier than 2015-12-31 |
| 181 |  | Create communication materials to aid in socialization process(SCUSA) | 10d | 2015-12-31 | 2016-01-13 | 382d | start no earlier than 2015-12-31 |
| 182 |  | Facilitate training, town halls, etc. to communicate RAS to enterprise(SHUSA) | 30d | 2016-01-14 | 2016-02-24 | 352d | finish no earlier than 2016-02-24 |
| 183 |  | Facilitate training, town halls, etc. to communicate RAS to enterprise(SBNA) | 30d | 2016-01-14 | 2016-02-24 | 352d | start no earlier than 2016-01-14 |
| 184 |  | Facilitate training, town halls, etc. to communicate RAS to enterprise(SCUSA) | 30d | 2016-01-14 | 2016-02-24 | 352d | start no earlier than 2016-01-14 |
| 185 |  | Completed formal communication process to enterprise | 0d | 2016-02-24 | 2016-02-24 | 353d | start no earlier than 2016-02-24 |
| 186 | 1.1.1.3.4 | **DELIVERABLE: RAS for remainder of subsidiaries and select Bus (SIS NY, Puerto Rico, Miami)** | 109d | 2016-02-01 | 2016-06-30 | 261d |  |
| 187 | 1.1.1.3.4.1 | **MILESTONE:Cascade RAS to Santander Investment Securities (SIS NY)** | 109d | 2016-02-01 | 2016-06-30 | 261d |  |
| 188 |  | Detail material risks specific to subsidiary (leveraging SHUSA-level list, but making additions as necessary) | 109d | 2016-02-01 | 2016-06-30 | 261d | start no earlier than 2016-02-01 |
| 189 |  | For each risk, determine a qualitative risk appetite statement (leveraging SHUSA-level RAS) | 109d | 2016-02-01 | 2016-06-30 | 261d | start no earlier than 2016-02-01 |
| 190 |  | For quantifiable statements, identify key metrics and calibrate limits (leveraging SHUSA-level RAS) | 109d | 2016-02-01 | 2016-06-30 | 261d | start no earlier than 2016-02-01 |
| 191 |  | Consolidate qualitative and quantitative statements into subsidiary RAS and socialize with stakeholders | 109d | 2016-02-01 | 2016-06-30 | 261d | start no earlier than 2016-02-01 |
| 192 |  | Secure Board approval of RAS for priority subsidiaries | 109d | 2016-02-01 | 2016-06-30 | 261d | start no earlier than 2016-02-01 |
| 193 |  | Communicate subsidiary RAS to enterprise | 109d | 2016-02-01 | 2016-06-30 | 261d | start no earlier than 2016-02-01 |
| 194 | 1.1.1.3.4.2 | **MILESTONE:Cascade RAS to Puerto Rico** | 109d | 2016-02-01 | 2016-06-30 | 261d |  |
| 195 |  | Detail material risks specific to subsidiary (leveraging SHUSA-level list, but making additions as necessary) | 109d | 2016-02-01 | 2016-06-30 | 261d | start no earlier than 2016-02-01 |
| 196 |  | For each risk, determine a qualitative risk appetite statement (leveraging SHUSA-level RAS) | 109d | 2016-02-01 | 2016-06-30 | 261d | start no earlier than 2016-02-01 |
| 197 |  | For quantifiable statements, identify key metrics and calibrate limits (leveraging SHUSA-level RAS) | 109d | 2016-02-01 | 2016-06-30 | 261d | start no earlier than 2016-02-01 |
| 198 |  | Consolidate qualitative and quantitative statements into subsidiary RAS and socialize with stakeholders | 109d | 2016-02-01 | 2016-06-30 | 261d | start no earlier than 2016-02-01 |
| 199 |  | Secure Board approval of RAS for priority subsidiaries | 109d | 2016-02-01 | 2016-06-30 | 261d | start no earlier than 2016-02-01 |
| 200 |  | Communicate subsidiary RAS to enterprise | 109d | 2016-02-01 | 2016-06-30 | 261d | start no earlier than 2016-02-01 |
| 201 | 1.1.1.3.4.3 | **MILESTONE: Cascade RAS to Miami** | 109d | 2016-02-01 | 2016-06-30 | 261d |  |
| 202 |  | Detail material risks specific to subsidiary (leveraging SHUSA-level list, but making additions as necessary) | 109d | 2016-02-01 | 2016-06-30 | 261d | start no earlier than 2016-02-01 |
| 203 |  | For each risk, determine a qualitative risk appetite statement (leveraging SHUSA-level RAS) | 109d | 2016-02-01 | 2016-06-30 | 261d | start no earlier than 2016-02-01 |
| 204 |  | For quantifiable statements, identify key metrics and calibrate limits (leveraging SHUSA-level RAS) | 109d | 2016-02-01 | 2016-06-30 | 261d | start no earlier than 2016-02-01 |
| 205 |  | Consolidate qualitative and quantitative statements into subsidiary RAS and socialize with stakeholders | 109d | 2016-02-01 | 2016-06-30 | 261d | start no earlier than 2016-02-01 |
| 206 |  | Secure Board approval of RAS for priority subsidiaries | 109d | 2016-02-01 | 2016-06-30 | 261d | start no earlier than 2016-02-01 |
| 207 |  | Communicate subsidiary RAS to enterprise | 109d | 2016-02-01 | 2016-06-30 | 261d | start no earlier than 2016-02-01 |
| 208 | 1.1.1.3.4.4 | **MILESTONE: Cascade RAS to remainder of subsidiaries and select BUs** | 109d | 2016-02-01 | 2016-06-30 | 261d |  |
| 209 |  | Detail material risks specific to subsidiary (leveraging SHUSA-level list, but making additions as necessary) | 109d | 2016-02-01 | 2016-06-30 | 261d | start no earlier than 2016-02-01 |
| 210 |  | For each risk, determine a qualitative risk appetite statement (leveraging SHUSA-level RAS) | 109d | 2016-02-01 | 2016-06-30 | 261d | start no earlier than 2016-02-01 |

| ID | WBS | Task | Duration | Start | Finish | Predecessors | Total float | Constraint |
| --- | --- | --- | --- | --- | --- | --- | --- | --- |
| 211 |  | For quantifiable statements, identify key metrics and calibrate limits (leveraging SHUSA-level RAS) | 109d | 2016-02-01 | 2016-06-30 |  | 261d | start no earlier than 2016-02-01 |
| 212 |  | Consolidate qualitative and quantitative statements into subsidiary RAS and socialize with stakeholders | 109d | 2016-02-01 | 2016-06-30 |  | 261d | start no earlier than 2016-02-01 |
| 213 |  | Secure Board approval of RAS for priority subsidiaries | 109d | 2016-02-01 | 2016-06-30 |  | 261d | start no earlier than 2016-02-01 |
| 214 |  | Communicate subsidiary RAS to enterprise | 109d | 2016-02-01 | 2016-06-30 |  | 261d | start no earlier than 2016-02-01 |
| 215 | 1.1.1.4 | **Embedded RAS in material processes across the enterprise** | 105d | 2015-08-17 | 2016-01-11 |  | 385d |  |
| 216 | 1.1.1.4.1 | **DELIVERABLE: Initialized embedding of RAS in material processes** | 75d | 2015-08-17 | 2015-11-27 |  | 415d |  |
| 217 | 1.1.1.4.1.1 | **MILESTONE: Test strategic plan against SHUSA-level RAS** | 15d | 2015-08-17 | 2015-09-04 |  | 475d |  |
| 218 |  | Compare draft of SHUSA-level RAS against draft of strategic plan | 5d | 2015-08-17 | 2015-08-21 |  | 485d | finish no earlier than 2015-08-21 |
| 219 |  | Identify gaps and adjust strategic plan as necessary | 5d | 2015-08-24 | 2015-08-28 |  | 480d | finish no earlier than 2015-08-28 |
| 220 |  | Socialize with key stakeholders (SHUSA) | 5d | 2015-08-31 | 2015-09-04 |  | 475d | start no earlier than 2015-08-31 |
| 221 |  | Socialize with key stakeholders (SBNA) | 5d | 2015-08-31 | 2015-09-04 |  | 475d | start no earlier than 2015-08-31 |
| 222 |  | Socialize with key stakeholders (SCUSA) | 5d | 2015-08-31 | 2015-09-04 |  | 475d | finish no earlier than 2015-09-04 |
| 223 |  | Updated strategic plan, aligned with SHUSA-level RAS | 0d | 2015-09-04 | 2015-09-04 |  | 476d | start no earlier than 2015-09-04 |
| 224 | 1.1.1.4.1.2 | **MILESTONE: Update process maps for key processes with explicit RAS links** | 20d | 2015-11-02 | 2015-11-27 |  | 415d |  |
| 225 |  | Identify processes that should be explicitly linked to RAS (e.g. strategic planning, capital planning) | 5d | 2015-11-02 | 2015-11-06 |  | 430d | finish no earlier than 2015-11-06 |
| 226 |  | Detail nature of process linkage, including alignment to statements, metrics and limits described in the RAS | 5d | 2015-11-02 | 2015-11-06 |  | 430d | finish no earlier than 2015-11-06 |
| 227 |  | Assess degree to which RAS considerations are already embedded in key processes | 5d | 2015-11-02 | 2015-11-06 |  | 430d | finish no earlier than 2015-11-06 |
| 228 |  | Identify gaps and update key process maps accordingly | 15d | 2015-11-09 | 2015-11-27 |  | 415d | finish no earlier than 2015-11-27 |
| 229 |  | Updated process maps for key processes | 0d | 2015-11-27 | 2015-11-27 |  | 416d | start no earlier than 2015-11-27 |
| 230 | 1.1.1.4.2 | **DELIVERABLE: Plan implementation of RAS in all material processes** | 30d | 2015-11-30 | 2016-01-11 |  | 385d |  |
| 231 | 1.1.1.4.2.1 | **MILESTONE: Plan implementation of RAS in all material processes** | 30d | 2015-11-30 | 2016-01-11 |  | 385d |  |
| 232 |  | Detail plan for implementation of RAS in material processes (e.g. new product and business activity approval process) | 20d | 2015-11-30 | 2015-12-25 |  | 395d | finish no earlier than 2015-12-25 |
| 233 |  | Detail processes/controls to ensure that RAS is being further integrated into all processes until BAU | 10d | 2015-12-28 | 2016-01-08 |  | 385d | finish no earlier than 2016-01-08 |
| 234 |  | Completed plan for implementation in material processes | 0d | 2016-01-11 | 2016-01-11 |  | 385d | start no earlier than 2016-01-11 |
| 235 | 1.1.1.5 | **Years 2 and 3** | 391d | 2016-01-01 | 2017-06-30 |  | 0d |  |
| 236 | 1.1.1.5.1 | **DELIVERABLE: Continue to cascade the risk appetite statement for the remainder of subsidiaries and business units and ensure alignment with overall SHUSA risk appetite statement** | 130d | 2016-01-01 | 2016-06-30 |  | 261d |  |
| 237 | 1.1.1.5.1.1 | **MILESTONE: Finalized RAS for remainder of subsidiaries and Bus - aligned with SHUSA-level RAS** | 130d | 2016-01-01 | 2016-06-30 |  | 261d |  |
| 238 |  | Complete similar process (as SHUSA, SBNA and SCUSA RAS development) for remainder of subsidiaries and select BUs | 130d | 2016-01-01 | 2016-06-30 |  | 261d | start no earlier than 2016-01-01 |
| 239 |  | Finalized RAS for remainder of subsidiaries and Bus - aligned with SHUSA-level RAS | 0d | 2016-06-30 | 2016-06-30 |  | 262d | start no earlier than 2016-06-30 |
| 240 | 1.1.1.5.2 | **DELIVERABLE: Embed risk appetite statement in key processes at lower levels of the organization** | 130d | 2016-01-01 | 2016-06-30 |  | 261d |  |
| 241 | 1.1.1.5.2.1 | **MILESTONE: Completion of embedding RAS in key processses at lower levels of organization** | 130d | 2016-01-01 | 2016-06-30 |  | 261d |  |
| 242 |  | Execute plan for implementation of embedding in key processes at lower levels | 130d | 2016-01-01 | 2016-06-30 |  | 261d | start no earlier than 2016-01-01 |
| 243 |  | Completion of embedding RAS in key processses at lower levels of organization | 0d | 2016-06-30 | 2016-06-30 |  | 262d | start no earlier than 2016-06-30 |
| 244 | 1.1.1.5.3 | **DELIVERABLE: Continue to communicate risk appetite statement throughout the enterprise, including training in the new escalation and remediation process** | 131d | 2016-04-01 | 2016-09-30 |  | 195d |  |
| 245 | 1.1.1.5.3.1 | **MILESTONE:Completed communication and training throughout enterprise** | 131d | 2016-04-01 | 2016-09-30 |  | 195d |  |
| 246 |  | Continue communication of RAS throughout enterprise | 131d | 2016-04-01 | 2016-09-30 |  | 195d | start no earlier than 2016-04-01 |
| 247 |  | Conduct training in new escalation and remediation process | 131d | 2016-04-01 | 2016-09-30 |  | 195d | start no earlier than 2016-04-01 |
| 248 |  | Completed communication and training throughout enterprise | 0d | 2016-09-30 | 2016-09-30 |  | 196d | start no earlier than 2016-09-30 |
| 249 | 1.1.1.5.4 | **DELIVERABLE: Periodically enhance risk appetite statement based on the latest results of material risk identification and improved risk measurement across the enterprise** | 195d | 2016-10-03 | 2017-06-30 |  | 0d |  |
| 250 | 1.1.1.5.4.1 | **MILESTONE: Completion of Round 1 of RAS enhancements** | 65d | 2016-10-03 | 2016-12-30 |  | 130d |  |
| 251 |  | Round 1 (including incorporation of risk-based capital metrics) | 65d | 2016-10-03 | 2016-12-30 |  | 130d | start no earlier than 2016-10-03 |
| 252 |  | Completion of Round 1 of RAS enhancements | 0d | 2016-12-30 | 2016-12-30 |  | 131d | start no earlier than 2016-12-30 |
| 253 | 1.1.1.5.4.2 | **MILESTONE: Completion of Round 2 of RAS enhancements** | 65d | 2017-04-03 | 2017-06-30 |  | 0d |  |
| 254 |  | Round 2 | 65d | 2017-04-03 | 2017-06-30 |  | 0d | start no earlier than 2017-04-03 |
| 255 |  | Completion of Round 2 of RAS enhancements | 0d | 2017-06-30 | 2017-06-30 |  | 1d | start no earlier than 2017-06-30 |
| 256 | 1.1.2 | **Risk Governance & Organization** | 467d? | 2015-06-22 | 2017-04-04 |  | 63d |  |
| 257 | 1.1.2.1 | **Risk Governance & Organization Deliverables** | 259d | 2015-06-23 | 2016-06-20 |  | 270d |  |
| 258 |  | DELIVERABLE: Strengthen Board and Management Committee Oversight | 0d | 2015-11-30 | 2015-11-30 | 271, 265, 277, 281 | 415d | start no earlier than 2015-08-31 |
| 259 |  | DELIVERABLE: Strengthen the structure of risk leadership (SHUSA and subsidiary CROs, Risk Control Officers) | 0d | 2015-07-27 | 2015-07-27 | 288 | 505d | start no earlier than 2015-07-27 |
| 260 |  | DELIVERABLE: Design Target Operating Model aligned with 3LoD principles - by risk type | 0d | 2016-06-20 | 2016-06-20 | 296, 302, 308, 314, 320, 326, 330, 334, 338, 342 | 270d | start no earlier than 2015-09-14 |
| 261 |  | example deliverable (linked to the detail below) | 0d | 2015-06-23 | 2015-06-23 |  | 529d | start no earlier than 2015-06-23 |
| 262 | 1.1.2.2 | **Strengthen Board and Management Committee Oversight** | 115d | 2015-06-22 | 2015-11-30 |  | 415d |  |
| 263 | 1.1.2.2.1 | **DELIVERABLE: Diagnostic of Risk Mgmt. Committee effectiveness** | 0d | 2015-07-13 | 2015-07-13 |  | 515d |  |
| 264 | 1.1.2.2.1.1 | **MILESTONE: Diagnostic of Risk Mgmt. Committee effectiveness** | 0d | 2015-07-13 | 2015-07-13 |  | 515d |  |
| 265 |  | Diagnostic of Risk Mgmt. Committee Complete | 0d | 2015-07-13 | 2015-07-13 |  | 515d | start no earlier than 2015-07-13 |
| 266 | 1.1.2.2.2 | **DELIVERABLE: Conduct Training for Board** | 50d | 2015-06-22 | 2015-08-31 |  | 415d |  |
| 267 | 1.1.2.2.2.1 | **MILESTONE: Conduct Training for Board** | 50d | 2015-06-22 | 2015-08-31 |  | 415d |  |
| 268 |  | Delivery of Board Training (session 1) | 20d | 2015-06-22 | 2015-07-17 |  | 415d | finish no earlier than 2015-07-17 |
| 269 |  | Board risk training curriculum and schedule | 25d | 2015-07-07 | 2015-08-10 | 270SF | 494d | finish no earlier than 2015-08-10 |
| 270 |  | Delivery of Board Training (session 2) | 15d | 2015-08-10 | 2015-08-28 |  | 480d | finish no earlier than 2015-08-28 |
| 271 |  | Board Training Complete | 0d | 2015-08-31 | 2015-08-31 |  | 480d | start no earlier than 2015-08-31 |
| 272 | 1.1.2.2.3 | **DELIVERABLE: Determine Scheme of Coordination Between SHUSA and Parent and Define Risk Committees Composition / Mandates / Charters** | 80d | 2015-07-13 | 2015-11-02 |  | 420d |  |
| 273 | 1.1.2.2.3.1 | **MILESTONE: Determine Scheme of Coordination Between SHUSA and Parent and Define Risk Committees Composition / Mandates / Charters** | 80d | 2015-07-13 | 2015-11-02 |  | 420d |  |
| 274 |  | Governance and coordination mechanisms between SHUSA and parent | 20d | 2015-07-13 | 2015-08-07 |  | 495d | finish no earlier than 2015-08-07 |
| 275 |  | Definition of composition / mandates / charters for BERC and Level 1 Risk Committees | 45d | 2015-07-20 | 2015-09-18 | 268 | 415d | finish no earlier than 2015-09-18 |
| 276 |  | Definition of composition / mandates / charters for Level 2 Risk Committees | 45d | 2015-08-31 | 2015-10-30 | 275FS-15d | 415d | finish no earlier than 2015-10-30 |
| 277 |  | Composition / Mandates / Charters Definitions for BERC and Risk Committees Complete | 0d | 2015-11-02 | 2015-11-02 |  | 435d | start no earlier than 2015-11-02 |
| 278 | 1.1.2.2.4 | **DELIVERABLE: Enhance Performance Scorecards** | 20d | 2015-11-02 | 2015-11-30 |  | 415d |  |
| 279 | 1.1.2.2.4.1 | **MILESTONE: Enhance Performance Scorecards** | 20d | 2015-11-02 | 2015-11-30 |  | 415d |  |
| 280 |  | Perform high level assessment and remediation of performance scorecards | 20d | 2015-11-02 | 2015-11-27 | 276 | 415d | finish no earlier than 2015-11-27 |

| ID | WBS | Task | Duration | Start | Finish | Predecessors | Total float | Constraint |
| --- | --- | --- | --- | --- | --- | --- | --- | --- |
| 281 |  | Assessment and Remediation of Performance Scorecards Complete | 0d | 2015-11-30 | 2015-11-30 |  | 415d | start no earlier than 2015-11-30 |
| 282 | 1.1.2.3 | **Strengthen the structure of risk leadership (SHUSA and subsidiary CROs, Risk Control Officers)** | 25d | 2015-06-22 | 2015-07-24 |  | 505d |  |
| 283 | 1.1.2.3.1 | **DELIVERABLE: Risk organizational structure charts and subsidiary reporting schemes submitted to CRO for approval (SHUSA)** | 25d | 2015-06-22 | 2015-07-24 |  | 505d |  |
| 284 | 1.1.2.3.1.1 | **MILESTONE: Risk organizational structure charts and subsidiary reporting schemes submitted to CRO for approval (SHUSA)** | 25d | 2015-06-22 | 2015-07-24 |  | 505d |  |
| 285 |  | Formalize subsidiary CRO reporting lines, socialize and refine solution (SHUSA) | 10d | 2015-06-22 | 2015-07-03 |  | 515d | finish no earlier than 2015-07-03 |
| 286 |  | Define implications of reporting lines (for Performance assessment and hiring/firing authority) (SHUSA) | 10d | 2015-06-29 | 2015-07-10 | 285FS-5d | 515d | finish no earlier than 2015-07-10 |
| 287 |  | Design 1st LoD Risk organization leadership structure including the role of RCO (SHUSA) | 25d | 2015-06-22 | 2015-07-24 |  | 505d | start no earlier than 2015-06-22 |
| 288 |  | Risk organizational structure charts and subsidiary reporting schemes submitted to CRO for approval (SHUSA) | 0d | 2015-07-24 | 2015-07-24 |  | 506d | start no earlier than 2015-07-24 |
| 289 | 1.1.2.4 | **Design Target Operating Model aligned with 3LoD principles - by risk type** | 260d | 2015-06-22 | 2016-06-20 |  | 140d |  |
| 290 |  | Review of existing 1st LoD structure and capabilities | 20d | 2015-06-22 | 2015-07-17 |  | 510d | finish no earlier than 2015-07-17 |
| 291 | 1.1.2.4.2 | **DELIVERABLE: Risk type A (Most likely Credit)** | 60d | 2015-06-22 | 2015-09-14 |  | 350d |  |
| 292 | 1.1.2.4.2.1 | **MILESTONE: Risk type A (Most likely Credit)** | 60d | 2015-06-22 | 2015-09-14 |  | 350d |  |
| 293 |  | Framework update with refined roles and responsibilities splits | 10d | 2015-06-22 | 2015-07-03 |  | 350d | finish no earlier than 2015-07-03 |
| 294 |  | Formalized Risk group org. structure with aligned talent assessment and development | 25d | 2015-07-06 | 2015-08-07 | 293 | 350d | finish no earlier than 2015-08-07 |
| 295 |  | Implementation planning, specification of interrelationships | 25d | 2015-08-10 | 2015-09-11 | 294 | 350d | finish no earlier than 2015-09-11 |
| 296 |  | MILESTONE | 0d | 2015-09-14 | 2015-09-14 | 295 | 470d | start no earlier than 2015-09-14 |
| 297 | 1.1.2.4.3 | **DELIVERABLE: Risk type B (Most likely ERM + RAS + Strategic)** | 60d | 2015-06-22 | 2015-09-14 |  | 315d |  |
| 298 | 1.1.2.4.3.1 | **MILESTONE: Risk type B (Most likely ERM + RAS + Strategic)** | 60d | 2015-06-22 | 2015-09-14 |  | 315d |  |
| 299 |  | Framework update with refined roles and responsibilities splits | 10d | 2015-06-22 | 2015-07-03 |  | 315d | finish no earlier than 2015-07-03 |
| 300 |  | Formalized Risk group org. structure with aligned talent assessment and development | 25d | 2015-07-06 | 2015-08-07 | 299 | 315d | finish no earlier than 2015-08-07 |
| 301 |  | Implementation planning, specification of interrelationships | 25d | 2015-08-10 | 2015-09-11 | 300 | 315d | finish no earlier than 2015-09-11 |
| 302 |  | MILESTONE | 0d | 2015-09-14 | 2015-09-14 | 301 | 470d | start no earlier than 2015-09-14 |
| 303 | 1.1.2.4.4 | **DELIVERABLE: Risk type C (Most likely Market & Liquidity)** | 60d | 2015-09-14 | 2015-12-07 |  | 350d |  |
| 304 | 1.1.2.4.4.1 | **MILESTONE: Risk type C (Most likely Market & Liquidity)** | 60d | 2015-09-14 | 2015-12-07 |  | 350d |  |
| 305 |  | Framework update with refined roles and responsibilities splits | 10d | 2015-09-14 | 2015-09-25 | 295 | 350d | finish no earlier than 2015-09-25 |
| 306 |  | Formalized Risk group org. structure with aligned talent assessment and development | 25d | 2015-09-28 | 2015-10-30 | 305 | 350d | finish no earlier than 2015-10-30 |
| 307 |  | Implementation planning, specification of interrelationships | 25d | 2015-11-02 | 2015-12-04 | 306 | 350d | finish no earlier than 2015-12-04 |
| 308 |  | MILESTONE | 0d | 2015-12-07 | 2015-12-07 | 307 | 410d | start no earlier than 2015-12-07 |
| 309 | 1.1.2.4.5 | **DELIVERABLE: Risk type D (Most likely Compliance)** | 60d | 2015-09-14 | 2015-12-07 |  | 315d |  |
| 310 | 1.1.2.4.5.1 | **MILESTONE: Risk type D (Most likely Compliance)** | 60d | 2015-09-14 | 2015-12-07 |  | 315d |  |
| 311 |  | Framework update with refined roles and responsibilities splits | 10d | 2015-09-14 | 2015-09-25 | 301 | 315d | finish no earlier than 2015-09-25 |
| 312 |  | Formalized Risk group org. structure with aligned talent assessment and development | 25d | 2015-09-28 | 2015-10-30 | 311 | 315d | finish no earlier than 2015-10-30 |
| 313 |  | Implementation planning, specification of interrelationships | 25d | 2015-11-02 | 2015-12-04 | 312 | 315d | finish no earlier than 2015-12-04 |
| 314 |  | MILESTONE | 0d | 2015-12-07 | 2015-12-07 | 313 | 410d | start no earlier than 2015-12-07 |
| 315 | 1.1.2.4.6 | **DELIVERABLE: Risk type E (Most likely Risk Management Information)** | 60d | 2015-12-07 | 2016-02-29 |  | 350d |  |
| 316 | 1.1.2.4.6.1 | **MILESTONE: Risk type E (Most likely Risk Management Information)** | 60d | 2015-12-07 | 2016-02-29 |  | 350d |  |
| 317 |  | Framework update with refined roles and responsibilities splits | 10d | 2015-12-07 | 2015-12-18 | 307 | 350d | finish no earlier than 2015-12-18 |
| 318 |  | Formalized Risk group org. structure with aligned talent assessment and development | 25d | 2015-12-21 | 2016-01-22 | 317 | 350d | finish no earlier than 2016-01-22 |
| 319 |  | Implementation planning, specification of interrelationships | 25d | 2016-01-25 | 2016-02-26 | 318 | 350d | finish no earlier than 2016-02-26 |
| 320 |  | MILESTONE | 0d | 2016-02-29 | 2016-02-29 | 319 | 350d | start no earlier than 2016-02-29 |
| 321 | 1.1.2.4.7 | **DELIVERABLE: Risk type F (Most likely Capital Risk)** | 60d | 2015-12-07 | 2016-02-29 |  | 315d |  |
| 322 | 1.1.2.4.7.1 | **MILESTONE: Risk type F (Most likely Capital Risk)** | 60d | 2015-12-07 | 2016-02-29 |  | 315d |  |
| 323 |  | Framework update with refined roles and responsibilities splits | 10d | 2015-12-07 | 2015-12-18 | 313 | 315d | finish no earlier than 2015-12-18 |
| 324 |  | Formalized Risk group org. structure with aligned talent assessment and development | 25d | 2015-12-21 | 2016-01-22 | 323 | 315d | finish no earlier than 2016-01-22 |
| 325 |  | Implementation planning, specification of interrelationships | 25d | 2016-01-25 | 2016-02-26 | 324 | 315d | finish no earlier than 2016-02-26 |
| 326 |  | MILESTONE | 0d | 2016-02-29 | 2016-02-29 | 325 | 350d | start no earlier than 2016-02-29 |
| 327 | 1.1.2.4.8 | **DELIVERABLE: 1st Round Post Implementation Review Conducted** | 20d | 2015-12-07 | 2016-01-04 |  | 20d |  |
| 328 | 1.1.2.4.8.1 | **MILESTONE: 1st Round Post Implementation Review Conducted** | 20d | 2015-12-07 | 2016-01-04 |  | 20d |  |
| 329 |  | Post Implementation Review (First Round) | 20d | 2015-12-07 | 2016-01-01 | 295FS+60d | 390d | finish no earlier than 2016-01-01 |
| 330 |  | MILESTONE: 1st Round Post Implementation Review Conducted | 0d | 2016-01-04 | 2016-01-04 | 329 |  |  |
| 331 | 1.1.2.4.9 | **DELIVERABLE: 2nd Round Post Implementation Review Conducted** | 20d | 2016-02-29 | 2016-03-25 |  | 0d |  |
| 332 | 1.1.2.4.9.1 | **MILESTONE: 2nd Round Post Implementation Review Conducted** | 20d | 2016-02-29 | 2016-03-25 |  | 0d |  |
| 333 |  | Post Implementation Review (Second Round) | 20d | 2016-02-29 | 2016-03-25 | 329SS+60d | 330d | finish no earlier than 2016-03-25 |
| 334 |  | MILESTONE: 2nd Round Post Implementation Review Conducted | 0d | 2016-02-29 | 2016-02-29 |  |  |  |
| 335 | 1.1.2.4.10 | **DELIVERABLE: 3rd Round Post Implementation Review Conducted** | 20d | 2016-05-23 | 2016-06-20 |  | 20d |  |
| 336 | 1.1.2.4.10.1 | **MILESTONE: 3rd Round Post Implementation Review Conducted** | 20d | 2016-05-23 | 2016-06-20 |  | 20d |  |
| 337 |  | Post Implementation Review (Third Round) | 20d | 2016-05-23 | 2016-06-17 | 333SS+60d | 270d | finish no earlier than 2016-06-17 |
| 338 |  | MILESTONE: 3rd Round Post Implementation Review Conducted | 0d | 2016-06-20 | 2016-06-20 | 337 |  |  |
| 339 | 1.1.2.4.11 | **DELIVERABLE: Strong and Desired Risk Culture Defined** | 35d | 2016-02-29 | 2016-04-18 |  | 35d |  |
| 340 | 1.1.2.4.11.1 | **MILESTONE: Strong and Desired Risk Culture Defined** | 35d | 2016-02-29 | 2016-04-18 |  | 35d |  |
| 341 |  | Define Strong and desired Risk culture | 35d | 2016-02-29 | 2016-04-15 | 325 | 315d |  |
| 342 |  | MILESTONE: Strong and Desired Risk Culture Instilled | 0d | 2016-04-18 | 2016-04-18 | 341 |  |  |
| 343 | 1.1.1.4.1 | **Rollout Performance Assessment and Compensation Frameworks across the Organization** | 197d? | 2016-04-01 | 2017-01-02 |  | 129d |  |
| 344 | 1.1.1.4.1.1 | **DELIVERABLE: Design risk-based compensation framework** | 65d | 2016-04-01 | 2016-06-30 |  | 261d |  |
| 345 | 1.1.2.5.1.1 | **MILESTONE: Design risk-based compensation framework** | 65d | 2016-04-01 | 2016-06-30 |  | 261d |  |
| 346 |  | Benchmark of risk-based compensation practices in the industry | 65d | 2016-04-01 | 2016-06-30 |  | 261d | start no earlier than 2016-04-01 |
| 347 |  | Risk-based compensation proposals and refinement with stakeholders | 65d | 2016-04-01 | 2016-06-30 |  | 261d | start no earlier than 2016-04-01 |
| 348 |  | Impact analysis of new frameworks on compensation levels | 65d | 2016-04-01 | 2016-06-30 |  | 261d | start no earlier than 2016-04-01 |
| 349 |  | Formalization of new risk-based compensation framework | 65d | 2016-04-01 | 2016-06-30 |  | 261d | start no earlier than 2016-04-01 |
| 350 |  | Risk-based compensation structure complete | 0d | 2016-06-30 | 2016-06-30 |  | 262d | start no earlier than 2016-06-30 |

| ID | WBS | Task | Duration | Start | Finish | Predecessors | Total float | Constraint |
| --- | --- | --- | --- | --- | --- | --- | --- | --- |
| 351 | 1.1.1.4.1.2 | **DELIVERABLE: Communication and stakeholder engagement** | 131d? | 2016-04-01 | 2016-09-30 |  | 195d |  |
| 352 | 1.1.2.5.2.1 | **MILESTONE: Communication and stakeholder engagement** | 131d? | 2016-04-01 | 2016-09-30 |  | 195d |  |
| 353 |  | Design of communication plan | 65d? | 2016-04-01 | 2016-06-30 |  | 261d | start no earlier than 2016-04-01 |
| 354 |  | Writing of communication materials | 65d? | 2016-04-01 | 2016-06-30 |  | 261d | start no earlier than 2016-04-01 |
| 355 |  | Execution of communication plan | 67d? | 2016-06-30 | 2016-09-30 |  | 195d | start no earlier than 2016-06-30 |
| 356 |  | Stakeholder communication complete | 0d | 2016-09-30 | 2016-09-30 |  | 196d | start no earlier than 2016-09-30 |
| 357 | 1.1.1.4.1.3 | **DELIVERABLE: Updates to performance assessment templates** | 132d? | 2016-07-01 | 2017-01-02 |  | 129d |  |
| 358 | 1.1.2.5.3.1 | **MILESTONE: Updates to performance assessment templates** | 132d? | 2016-07-01 | 2017-01-02 |  | 129d |  |
| 359 |  | Inventory of performance assessment templates at SHUSA, SBNA and SCUSA | 66d? | 2016-07-01 | 2016-09-30 |  | 195d | start no earlier than 2016-07-01 |
| 360 |  | Update of template in accordance with risk-based compensation framework | 66d? | 2016-07-01 | 2016-09-30 |  | 195d | start no earlier than 2016-07-01 |
| 361 |  | Socialization, training to stakeholders and roll-out of new templates | 67d? | 2016-09-30 | 2017-01-02 |  | 129d | start no earlier than 2016-09-30 |
| 362 |  | Performance assessment templates updated | 0d | 2016-12-31 | 2016-12-31 |  | 130d | start no earlier than 2016-12-31 |
| 363 | 1.1.1.4.2 | **Remediation of issues found during post-implementation reviews** | 262d? | 2016-01-01 | 2017-01-02 |  | 129d |  |
| 364 | 1.1.1.4.2.1 | **DELIVERABLE: Communications to emphasize progress being made / share best practices** | 65d | 2016-01-01 | 2016-03-31 |  | 326d |  |
| 365 | 1.1.2.6.1.1 | **MILESTONE: Communications to emphasize progress being made / share best practices** | 65d | 2016-01-01 | 2016-03-31 |  | 326d |  |
| 366 |  | Assessment of progress being made & best practices | 65d | 2016-01-01 | 2016-03-31 |  | 326d | start no earlier than 2016-01-01 |
| 367 |  | Design of communication plan | 65d | 2016-01-01 | 2016-03-31 |  | 326d | start no earlier than 2016-01-01 |
| 368 |  | Development of communications materials | 65d | 2016-01-01 | 2016-03-31 |  | 326d | start no earlier than 2016-01-01 |
| 369 |  | Delivery of communication plan | 65d | 2016-01-01 | 2016-03-31 |  | 326d | start no earlier than 2016-01-01 |
| 370 |  | Progress communications delivered | 0d | 2016-03-31 | 2016-03-31 |  | 327d | start no earlier than 2016-03-31 |
| 371 | 1.1.1.4.2.2 | **DELIVERABLE: Convey organizational changes to the enterprise** | 65d | 2016-04-01 | 2016-06-30 |  | 261d |  |
| 372 | 1.1.2.6.2.1 | **MILESTONE: Convey organizational changes to the enterprise** | 65d | 2016-04-01 | 2016-06-30 |  | 261d |  |
| 373 |  | Development of materials | 65d | 2016-04-01 | 2016-06-30 |  | 261d | start no earlier than 2016-04-01 |
| 374 |  | Delivery of communication to stakeholders | 65d | 2016-04-01 | 2016-06-30 |  | 261d | start no earlier than 2016-04-01 |
| 375 |  | Organizational changes communicated to enterprise | 0d | 2016-06-30 | 2016-06-30 |  | 262d | start no earlier than 2016-06-30 |
| 376 | 1.1.1.4.2.3 | **DELIVERABLE: Enterprise-wide training and development of job descriptions with explicit focus on three lines of defense** | 132d? | 2016-07-01 | 2017-01-02 |  | 129d |  |
| 377 | 1.1.2.6.3.1 | **MILESTONE: Enterprise-wide training and development of job descriptions with explicit focus on three lines of defense** | 132d? | 2016-07-01 | 2017-01-02 |  | 129d |  |
| 378 |  | Design of training curriculum & idenfification of key recepients as a result of post-implementation reviews | 66d? | 2016-07-01 | 2016-09-30 |  | 195d | start no earlier than 2016-07-01 |
| 379 |  | Development of training materials | 66d? | 2016-07-01 | 2016-09-30 |  | 195d | start no earlier than 2016-07-01 |
| 380 |  | Delivery of training to priority recepients | 67d? | 2016-09-30 | 2017-01-02 |  | 129d | start no earlier than 2016-09-30 |
| 381 |  | Identification of key functions requiring job description updates | 66d? | 2016-07-01 | 2016-09-30 |  | 195d | start no earlier than 2016-07-01 |
| 382 |  | Development of job descriptions with explicit focus on three lines of defense | 67d? | 2016-09-30 | 2017-01-02 |  | 129d | start no earlier than 2016-09-30 |
| 383 |  | Job descriptions complete and enterprise-wide training delivered | 0d | 2016-12-31 | 2016-12-31 |  | 130d | start no earlier than 2016-12-31 |
| 384 | 1.1.1.4.3 | **Design recruitment and retention mechanisms** | 198d? | 2016-07-01 | 2017-04-04 |  | 63d |  |
| 385 | 1.1.1.4.3.1 | **DELIVERABLE: Recruitment and retention mechanisms (e.g. Professional development and job rotation programs, job satisfaction assessments, and compensation structure)** | 66d | 2016-07-01 | 2016-09-30 |  | 195d |  |
| 386 | 1.1.2.7.1.1 | **MILESTONE: Recruitment and retention mechanisms (e.g. Professional development and job rotation programs, job satisfaction assessments, and compensation structure)** | 66d | 2016-07-01 | 2016-09-30 |  | 195d |  |
| 387 |  | Diagnostic of retention challenges | 66d | 2016-07-01 | 2016-09-30 |  | 195d | start no earlier than 2016-07-01 |
| 388 |  | Design of new possible retention mechanisms | 66d | 2016-07-01 | 2016-09-30 |  | 195d | start no earlier than 2016-07-01 |
| 389 |  | Design of new retention mechanisms complete | 0d | 2016-09-30 | 2016-09-30 |  | 196d | start no earlier than 2016-09-30 |
| 390 | 1.1.1.4.3.2 | **DELIVERABLE: Action plans for necessary remediation efforts** | 132d? | 2016-10-03 | 2017-04-04 |  | 63d |  |
| 391 | 1.1.2.7.2.1 | **MILESTONE: Action plans for necessary remediation efforts** | 132d? | 2016-10-03 | 2017-04-04 |  | 63d |  |
| 392 |  | Selection of key remediation initiatives with key stakeholders | 68d? | 2016-10-03 | 2017-01-04 |  | 127d | start no earlier than 2016-10-01 |
| 393 |  | Planning of initiatives between SHUSA and its subsidiaries | 68d? | 2016-10-03 | 2017-01-04 |  | 127d | start no earlier than 2016-10-01 |
| 394 |  | Rollout of initiatives at SHUSA | 68d? | 2016-10-03 | 2017-01-04 |  | 127d | start no earlier than 2016-10-01 |
| 395 |  | Rollout of initiatives at other subsidiaries | 67d | 2017-01-02 | 2017-04-04 |  | 63d | start no earlier than 2017-01-01 |
| 396 |  | Recruitment and retention intiatives introduced throughout enterprise | 0d | 2017-03-31 | 2017-03-31 |  | 66d | start no earlier than 2017-03-31 |
| 397 | 1.1.1.4.4 | **DELIVERABLE: Assess Risk Culture across the Organization** | 66d | 2016-07-01 | 2016-09-30 |  | 195d |  |
| 398 | 1.1.2.7.3.1 | **MILESTONE: Assess Risk Culture across the Organization** | 66d | 2016-07-01 | 2016-09-30 |  | 195d |  |
| 399 |  | Diagnostic of current risk culture | 66d | 2016-07-01 | 2016-09-30 |  | 195d | start no earlier than 2016-07-01 |
| 400 |  | Definition of a multi-year plan to achieve a sound, well-respected risk culture | 66d | 2016-07-01 | 2016-09-30 |  | 195d | start no earlier than 2016-07-01 |
| 401 |  | Ongoing diagnostics of risk culture and development of multi-year plan to achieve premier risk culture in place | 0d | 2016-09-30 | 2016-09-30 |  | 196d | start no earlier than 2016-09-30 |
| 402 | 1.1.3 | **Risk Measurement** | 427d? | 2015-05-28 | 2017-01-13 |  | 112d |  |
| 403 | 1.1.3.1 | **Risk Measurement Deliverables** | 97d | 2015-07-28 | 2015-12-10 |  | 407d |  |
| 404 |  | Business Entity Material Risk Program Established for SHUSA | 0d | 2015-12-10 | 2015-12-10 | 484 | 407d |  |
| 405 |  | Business Entity Material Risk Program Established for SBNA | 0d | 2015-07-28 | 2015-07-28 | 617 | 504d |  |
| 406 |  | Business Entity Material Risk Program Established for SCUSA | 0d | 2015-07-28 | 2015-07-28 | 681 | 504d |  |
| 407 |  | Business Entity Material Risk Program Established for New York(SIS) | 0d | 2015-07-28 | 2015-07-28 | 765 | 504d |  |
| 408 |  | Business Entity Material Risk Program Established for Puerto Rico | 0d | 2015-07-28 | 2015-07-28 | 896 | 504d |  |
| 409 |  | Business Entity Material Risk Program Established for Miami | 0d | 2015-07-28 | 2015-07-28 | 961 | 504d |  |
| 410 | 1.1.3.2 | **SHUSA - Business Entity Material Risk Program** | 73d? | 2015-09-01 | 2015-12-10 |  | 406d |  |
| 411 | 1.1.3.2.1 | **DELIVERABLE: Preparation for Aggregation to Create SHUSA Material Risk Inventory** | 10d? | 2015-09-01 | 2015-09-15 |  | 469d |  |
| 412 | 1.1.3.2.1.1 | **MILESTONE:Preparation for Aggregation to Create SHUSA Material Risk Inventory** | 10d? | 2015-09-01 | 2015-09-15 |  | 469d |  |
| 413 |  | ERM Collects Risk Inventories from Entity Risk Managers | 6d? | 2015-09-01 | 2015-09-08 |  | 473d | finish no earlier than 2015-09-08 |
| 414 |  | ERM Sorts risks and groups by Risk Type | 6d? | 2015-09-01 | 2015-09-08 |  | 473d | finish no earlier than 2015-09-08 |
| 415 |  | ERM Creates pre-Workshop, pre-read Materials and instructions for SHUSA Risk Managers | 6d? | 2015-09-01 | 2015-09-08 |  | 473d | finish no earlier than 2015-09-08 |
| 416 |  | ERM Distributes Workshop Materials to Responsible parties | 2d? | 2015-09-08 | 2015-09-09 |  | 472d | finish no earlier than 2015-09-09 |
| 417 |  | Aggregation to Create SHUSA Material Risk Inventory Prepared | 0d | 2015-09-15 | 2015-09-15 |  | 469d | start no earlier than 2015-09-15 |
| 418 | 1.1.3.2.2 | **DELIVERABLE: SHUSA Aggregation Workshops** | 13d? | 2015-09-09 | 2015-09-25 |  | 460d |  |
| 419 | 1.1.3.2.2.1 | **MILESTONE: Credit Risk Material Risk Aggregation** | 13d? | 2015-09-09 | 2015-09-25 |  | 460d |  |
| 420 |  | Credit Risk performs pre-Read and analysis | 5d? | 2015-09-09 | 2015-09-15 |  | 468d | finish no earlier than 2015-09-15 |

| ID | WBS | Task | Duration | Start | Finish | Total float | Constraint |
| --- | --- | --- | --- | --- | --- | --- | --- |
| 421 |  | Risk Managers Conduct Credit pre-Workshop Enrichment and Aggregation Activites | 5d? | 2015-09-09 | 2015-09-15 | 468d | finish no earlier than 2015-09-15 |
| 422 |  | ERM facilitates Credit Aggregation and Enrichment Workshop | 7d? | 2015-09-15 | 2015-09-23 | 462d | finish no earlier than 2015-09-23 |
| 423 |  | Present to Level II Subcommittees | 3d? | 2015-09-23 | 2015-09-25 | 460d | finish no earlier than 2015-09-25 |
| 424 |  | Credit Risk Material Risk Aggregation Prepared | 0d | 2015-09-25 | 2015-09-25 | 461d | start no earlier than 2015-09-25 |
| 425 | 1.1.3.2.2.2 | **MILESTONE: Operational Risk Material Risk Aggregation** | 13d? | 2015-09-09 | 2015-09-25 | 460d |  |
| 426 |  | Operational Risk performs pre-Read and analysis | 5d? | 2015-09-09 | 2015-09-15 | 468d | finish no earlier than 2015-09-15 |
| 427 |  | Risk Managers Conduct Operational Risk pre-Workshop Enrichment and Aggregation Activites | 5d? | 2015-09-09 | 2015-09-15 | 468d | finish no earlier than 2015-09-15 |
| 428 |  | ERM facilitates Operational Risk Aggregation and Enrichment Workshop | 7d? | 2015-09-15 | 2015-09-23 | 462d | finish no earlier than 2015-09-23 |
| 429 |  | Present to Level II Subcommittees | 3d? | 2015-09-23 | 2015-09-25 | 460d | finish no earlier than 2015-09-25 |
| 430 |  | Operational Risk Material Risk Aggregation Prepared | 0d | 2015-09-25 | 2015-09-25 | 461d | start no earlier than 2015-09-25 |
| 431 | 1.1.3.2.2.3 | **MILESTONE: Compliance Material Risk Aggregation** | 13d? | 2015-09-09 | 2015-09-25 | 460d |  |
| 432 |  | Compliance performs pre-Read and analysis | 5d? | 2015-09-09 | 2015-09-15 | 468d | finish no earlier than 2015-09-15 |
| 433 |  | Risk Managers Conduct Compliance pre-Workshop Enrichment and Aggregation Activites | 5d? | 2015-09-09 | 2015-09-15 | 468d | finish no earlier than 2015-09-15 |
| 434 |  | ERM facilitates Compliance Aggregation and Enrichment Workshop | 7d? | 2015-09-15 | 2015-09-23 | 462d | finish no earlier than 2015-09-23 |
| 435 |  | Present to Level II Subcommittees | 3d? | 2015-09-23 | 2015-09-25 | 460d | finish no earlier than 2015-09-25 |
| 436 |  | Compliance Material Risk Aggregation Prepared | 0d | 2015-09-25 | 2015-09-25 | 461d | start no earlier than 2015-09-25 |
| 437 | 1.1.3.2.2.4 | **MILESTONE: Model Material Risk Aggregation** | 13d? | 2015-09-09 | 2015-09-25 | 460d |  |
| 438 |  | Model Risk performs pre-Read and analysis | 5d? | 2015-09-09 | 2015-09-15 | 468d | finish no earlier than 2015-09-15 |
| 439 |  | Risk Managers Conduct Model pre-Workshop Enrichment and Aggregation Activites | 5d? | 2015-09-09 | 2015-09-15 | 468d | finish no earlier than 2015-09-15 |
| 440 |  | ERM facilitates Model Aggregation and Enrichment Workshop | 7d? | 2015-09-15 | 2015-09-23 | 462d | finish no earlier than 2015-09-23 |
| 441 |  | Present to Level II Subcommittees | 3d? | 2015-09-23 | 2015-09-25 | 460d | finish no earlier than 2015-09-25 |
| 442 |  | Model Material Risk Aggregation Prepared | 0d | 2015-09-25 | 2015-09-25 | 461d | start no earlier than 2015-09-25 |
| 443 | 1.1.3.2.2.5 | **MILESTONE: Market Material Risk Aggregation2** | 13d? | 2015-09-09 | 2015-09-25 | 460d |  |
| 444 |  | Market Risk performs pre-Read and analysis | 5d? | 2015-09-09 | 2015-09-15 | 468d | finish no earlier than 2015-09-15 |
| 445 |  | Risk Managers Conduct Market pre-Workshop Enrichment and Aggregation Activites | 5d? | 2015-09-09 | 2015-09-15 | 468d | finish no earlier than 2015-09-15 |
| 446 |  | ERM facilitates Market Aggregation and Enrichment Workshop | 7d? | 2015-09-15 | 2015-09-23 | 462d | finish no earlier than 2015-09-23 |
| 447 |  | Present to Level II Subcommittees | 3d? | 2015-09-23 | 2015-09-25 | 460d | finish no earlier than 2015-09-25 |
| 448 |  | Market Material Risk Aggregation Prepared | 0d | 2015-09-25 | 2015-09-25 | 461d | start no earlier than 2015-09-25 |
| 449 | 1.1.3.2.2.6 | **MILESTONE: Liquidity Material Risk Aggregation** | 13d? | 2015-09-09 | 2015-09-25 | 460d |  |
| 450 |  | Liquidity Risk performs pre-Read and analysis | 5d? | 2015-09-09 | 2015-09-15 | 468d | finish no earlier than 2015-09-15 |
| 451 |  | Risk Managers Conduct Liquidity pre-Workshop Enrichment and Aggregation Activites | 5d? | 2015-09-09 | 2015-09-15 | 468d | finish no earlier than 2015-09-15 |
| 452 |  | ERM facilitates Liquidity Aggregation and Enrichment Workshop | 7d? | 2015-09-15 | 2015-09-23 | 462d | finish no earlier than 2015-09-23 |
| 453 |  | Present to Level II Subcommittees | 3d? | 2015-09-23 | 2015-09-25 | 460d | finish no earlier than 2015-09-25 |
| 454 |  | Liquidity Material Risk Aggregation Prepared | 0d | 2015-09-25 | 2015-09-25 | 461d | start no earlier than 2015-09-25 |
| 455 | 1.1.3.2.2.7 | **MILESTONE: Strategic Material Risk Aggregation** | 13d? | 2015-09-09 | 2015-09-25 | 460d |  |
| 456 |  | Strategic Risk performs pre-Read and analysis | 5d? | 2015-09-09 | 2015-09-15 | 468d | finish no earlier than 2015-09-15 |
| 457 |  | Risk Managers Conduct Strategic pre-Workshop Enrichment and Aggregation Activites | 5d? | 2015-09-09 | 2015-09-15 | 468d | finish no earlier than 2015-09-15 |
| 458 |  | ERM facilitates Strategic Aggregation and Enrichment Workshop | 7d? | 2015-09-15 | 2015-09-23 | 462d | finish no earlier than 2015-09-23 |
| 459 |  | Present to Level II Subcommittees | 3d? | 2015-09-23 | 2015-09-25 | 460d | finish no earlier than 2015-09-25 |
| 460 |  | Strategic Material Risk Aggregation Prepared | 0d | 2015-09-25 | 2015-09-25 | 461d | start no earlier than 2015-09-25 |
| 461 | 1.1.3.2.2.8 | **MILESTONE: Reputational Material Risk Aggregation** | 13d? | 2015-09-09 | 2015-09-25 | 460d |  |
| 462 |  | Reputational Risk performs pre-Read and analysis | 5d? | 2015-09-09 | 2015-09-15 | 468d | finish no earlier than 2015-09-15 |
| 463 |  | Risk Managers Conduct Reputational pre-Workshop Enrichment and Aggregation Activites | 5d? | 2015-09-09 | 2015-09-15 | 468d | finish no earlier than 2015-09-15 |
| 464 |  | ERM facilitates Reputational Aggregation and Enrichment Workshop | 7d? | 2015-09-15 | 2015-09-23 | 462d | finish no earlier than 2015-09-23 |
| 465 |  | Present to Level II Subcommittees | 3d? | 2015-09-23 | 2015-09-25 | 460d | finish no earlier than 2015-09-25 |
| 466 |  | Reputational Material Risk Aggregation Prepared | 0d | 2015-09-25 | 2015-09-25 | 461d | start no earlier than 2015-09-25 |
| 467 | 1.1.3.2.3 | **DELIVERABLE:SHUSA Top Down Aggregation** | 11d? | 2015-09-25 | 2015-10-09 | 450d |  |
| 468 | 1.1.3.2.3.1 | **MILESTONE:SHUSA Top Down Aggregation** | 11d? | 2015-09-25 | 2015-10-09 | 450d |  |
| 469 |  | ERM consolidates risks into SHUSA Inventory | 2d? | 2015-09-25 | 2015-09-28 | 459d | finish no earlier than 2015-09-28 |
| 470 |  | ERM distributes inventory to SHUSA Business and Risk executives | 3d? | 2015-09-28 | 2015-09-30 | 457d | finish no earlier than 2015-09-30 |
| 471 |  | ERM incorporates final risks into SHUSA Inventory | 5d? | 2015-10-05 | 2015-10-09 | 450d | start no earlier than 2015-10-05 |
| 472 |  | SHUSA Top Down Aggregation Prepared | 0d | 2015-10-09 | 2015-10-09 | 451d | start no earlier than 2015-10-09 |
| 473 | 1.1.3.2.4 | **DELIVERABLE:Material Risk SHUSA Approval** | 16d? | 2015-10-09 | 2015-10-30 | 435d |  |
| 474 | 1.1.3.2.4.1 | **MILESTONE:Material Risk SHUSA Approval** | 16d? | 2015-10-09 | 2015-10-30 | 435d |  |
| 475 |  | Present SHUSA Material Risks to BERC | 6d? | 2015-10-09 | 2015-10-16 | 445d | finish no earlier than 2015-10-16 |
| 476 |  | Present SHUSA Material Risks to ERMC | 11d? | 2015-10-16 | 2015-10-30 | 435d | finish no earlier than 2015-10-30 |
| 477 |  | Present SHUSA Material Risks to CCAR | 1d? | 2015-10-30 | 2015-10-30 | 435d | start no earlier than 2015-10-30 |
| 478 |  | Material Risk SHUSA Approval | 0d | 2015-10-30 | 2015-10-30 | 436d | start no earlier than 2015-10-30 |
| 479 | 1.1.3.2.5 | **DELIVERABLE:Risk ID and Assessment Policy** | 55d? | 2015-09-25 | 2015-12-10 | 406d |  |
| 480 | 1.1.3.2.5.1 | **MILESTONE:Risk ID and Assessment Policy** | 55d? | 2015-09-25 | 2015-12-10 | 406d |  |
| 481 |  | Risk ID and Assessment group drafts policy | 26d? | 2015-09-25 | 2015-10-30 | 435d | finish no earlier than 2015-10-30 |
| 482 |  | Risk ID and Assessment group presents draft to ERMC for approval | 6d? | 2015-10-30 | 2015-11-08 | 430d | finish no earlier than 2015-11-08 |
| 483 |  | Risk ID and Assessment group presents to Risk Committee (BERC) | 29d? | 2015-11-02 | 2015-12-10 | 406d | finish no earlier than 2015-12-10 |
| 484 |  | Risk ID and Assessment Policy | 0d | 2015-12-10 | 2015-12-10 | 407d | start no earlier than 2015-12-10 |
| 485 | 1.1.3.3 | **SBNA - Business Entity Material Risk Program** | 68d? | 2015-05-28 | 2015-08-31 | 479d |  |
| 486 | 1.1.3.3.1 | **DELIVERABLE:Retail Banking Material Risk Inventory** | 2d | 2015-06-29 | 2015-06-30 | 523d |  |
| 487 | 1.1.3.3.1.1 | **MILESTONE: Small Business Banking Material Risk Inventory** | 2d | 2015-06-29 | 2015-06-30 | 523d |  |
| 488 |  | Deliver Final Inventory to SBNA and SHUSA ERM | 2d | 2015-06-29 | 2015-06-30 | 523d | start no earlier than 2015-06-29 |
| 489 |  | Small Business Banking Material Risk Inventory Prepared | 0d | 2015-06-30 | 2015-06-30 | 524d | start no earlier than 2015-06-30 |
| 490 | 1.1.3.3.1.2 | **MILESTONE: Cards Material Risk Inventory** | 2d | 2015-06-29 | 2015-06-30 | 523d |  |

| ID | WBS | Task | Duration | Start | Finish | Total float | Constraint |
| --- | --- | --- | --- | --- | --- | --- | --- |
| 491 |  | Deliver Final Inventory to SBNA and SHUSA ERM | 2d | 2015-06-29 | 2015-06-30 | 523d | start no earlier than 2015-06-29 |
| 492 |  | Cards Material Risk Inventory Prepared | 0d | 2015-06-30 | 2015-06-30 | 524d | start no earlier than 2015-06-30 |
| 493 | 1.1.3.3.1.3 | **MILESTONE: Mortgages Material Risk Inventory** | 2d | 2015-06-29 | 2015-06-30 | 523d |  |
| 494 |  | Deliver Final Inventory to SBNA and SHUSA ERM | 2d | 2015-06-29 | 2015-06-30 | 523d | start no earlier than 2015-06-29 |
| 495 |  | Mortgages Material Risk Inventory Prepared | 0d | 2015-06-30 | 2015-06-30 | 524d | start no earlier than 2015-06-30 |
| 496 | 1.1.3.3.1.4 | **MILESTONE: Purchased Portfolios (RV/Marine) Material Risk Inventory** | 2d | 2015-06-29 | 2015-06-30 | 523d |  |
| 497 |  | Deliver Final Inventory to SBNA and SHUSA ERM | 2d | 2015-06-29 | 2015-06-30 | 523d | start no earlier than 2015-06-29 |
| 498 |  | Purchased Portfolios (RV/Marine) Material Risk Inventory Prepared | 0d | 2015-06-30 | 2015-06-30 | 524d | start no earlier than 2015-06-30 |
| 499 | 1.1.3.3.1.5 | **MILESTONE: Individual Material Risk Inventory** | 2d | 2015-06-29 | 2015-06-30 | 523d |  |
| 500 |  | Deliver Final Inventory to SBNA and SHUSA ERM | 2d | 2015-06-29 | 2015-06-30 | 523d | start no earlier than 2015-06-29 |
| 501 |  | Individual Material Risk Inventory Prepared | 0d | 2015-06-30 | 2015-06-30 | 524d | start no earlier than 2015-06-30 |
| 502 | 1.1.3.3.1.6 | **MILESTONE: Wealth Management Material Risk Inventory** | 2d | 2015-06-29 | 2015-06-30 | 523d |  |
| 503 |  | Deliver Final Inventory to SBNA and SHUSA ERM | 2d | 2015-06-29 | 2015-06-30 | 523d | start no earlier than 2015-06-29 |
| 504 |  | Wealth Management Material Risk Inventory Prepared | 0d | 2015-06-30 | 2015-06-30 | 524d | start no earlier than 2015-06-30 |
| 505 | 1.1.3.3.2 | **DELIVERABLE:Retail: Create Retail Banking Material Risk Inventory** | 24d | 2015-05-28 | 2015-06-30 | 523d |  |
| 506 | 1.1.3.3.2.1 | **MILESTONE: Retail: Create Retail Banking Material Risk Inventory** | 24d | 2015-05-28 | 2015-06-30 | 523d |  |
| 507 |  | Create Segment Material Risk Inventory (Aggregation) | 24d | 2015-05-28 | 2015-06-30 | 523d | start no earlier than 2015-05-28 |
| 508 |  | Segment head presents inventory to ERMC | 2d | 2015-06-29 | 2015-06-30 | 523d | start no earlier than 2015-06-29 |
| 509 |  | Retail: Create Retail Banking Material Risk Inventory Prepared | 0d | 2015-06-30 | 2015-06-30 | 524d | start no earlier than 2015-06-30 |
| 510 | 1.1.3.3.3 | **DELIVERABLE:Commercial Banking Material Risk Inventory** | 2d | 2015-06-29 | 2015-06-30 | 523d |  |
| 511 | 1.1.3.3.3.1 | **MILESTONE: Commercial and Industrial Material Risk Inventory** | 2d | 2015-06-29 | 2015-06-30 | 523d |  |
| 512 |  | Deliver Final Inventory to SBNA and SHUSA ERM | 2d | 2015-06-29 | 2015-06-30 | 523d | start no earlier than 2015-06-29 |
| 513 |  | Commercial and Industrial Material Risk Inventory Prepared | 0d | 2015-06-30 | 2015-06-30 | 524d | start no earlier than 2015-06-30 |
| 514 | 1.1.3.3.3.2 | **MILESTONE: Specialties Material Risk Inventory** | 2d | 2015-06-29 | 2015-06-30 | 523d |  |
| 515 |  | Deliver Final Inventory to SBNA and SHUSA ERM | 2d | 2015-06-29 | 2015-06-30 | 523d | start no earlier than 2015-06-29 |
| 516 |  | Specialties Material Risk Inventory Prepared | 0d | 2015-06-30 | 2015-06-30 | 524d | start no earlier than 2015-06-30 |
| 517 | 1.1.3.3.3.3 | **MILESTONE: Government Banking Material Risk Inventory** | 2d | 2015-06-29 | 2015-06-30 | 523d |  |
| 518 |  | Deliver Final Inventory to SBNA and SHUSA ERM | 2d | 2015-06-29 | 2015-06-30 | 523d | start no earlier than 2015-06-29 |
| 519 |  | Government Banking Material Risk Inventory Prepared | 0d | 2015-06-30 | 2015-06-30 | 524d | start no earlier than 2015-06-30 |
| 520 | 1.1.3.3.4 | **DELIVERABLE: Commercial: Create Commercial Banking Material Risk Inventory** | 24d | 2015-05-28 | 2015-06-30 | 523d |  |
| 521 | 1.1.3.3.4.1 | **MILESTONE: Commercial: Create Commercial Banking Material Risk Inventory** | 24d | 2015-05-28 | 2015-06-30 | 523d |  |
| 522 |  | Create Segment Material Risk Inventory (Aggregation) | 24d | 2015-05-28 | 2015-06-30 | 523d | start no earlier than 2015-05-28 |
| 523 |  | Segment head presents inventory to ERMC | 2d | 2015-06-29 | 2015-06-30 | 523d | start no earlier than 2015-06-29 |
| 524 |  | Create Commercial Banking Material Risk Inventory Prepared | 0d | 2015-06-30 | 2015-06-30 | 524d | start no earlier than 2015-06-30 |
| 525 | 1.1.3.3.5 | **DELIVERABLE:Global Banking Material Risk Inventory** | 2d | 2015-06-29 | 2015-06-30 | 523d |  |
| 526 | 1.1.3.3.5.1 | **MILESTONE: MRG Material Risk Inventory** | 2d | 2015-06-29 | 2015-06-30 | 523d |  |
| 527 |  | Deliver Final Inventory to SBNA and SHUSA ERM | 2d | 2015-06-29 | 2015-06-30 | 523d | start no earlier than 2015-06-29 |
| 528 |  | MRG Material Risk Inventory Prepared | 0d | 2015-06-30 | 2015-06-30 | 524d | start no earlier than 2015-06-30 |
| 529 | 1.1.3.3.5.2 | **MILESTONE: Large Corporates Material Risk Inventory** | 2d | 2015-06-29 | 2015-06-30 | 523d |  |
| 530 |  | Deliver Final Inventory to SBNA and SHUSA ERM | 2d | 2015-06-29 | 2015-06-30 | 523d | start no earlier than 2015-06-29 |
| 531 |  | Large Corporates Material Risk Inventory Prepared | 0d | 2015-06-30 | 2015-06-30 | 524d | start no earlier than 2015-06-30 |
| 532 | 1.1.3.3.6 | **DELIVERABLE:Global: Create Global Banking Material Risk Inventory** | 24d | 2015-05-28 | 2015-06-30 | 523d |  |
| 533 | 1.1.3.3.6.1 | **MILESTONE: Global: Create Global Banking Material Risk Inventory** | 24d | 2015-05-28 | 2015-06-30 | 523d |  |
| 534 |  | Create Segment Material Risk Inventory (Aggregation) | 24d | 2015-05-28 | 2015-06-30 | 523d | start no earlier than 2015-05-28 |
| 535 |  | Segment head presents inventory to ERMC | 2d | 2015-06-29 | 2015-06-30 | 523d | start no earlier than 2015-06-29 |
| 536 |  | Global: Create Global Banking Material Risk Inventory Prepared | 0d | 2015-06-30 | 2015-06-30 | 524d | start no earlier than 2015-06-30 |
| 537 | 1.1.3.3.7 | **DELIVERABLE:Automotive Finance Material Risk Inventory** | 2d | 2015-06-29 | 2015-06-30 | 523d |  |
| 538 | 1.1.3.3.7.1 | **MILESTONE: CEVF Material Risk Inventory** | 2d | 2015-06-29 | 2015-06-30 | 523d |  |
| 539 |  | Deliver Final Inventory to SBNA and SHUSA ERM | 2d | 2015-06-29 | 2015-06-30 | 523d | start no earlier than 2015-06-29 |
| 540 |  | CEVF Material Risk Inventory Prepared | 0d | 2015-06-30 | 2015-06-30 | 524d | start no earlier than 2015-06-30 |
| 541 | 1.1.3.3.7.2 | **MILESTONE: Leasing Material Risk Inventory** | 2d | 2015-06-29 | 2015-06-30 | 523d |  |
| 542 |  | Deliver Final Inventory to SBNA and SHUSA ERM | 2d | 2015-06-29 | 2015-06-30 | 523d | start no earlier than 2015-06-29 |
| 543 |  | Leasing Material Risk Inventory Prepared | 0d | 2015-06-30 | 2015-06-30 | 524d | start no earlier than 2015-06-30 |
| 544 | 1.1.3.3.7.3 | **MILESTONE: Dealer Floor Plan Material Risk Inventory** | 2d | 2015-06-29 | 2015-06-30 | 523d |  |
| 545 |  | Deliver Final Inventory to SBNA and SHUSA ERM | 2d | 2015-06-29 | 2015-06-30 | 523d | start no earlier than 2015-06-29 |
| 546 |  | Dealer Floor Plan Material Risk Inventory Prepared | 0d | 2015-06-30 | 2015-06-30 | 524d | start no earlier than 2015-06-30 |
| 547 | 1.1.3.3.8 | **DELIVERABLE: Automotive: Create Automotive Finance Material Risk Inventory** | 24d | 2015-05-28 | 2015-06-30 | 523d |  |
| 548 | 1.1.3.3.8.1 | **MILESTONE: Automotive: Create Automotive Finance Material Risk Inventory** | 24d | 2015-05-28 | 2015-06-30 | 523d |  |
| 549 |  | Create Segment Material Risk Inventory (Aggregation) | 24d | 2015-05-28 | 2015-06-30 | 523d | start no earlier than 2015-05-28 |
| 550 |  | Segment head presents inventory to ERMC | 2d | 2015-06-29 | 2015-06-30 | 523d | start no earlier than 2015-06-29 |
| 551 |  | Automotive Finance Material Risk Inventory Prepared | 0d | 2015-06-30 | 2015-06-30 | 524d | start no earlier than 2015-06-30 |
| 552 | 1.1.3.3.9 | **DELIVERABLE: Commerical Real Estate Material Risk Inventory** | 3d | 2015-06-26 | 2015-06-30 | 523d |  |
| 553 | 1.1.3.3.9.1 | **MILESTONE: Commerical Real Estate Material Risk Inventory** | 3d | 2015-06-26 | 2015-06-30 | 523d |  |
| 554 |  | Deliver Final Inventory to SBNA and SHUSA ERM | 2d | 2015-06-26 | 2015-06-29 | 524d | start no earlier than 2015-06-26 |
| 555 |  | Present inventory to ERMC | 2d | 2015-06-29 | 2015-06-30 | 523d | start no earlier than 2015-06-29 |
| 556 |  | Commerical Real Estate Material Risk Inventory Prepared | 0d | 2015-06-30 | 2015-06-30 | 524d | start no earlier than 2015-06-30 |
| 557 | 1.1.3.3.10 | **DELIVERABLE:Financial Management Material Risk Inventory** | 3d | 2015-06-26 | 2015-06-30 | 523d |  |
| 558 | 1.1.3.3.10.1 | **MILESTONE: Financial Management Material Risk Inventory** | 3d | 2015-06-26 | 2015-06-30 | 523d |  |
| 559 |  | Deliver Final Inventory to SBNA and SHUSA ERM | 2d | 2015-06-26 | 2015-06-29 | 524d | start no earlier than 2015-06-26 |
| 560 |  | Present inventory to ERMC | 2d | 2015-06-29 | 2015-06-30 | 523d | start no earlier than 2015-06-29 |

| ID | WBS | Task | Duration | Start | Finish | Predecessors | Total float | Constraint |
| --- | --- | --- | --- | --- | --- | --- | --- | --- |
| 561 |  | Financial Management Material Risk Inventory Prepared | 0d | 2015-06-30 | 2015-06-30 |  | 524d | start no earlier than 2015-06-30 |
| 562 | 1.1.3.3.11 | **DELIVERABLE:Corporate Center Material Risk Inventory** | 3d | 2015-06-26 | 2015-06-30 |  | 523d |  |
| 563 | 1.1.3.3.11.1 | **MILESTONE: Corporate Center Material Risk Inventory** | 3d | 2015-06-26 | 2015-06-30 |  | 523d |  |
| 564 |  | Deliver Final Inventory to SBNA and SHUSA ERM | 2d | 2015-06-26 | 2015-06-29 |  | 524d | start no earlier than 2015-06-26 |
| 565 |  | Present inventory to ERMC | 2d | 2015-06-29 | 2015-06-30 |  | 523d | start no earlier than 2015-06-29 |
| 566 |  | Corporate Center Material Risk Inventory Prepared | 0d | 2015-06-30 | 2015-06-30 |  | 524d | start no earlier than 2015-06-30 |
| 567 | 1.1.3.3.12 | **DELIVERABLE: Legal Material Risk Inventory** | 3d | 2015-06-26 | 2015-06-30 |  | 523d |  |
| 568 | 1.1.3.3.12.1 | **MILESTONE: Legal Material Risk Inventory** | 3d | 2015-06-26 | 2015-06-30 |  | 523d |  |
| 569 |  | Deliver Final Inventory to SBNA and SHUSA ERM | 2d | 2015-06-26 | 2015-06-29 |  | 524d | start no earlier than 2015-06-26 |
| 570 |  | Present inventory to ERMC | 2d | 2015-06-29 | 2015-06-30 |  | 523d | start no earlier than 2015-06-29 |
| 571 |  | Legal Material Risk Inventory Prepared | 0d | 2015-06-30 | 2015-06-30 |  | 524d | start no earlier than 2015-06-30 |
| 572 | 1.1.3.3.13 | **DELIVERABLE:HR Material Risk Inventory** | 3d | 2015-06-26 | 2015-06-30 |  | 523d |  |
| 573 | 1.1.3.3.13.1 | **MILESTONE: HR Material Risk Inventory** | 3d | 2015-06-26 | 2015-06-30 |  | 523d |  |
| 574 |  | Deliver Final Inventory to SBNA and SHUSA ERM | 2d | 2015-06-26 | 2015-06-29 |  | 524d | start no earlier than 2015-06-26 |
| 575 |  | Present inventory to ERMC | 2d | 2015-06-29 | 2015-06-30 |  | 523d | start no earlier than 2015-06-29 |
| 576 |  | HR Material Risk Inventory Prepared | 0d | 2015-06-30 | 2015-06-30 |  | 524d | start no earlier than 2015-06-30 |
| 577 | 1.1.3.3.14 | **DELIVERABLE:Tech and Operations Material Risk Inventory** | 3d | 2015-06-26 | 2015-06-30 |  | 523d |  |
| 578 | 1.1.3.3.14.1 | **MILESTONE: Tech and Operations Material Risk Inventory** | 3d | 2015-06-26 | 2015-06-30 |  | 523d |  |
| 579 |  | Deliver Final Inventory to SBNA and SHUSA ERM | 2d | 2015-06-26 | 2015-06-29 |  | 524d | start no earlier than 2015-06-26 |
| 580 |  | Present inventory to ERMC | 2d | 2015-06-29 | 2015-06-30 |  | 523d | start no earlier than 2015-06-29 |
| 581 |  | Tech and Operations Material Risk Inventory Prepared | 0d | 2015-06-30 | 2015-06-30 |  | 524d | start no earlier than 2015-06-30 |
| 582 | 1.1.3.3.15 | **DELIVERABLE:Finance Material Risk Inventory** | 3d | 2015-06-26 | 2015-06-30 |  | 523d |  |
| 583 | 1.1.3.3.15.1 | **MILESTONE: Finance Material Risk Inventory** | 3d | 2015-06-26 | 2015-06-30 |  | 523d |  |
| 584 |  | Deliver Final Inventory to SBNA and SHUSA ERM | 2d | 2015-06-26 | 2015-06-29 |  | 524d | start no earlier than 2015-06-26 |
| 585 |  | Present inventory to ERMC | 2d | 2015-06-29 | 2015-06-30 |  | 523d | start no earlier than 2015-06-29 |
| 586 |  | Finance Material Risk Inventory Prepared | 0d | 2015-06-30 | 2015-06-30 |  | 524d | start no earlier than 2015-06-30 |
| 587 | 1.1.3.3.16 | **DELIVERABLE:SBNA Aggregation Workshops** | 44d? | 2015-07-01 | 2015-08-31 |  | 479d |  |
| 588 | 1.1.3.3.16.1 | **MILESTONE: Credit Risk Aggregation** | 20d? | 2015-07-01 | 2015-07-28 |  | 503d |  |
| 589 |  | ERM disseminates Workshop Pre-Read Materials to Risk Managers | 8d? | 2015-07-01 | 2015-07-10 |  | 505d | finish no earlier than 2015-07-10 |
| 590 |  | ERM facilitates Aggregation and Enrichment Activities | 10d? | 2015-07-13 | 2015-07-24 | 589 | 505d |  |
| 591 |  | Risk Manager presents inventory to level II subcommittee | 2d? | 2015-07-27 | 2015-07-28 |  | 503d | finish no earlier than 2015-07-28 |
| 592 |  | Credit Risk Aggregation Prepared | 0d | 2015-07-28 | 2015-07-28 |  | 504d | start no earlier than 2015-07-28 |
| 593 | 1.1.3.3.16.2 | **MILESTONE: Operational Risk Material Risk Aggregation** | 20d? | 2015-07-01 | 2015-07-28 |  | 503d |  |
| 594 |  | ERM disseminates Workshop Pre-Read Materials to Risk Managers | 8d? | 2015-07-01 | 2015-07-10 |  | 505d | finish no earlier than 2015-07-10 |
| 595 |  | ERM facilitates Aggregation and Enrichment Activities | 10d? | 2015-07-13 | 2015-07-24 | 594 | 505d |  |
| 596 |  | Risk Manager presents inventory to level II subcommittee | 2d? | 2015-07-27 | 2015-07-28 |  | 503d | finish no earlier than 2015-07-28 |
| 597 |  | Operational Risk Material Risk Aggregation Prepared | 0d | 2015-07-28 | 2015-07-28 |  | 504d | start no earlier than 2015-07-28 |
| 598 | 1.1.3.3.16.3 | **MILESTONE: Compliance Material Risk Aggregation** | 20d? | 2015-07-01 | 2015-07-28 |  | 503d |  |
| 599 |  | ERM disseminates Workshop Pre-Read Materials to Risk Managers | 8d? | 2015-07-01 | 2015-07-10 |  | 505d | finish no earlier than 2015-07-10 |
| 600 |  | ERM facilitates Aggregation and Enrichment Activities | 10d? | 2015-07-13 | 2015-07-24 | 599 | 505d |  |
| 601 |  | Risk Manager presents inventory to level II subcommittee | 2d? | 2015-07-27 | 2015-07-28 |  | 503d | finish no earlier than 2015-07-28 |
| 602 |  | Compliance Material Risk Aggregation Prepared | 0d | 2015-07-28 | 2015-07-28 |  | 504d | start no earlier than 2015-07-28 |
| 603 | 1.1.3.3.16.4 | **MILESTONE: Model Material Risk Aggregation** | 20d? | 2015-07-01 | 2015-07-28 |  | 503d |  |
| 604 |  | ERM disseminates Workshop Pre-Read Materials to Risk Managers | 8d? | 2015-07-01 | 2015-07-10 |  | 505d | finish no earlier than 2015-07-10 |
| 605 |  | ERM facilitates Aggregation and Enrichment Activities | 10d? | 2015-07-13 | 2015-07-24 | 604 | 505d |  |
| 606 |  | Risk Manager presents inventory to level II subcommittee | 2d? | 2015-07-27 | 2015-07-28 |  | 503d | finish no earlier than 2015-07-28 |
| 607 |  | Model Material Risk Aggregation Prepared | 0d | 2015-07-28 | 2015-07-28 |  | 504d | start no earlier than 2015-07-28 |
| 608 | 1.1.3.3.16.5 | **MILESTONE: Liquidity/Market Material Risk Aggregation** | 20d? | 2015-07-01 | 2015-07-28 |  | 503d |  |
| 609 |  | ERM disseminates Workshop Pre-Read Materials to Risk Managers | 8d? | 2015-07-01 | 2015-07-10 |  | 505d | finish no earlier than 2015-07-10 |
| 610 |  | ERM facilitates Aggregation and Enrichment Activities | 10d? | 2015-07-13 | 2015-07-24 | 609 | 505d |  |
| 611 |  | Risk Manager presents inventory to level II subcommittee | 2d? | 2015-07-27 | 2015-07-28 |  | 503d | finish no earlier than 2015-07-28 |
| 612 |  | Liquidity/Market Material Risk Aggregation Prepared | 0d | 2015-07-28 | 2015-07-28 |  | 504d | start no earlier than 2015-07-28 |
| 613 | 1.1.3.3.16.6 | **MILESTONE: Reputational/Strategic Material Risk Aggregation** | 20d? | 2015-07-01 | 2015-07-28 |  | 503d |  |
| 614 |  | ERM disseminates Workshop Pre-Read Materials to Risk Managers | 8d? | 2015-07-01 | 2015-07-10 |  | 505d | finish no earlier than 2015-07-10 |
| 615 |  | ERM facilitates Aggregation and Enrichment Workshop | 10d? | 2015-07-13 | 2015-07-24 | 614 | 505d |  |
| 616 |  | Risk Manager presents inventory to level II subcommittee | 2d? | 2015-07-27 | 2015-07-28 |  | 503d | finish no earlier than 2015-07-28 |
| 617 |  | Reputational/Strategic Material Risk Aggregation Prepared | 0d | 2015-07-28 | 2015-07-28 |  | 504d | start no earlier than 2015-07-28 |
| 618 |  | Present Results to SBNA ERMC | 25d | 2015-07-28 | 2015-08-31 |  | 479d | start no earlier than 2015-07-28 |
| 619 |  | Present Results to SBNA BERC | 25d | 2015-07-28 | 2015-08-31 |  | 479d | start no earlier than 2015-07-28 |
| 620 | 1.1.3.4 | **SCUSA - Business Entity Material Risk Program** | 46d? | 2015-06-29 | 2015-08-31 |  | 479d |  |
| 621 | 1.1.3.4.1 | **DELIVERABLE: Automotive Finance Material Risk Inventory** | 2d | 2015-06-29 | 2015-06-30 |  | 523d |  |
| 622 | 1.1.3.4.1.1 | **MILESTONE:Automotive Finance Material Risk Inventory** | 2d | 2015-06-29 | 2015-06-30 |  | 523d |  |
| 623 |  | Deliver Final Inventory to SCUSA SHUSA ERM | 2d | 2015-06-29 | 2015-06-30 |  | 523d | start no earlier than 2015-06-29 |
| 624 |  | Present inventory to ERMC | 2d | 2015-06-29 | 2015-06-30 |  | 523d | start no earlier than 2015-06-29 |
| 625 |  | Automotive Finance Material Risk Inventory Prepared | 0d | 2015-06-30 | 2015-06-30 |  | 524d | start no earlier than 2015-06-30 |
| 626 | 1.1.3.4.2 | **DELIVERABLE: Personal Lending Material Risk Inventory** | 2d | 2015-06-29 | 2015-06-30 |  | 523d |  |
| 627 | 1.1.3.4.2.1 | **MILESTONE:Personal Lending Material Risk Inventory** | 2d | 2015-06-29 | 2015-06-30 |  | 523d |  |
| 628 |  | Deliver Final Inventory to SCUSA SHUSA ERM | 2d | 2015-06-29 | 2015-06-30 |  | 523d | start no earlier than 2015-06-29 |
| 629 |  | Present inventory to ERMC | 2d | 2015-06-29 | 2015-06-30 |  | 523d | start no earlier than 2015-06-29 |
| 630 |  | Personal Lending Material Risk Inventory Prepared | 0d | 2015-06-30 | 2015-06-30 |  | 524d | start no earlier than 2015-06-30 |

| ID | WBS | Task | Duration | Start | Finish | Predecessors | Total float | Constraint |
| --- | --- | --- | --- | --- | --- | --- | --- | --- |
| 631 | 1.1.3.4.3 | **DELIVERABLE: Human Resources Material Risk Inventory** | 2d | 2015-06-29 | 2015-06-30 |  | 523d |  |
| 632 | 1.1.3.4.3.1 | **MILESTONE:Human Resources Material Risk Inventory** | 2d | 2015-06-29 | 2015-06-30 |  | 523d |  |
| 633 |  | Deliver Final Inventory to SCUSA SHUSA ERM | 2d | 2015-06-29 | 2015-06-30 |  | 523d | start no earlier than 2015-06-29 |
| 634 |  | Present inventory to ERMC | 2d | 2015-06-29 | 2015-06-30 |  | 523d | start no earlier than 2015-06-29 |
| 635 |  | Human Resources Material Risk Inventory Prepared | 0d | 2015-06-30 | 2015-06-30 |  | 524d | start no earlier than 2015-06-30 |
| 636 | 1.1.3.4.4 | **DELIVERABLE: Finance and Accounting Material Risk Inventory** | 2d | 2015-06-29 | 2015-06-30 |  | 523d |  |
| 637 | 1.1.3.4.4.1 | **MILESTONE:Finance and Accounting Material Risk Inventory** | 2d | 2015-06-29 | 2015-06-30 |  | 523d |  |
| 638 |  | Deliver Final Inventory to SCUSA SHUSA ERM | 2d | 2015-06-29 | 2015-06-30 |  | 523d | start no earlier than 2015-06-29 |
| 639 |  | Present inventory to ERMC | 2d | 2015-06-29 | 2015-06-30 |  | 523d | start no earlier than 2015-06-29 |
| 640 |  | Finance and Accounting Material Risk Inventory Prepared | 0d | 2015-06-30 | 2015-06-30 |  | 524d | start no earlier than 2015-06-30 |
| 641 | 1.1.3.4.5 | **DELIVERABLE: Technology and Operations Material Risk Inventory** | 2d | 2015-06-29 | 2015-06-30 |  | 523d |  |
| 642 | 1.1.3.4.5.1 | **MILESTONE:Technology and Operations Material Risk Inventory** | 2d | 2015-06-29 | 2015-06-30 |  | 523d |  |
| 643 |  | Deliver Final Inventory to SCUSA SHUSA ERM | 2d | 2015-06-29 | 2015-06-30 |  | 523d | start no earlier than 2015-06-29 |
| 644 |  | Present inventory to ERMC | 2d | 2015-06-29 | 2015-06-30 |  | 523d | start no earlier than 2015-06-29 |
| 645 |  | Technology and Operations Material Risk Inventory Prepared | 0d | 2015-06-30 | 2015-06-30 |  | 524d | start no earlier than 2015-06-30 |
| 646 | 1.1.3.4.6 | **DELIVERABLE: Legal Material Risk Inventory** | 2d | 2015-06-29 | 2015-06-30 |  | 523d |  |
| 647 | 1.1.3.4.6.1 | **MILESTONE:Legal Material Risk Inventory** | 2d | 2015-06-29 | 2015-06-30 |  | 523d |  |
| 648 |  | Deliver Final Inventory to SCUSA SHUSA ERM | 2d | 2015-06-29 | 2015-06-30 |  | 523d | start no earlier than 2015-06-29 |
| 649 |  | Present inventory to ERMC | 2d | 2015-06-29 | 2015-06-30 |  | 523d | start no earlier than 2015-06-29 |
| 650 |  | Legal Material Risk Inventory Prepared | 0d | 2015-06-30 | 2015-06-30 |  | 524d | start no earlier than 2015-06-30 |
| 651 | 1.1.3.4.7 | **DELIVERABLE: SCUSA Aggregation Workshops** | 20d? | 2015-07-01 | 2015-07-28 |  | 503d |  |
| 652 | 1.1.3.4.7.1 | **MILESTONE: Credit Risk Aggregation** | 20d? | 2015-07-01 | 2015-07-28 |  | 503d |  |
| 653 |  | ERM disseminates Workshop Pre-Read Materials to Risk Managers | 8d? | 2015-07-01 | 2015-07-10 |  | 505d | finish no earlier than 2015-07-10 |
| 654 |  | ERM facilitates Aggregation and Enrichment Activities | 10d? | 2015-07-13 | 2015-07-24 | 653 | 505d |  |
| 655 |  | Risk Manager presents inventory to level II subcommittee | 2d? | 2015-07-27 | 2015-07-28 |  | 503d | finish no earlier than 2015-07-28 |
| 656 |  | Credit Risk Aggregation Prepared | 0d | 2015-07-28 | 2015-07-28 |  | 504d | start no earlier than 2015-07-28 |
| 657 | 1.1.3.4.7.2 | **MILESTONE: Operational Risk Material Risk Aggregation** | 20d? | 2015-07-01 | 2015-07-28 |  | 503d |  |
| 658 |  | ERM disseminates Workshop Pre-Read Materials to Risk Managers | 8d? | 2015-07-01 | 2015-07-10 |  | 505d | finish no earlier than 2015-07-10 |
| 659 |  | ERM facilitates Aggregation and Enrichment Activities | 10d? | 2015-07-13 | 2015-07-24 | 658 | 505d |  |
| 660 |  | Risk Manager presents inventory to level II subcommittee | 2d? | 2015-07-27 | 2015-07-28 |  | 503d | finish no earlier than 2015-07-28 |
| 661 |  | Operational Risk Material Risk Aggregation Prepared | 0d | 2015-07-28 | 2015-07-28 |  | 504d | start no earlier than 2015-07-28 |
| 662 | 1.1.3.4.7.3 | **MILESTONE: Compliance Material Risk Aggregation** | 20d? | 2015-07-01 | 2015-07-28 |  | 503d |  |
| 663 |  | ERM disseminates Workshop Pre-Read Materials to Risk Managers | 8d? | 2015-07-01 | 2015-07-10 |  | 505d | finish no earlier than 2015-07-10 |
| 664 |  | ERM facilitates Aggregation and Enrichment Activities | 10d? | 2015-07-13 | 2015-07-24 | 663 | 505d |  |
| 665 |  | Risk Manager presents inventory to level II subcommittee | 2d? | 2015-07-27 | 2015-07-28 |  | 503d | finish no earlier than 2015-07-28 |
| 666 |  | Compliance Material Risk Aggregation Prepared | 0d | 2015-07-28 | 2015-07-28 |  | 504d | start no earlier than 2015-07-28 |
| 667 | 1.1.3.4.7.4 | **MILESTONE: Model Material Risk Aggregation** | 20d? | 2015-07-01 | 2015-07-28 |  | 503d |  |
| 668 |  | ERM disseminates Workshop Pre-Read Materials to Risk Managers | 8d? | 2015-07-01 | 2015-07-10 |  | 505d | finish no earlier than 2015-07-10 |
| 669 |  | ERM facilitates Aggregation and Enrichment Activities | 10d? | 2015-07-13 | 2015-07-24 | 668 | 505d |  |
| 670 |  | Risk Manager presents inventory to level II subcommittee | 2d? | 2015-07-27 | 2015-07-28 |  | 503d | finish no earlier than 2015-07-28 |
| 671 |  | Model Material Risk Aggregation Prepared | 0d | 2015-07-28 | 2015-07-28 |  | 504d | start no earlier than 2015-07-28 |
| 672 | 1.1.3.4.7.5 | **MILESTONE: Liquidity/Market Material Risk Aggregation** | 20d? | 2015-07-01 | 2015-07-28 |  | 503d |  |
| 673 |  | ERM disseminates Workshop Pre-Read Materials to Risk Managers | 8d? | 2015-07-01 | 2015-07-10 |  | 505d | finish no earlier than 2015-07-10 |
| 674 |  | ERM facilitates Aggregation and Enrichment Activities | 10d? | 2015-07-13 | 2015-07-24 | 673 | 505d |  |
| 675 |  | Risk Manager presents inventory to level II subcommittee | 2d? | 2015-07-27 | 2015-07-28 |  | 503d | finish no earlier than 2015-07-28 |
| 676 |  | Liquidity/Market Material Risk Aggregation Prepared | 0d | 2015-07-28 | 2015-07-28 |  | 504d | start no earlier than 2015-07-28 |
| 677 | 1.1.3.4.7.6 | **MILESTONE: Reputational/Strategic Material Risk Aggregation** | 20d? | 2015-07-01 | 2015-07-28 |  | 503d |  |
| 678 |  | ERM disseminates Workshop Pre-Read Materials to Risk Managers | 8d? | 2015-07-01 | 2015-07-10 |  | 515d | finish no earlier than 2015-07-10 |
| 679 |  | ERM facilitates Aggregation and Enrichment Workshop | 5d? | 2015-07-20 | 2015-07-24 |  | 505d | finish no earlier than 2015-07-24 |
| 680 |  | Risk Manager presents inventory to level II subcommittee | 2d? | 2015-07-27 | 2015-07-28 |  | 503d | finish no earlier than 2015-07-28 |
| 681 |  | Reputational/Strategic Material Risk Aggregation Prepared | 0d | 2015-07-28 | 2015-07-28 |  | 504d | start no earlier than 2015-07-28 |
| 682 |  | MILESTONE:Present Results to SCUSA ERMC | 25d | 2015-07-28 | 2015-08-31 |  | 479d | finish no earlier than 2015-08-31 |
| 683 |  | MILESTONE:Present Results to SCUSA BERC | 25d | 2015-07-28 | 2015-08-31 |  | 479d | finish no earlier than 2015-08-31 |
| 684 | 1.1.3.5 | **New York Santander Investment Securities (SIS) - Business Entity Material Risk Program** | 46d? | 2015-06-29 | 2015-08-31 |  | 479d |  |
| 685 | 1.1.3.5.1 | **DELIVERABLE:GBM-Cash Equities Brokerage Material Risk Inventory** | 2d | 2015-06-29 | 2015-06-30 |  | 523d |  |
| 686 | 1.1.3.5.1.1 | **MILESTONE:GBM-Cash Equities Brokerage Material Risk Inventory** | 2d | 2015-06-29 | 2015-06-30 |  | 523d |  |
| 687 |  | Deliver Final Inventory to SIS and SHUSA ERM | 2d | 2015-06-29 | 2015-06-30 |  | 523d | start no earlier than 2015-06-29 |
| 688 |  | Present inventory to ERMC | 2d | 2015-06-29 | 2015-06-30 |  | 523d | start no earlier than 2015-06-29 |
| 689 |  | Cash Equities Brokerage Material Risk Inventory Prepared | 0d | 2015-06-30 | 2015-06-30 |  | 524d | start no earlier than 2015-06-30 |
| 690 | 1.1.3.5.2 | **DELIVERABLE:GBM- Debt Underwriting Material Risk Inventory** | 2d | 2015-06-29 | 2015-06-30 |  | 523d |  |
| 691 | 1.1.3.5.2.1 | **MILESTONE:GBM- Debt Underwriting Material Risk Inventory** | 2d | 2015-06-29 | 2015-06-30 |  | 523d |  |
| 692 |  | Deliver Final Inventory to SIS and SHUSA ERM | 2d | 2015-06-29 | 2015-06-30 |  | 523d | start no earlier than 2015-06-29 |
| 693 |  | Present inventory to ERMC | 2d | 2015-06-29 | 2015-06-30 |  | 523d | start no earlier than 2015-06-29 |
| 694 |  | Debt Underwriting Material Risk Inventory Prepared | 0d | 2015-06-30 | 2015-06-30 |  | 524d | start no earlier than 2015-06-30 |
| 695 | 1.1.3.5.3 | **DELIVERABLE:GBM Equity Underwriting Material Risk Inventory** | 2d | 2015-06-29 | 2015-06-30 |  | 523d |  |
| 696 | 1.1.3.5.3.1 | **MILESTONE:GBM Equity Underwriting Material Risk Inventory** | 2d | 2015-06-29 | 2015-06-30 |  | 523d |  |
| 697 |  | Deliver Final Inventory to SIS and SHUSA ERM | 2d | 2015-06-29 | 2015-06-30 |  | 523d | start no earlier than 2015-06-29 |
| 698 |  | Present inventory to ERMC | 2d | 2015-06-29 | 2015-06-30 |  | 523d | start no earlier than 2015-06-29 |
| 699 |  | Equity Underwriting Material Risk Inventory Prepared | 0d | 2015-06-30 | 2015-06-30 |  | 524d | start no earlier than 2015-06-30 |
| 700 | 1.1.3.5.4 | **DELIVERABLE:GBM- Fixed Income/Bond TradingMaterial Risk Inventory** | 2d | 2015-06-29 | 2015-06-30 |  | 523d |  |

| ID | WBS | Task | Duration | Start | Finish | Predecessors | Total float | Constraint |
| --- | --- | --- | --- | --- | --- | --- | --- | --- |
| 701 | 1.1.3.5.4.1 | **MILESTONE:GBM- Fixed Income/Bond TradingMaterial Risk Inventory** | 2d | 2015-06-29 | 2015-06-30 |  | 523d |  |
| 702 |  | Deliver Final Inventory to SIS and SHUSA ERM | 2d | 2015-06-29 | 2015-06-30 |  | 523d | start no earlier than 2015-06-29 |
| 703 |  | Present inventory to ERMC | 2d | 2015-06-29 | 2015-06-30 |  | 523d | start no earlier than 2015-06-29 |
| 704 |  | Fixed Income/Bond TradingMaterial Risk Inventory Prepared | 0d | 2015-06-30 | 2015-06-30 |  | 524d | start no earlier than 2015-06-30 |
| 705 | 1.1.3.5.5 | **DELIVERABLE:GBM - Futures Brokerage Material Risk Inventory** | 2d | 2015-06-29 | 2015-06-30 |  | 523d |  |
| 706 | 1.1.3.5.5.1 | **MILESTONE:GBM - Futures Brokerage Material Risk Inventory** | 2d | 2015-06-29 | 2015-06-30 |  | 523d |  |
| 707 |  | Deliver Final Inventory to SIS and SHUSA ERM | 2d | 2015-06-29 | 2015-06-30 |  | 523d | start no earlier than 2015-06-29 |
| 708 |  | Present inventory to ERMC | 2d | 2015-06-29 | 2015-06-30 |  | 523d | start no earlier than 2015-06-29 |
| 709 |  | Futures Brokerage Material Risk Inventory Prepared | 0d | 2015-06-30 | 2015-06-30 |  | 524d | start no earlier than 2015-06-30 |
| 710 | 1.1.3.5.6 | **DELIVERABLE:GBM - Fixed Income and Equity Research Material Risk Inventory** | 2d | 2015-06-29 | 2015-06-30 |  | 523d |  |
| 711 | 1.1.3.5.6.1 | **MILESTONE:GBM - Fixed Income and Equity Research Material Risk Inventory** | 2d | 2015-06-29 | 2015-06-30 |  | 523d |  |
| 712 |  | Deliver Final Inventory to SIS and SHUSA ERM | 2d | 2015-06-29 | 2015-06-30 |  | 523d | start no earlier than 2015-06-29 |
| 713 |  | Present inventory to ERMC | 2d | 2015-06-29 | 2015-06-30 |  | 523d | start no earlier than 2015-06-29 |
| 714 |  | Fixed Income and Equity Research Material Risk Inventory Prepared | 0d | 2015-06-30 | 2015-06-30 |  | 524d | start no earlier than 2015-06-30 |
| 715 | 1.1.3.5.7 | **DELIVERABLE:Human Resources Material Risk Inventory** | 2d | 2015-06-29 | 2015-06-30 |  | 523d |  |
| 716 | 1.1.3.5.7.1 | **MILESTONE:Human Resources Material Risk Inventory** | 2d | 2015-06-29 | 2015-06-30 |  | 523d |  |
| 717 |  | Deliver Final Inventory to SIS and SHUSA ERM | 2d | 2015-06-29 | 2015-06-30 |  | 523d | start no earlier than 2015-06-29 |
| 718 |  | Present inventory to ERMC | 2d | 2015-06-29 | 2015-06-30 |  | 523d | start no earlier than 2015-06-29 |
| 719 |  | Human Resources Material Risk Inventory Prepared | 0d | 2015-06-30 | 2015-06-30 |  | 524d | start no earlier than 2015-06-30 |
| 720 | 1.1.3.5.8 | **DELIVERABLE:Finance Material Risk Inventory** | 2d | 2015-06-29 | 2015-06-30 |  | 523d |  |
| 721 | 1.1.3.5.8.1 | **MILESTONE:Finance Material Risk Inventory** | 2d | 2015-06-29 | 2015-06-30 |  | 523d |  |
| 722 |  | Deliver Final Inventory to SIS and SHUSA ERM | 2d | 2015-06-29 | 2015-06-30 |  | 523d | start no earlier than 2015-06-29 |
| 723 |  | Present inventory to ERMC | 2d | 2015-06-29 | 2015-06-30 |  | 523d | start no earlier than 2015-06-29 |
| 724 |  | Finance Material Risk Inventory Prepared | 0d | 2015-06-30 | 2015-06-30 |  | 524d | start no earlier than 2015-06-30 |
| 725 | 1.1.3.5.9 | **DELIVERABLE:Technology and Operations Material Risk Inventory** | 2d | 2015-06-29 | 2015-06-30 |  | 523d |  |
| 726 | 1.1.3.5.9.1 | **MILESTONE:Technology and Operations Material Risk Inventory** | 2d | 2015-06-29 | 2015-06-30 |  | 523d |  |
| 727 |  | Deliver Final Inventory to SIS and SHUSA ERM | 2d | 2015-06-29 | 2015-06-30 |  | 523d | start no earlier than 2015-06-29 |
| 728 |  | Present inventory to ERMC | 2d | 2015-06-29 | 2015-06-30 |  | 523d | start no earlier than 2015-06-29 |
| 729 |  | Technology and Operations Material Risk Inventory Prepared | 0d | 2015-06-30 | 2015-06-30 |  | 524d | start no earlier than 2015-06-30 |
| 730 | 1.1.3.5.10 | **DELIVERABLE:Legal Material Risk Inventory** | 2d | 2015-06-29 | 2015-06-30 |  | 523d |  |
| 731 | 1.1.3.5.10.1 | **MILESTONE:Legal Material Risk Inventory** | 2d | 2015-06-29 | 2015-06-30 |  | 523d |  |
| 732 |  | Deliver Final Inventory to SIS and SHUSA ERM | 2d | 2015-06-29 | 2015-06-30 |  | 523d | start no earlier than 2015-06-29 |
| 733 |  | Present inventory to ERMC | 2d | 2015-06-29 | 2015-06-30 |  | 523d | start no earlier than 2015-06-29 |
| 734 |  | Legal Material Risk Inventory Prepared | 0d | 2015-06-30 | 2015-06-30 |  | 524d | start no earlier than 2015-06-30 |
| 735 | 1.1.3.5.11 | **DELIVERABLE:NY SIS Aggregation Workshops** | 20d? | 2015-07-01 | 2015-07-28 |  | 503d |  |
| 736 | 1.1.3.5.11.1 | **MILESTONE: Credit Risk Aggregation** | 20d? | 2015-07-01 | 2015-07-28 |  | 503d |  |
| 737 |  | ERM disseminates Workshop Pre-Read Materials to Risk Managers | 8d? | 2015-07-01 | 2015-07-10 |  | 505d | finish no earlier than 2015-07-10 |
| 738 |  | ERM facilitates Aggregation and Enrichment Activities | 10d? | 2015-07-13 | 2015-07-24 | 737 | 505d |  |
| 739 |  | Risk Manager presents inventory to level II subcommittee | 2d? | 2015-07-27 | 2015-07-28 |  | 503d | finish no earlier than 2015-07-28 |
| 740 |  | Credit Risk Aggregation Prepared | 0d | 2015-07-28 | 2015-07-28 |  | 504d | start no earlier than 2015-07-28 |
| 741 | 1.1.3.5.11.2 | **MILESTONE: Operational Risk Material Risk Aggregation** | 20d? | 2015-07-01 | 2015-07-28 |  | 503d |  |
| 742 |  | ERM disseminates Workshop Pre-Read Materials to Risk Managers | 8d? | 2015-07-01 | 2015-07-10 |  | 505d | finish no earlier than 2015-07-10 |
| 743 |  | ERM facilitates Aggregation and Enrichment Activities | 10d? | 2015-07-13 | 2015-07-24 | 742 | 505d |  |
| 744 |  | Risk Manager presents inventory to level II subcommittee | 2d? | 2015-07-27 | 2015-07-28 |  | 503d | finish no earlier than 2015-07-28 |
| 745 |  | Operational Risk Material Risk Aggregation Prepared | 0d | 2015-07-28 | 2015-07-28 |  | 504d | start no earlier than 2015-07-28 |
| 746 | 1.1.3.5.11.3 | **MILESTONE: Compliance Material Risk Aggregation** | 20d? | 2015-07-01 | 2015-07-28 |  | 503d |  |
| 747 |  | ERM disseminates Workshop Pre-Read Materials to Risk Managers | 8d? | 2015-07-01 | 2015-07-10 |  | 505d | finish no earlier than 2015-07-10 |
| 748 |  | ERM facilitates Aggregation and Enrichment Activities | 10d? | 2015-07-13 | 2015-07-24 | 747 | 505d |  |
| 749 |  | Risk Manager presents inventory to level II subcommittee | 2d? | 2015-07-27 | 2015-07-28 |  | 503d | finish no earlier than 2015-07-28 |
| 750 |  | Compliance Material Risk Aggregation Prepared | 0d | 2015-07-28 | 2015-07-28 |  | 504d | start no earlier than 2015-07-28 |
| 751 | 1.1.3.5.11.4 | **MILESTONE: Model Material Risk Aggregation** | 20d? | 2015-07-01 | 2015-07-28 |  | 503d |  |
| 752 |  | ERM disseminates Workshop Pre-Read Materials to Risk Managers | 8d? | 2015-07-01 | 2015-07-10 |  | 505d | finish no earlier than 2015-07-10 |
| 753 |  | ERM facilitates Aggregation and Enrichment Workshop | 10d? | 2015-07-13 | 2015-07-24 | 752 | 505d |  |
| 754 |  | Risk Manager presents inventory to level II subcommittee | 2d? | 2015-07-27 | 2015-07-28 |  | 503d | finish no earlier than 2015-07-28 |
| 755 |  | Model Material Risk Aggregation Prepared | 0d | 2015-07-28 | 2015-07-28 |  | 504d | start no earlier than 2015-07-28 |
| 756 | 1.1.3.5.11.5 | **MILESTONE: Liquidity/Market Material Risk Aggregation** | 20d? | 2015-07-01 | 2015-07-28 |  | 503d |  |
| 757 |  | ERM disseminates Workshop Pre-Read Materials to Risk Managers | 8d? | 2015-07-01 | 2015-07-10 |  | 505d | finish no earlier than 2015-07-10 |
| 758 |  | ERM facilitates Aggregation and Enrichment Activities | 10d? | 2015-07-13 | 2015-07-24 | 757 | 505d |  |
| 759 |  | Risk Manager presents inventory to level II subcommittee | 2d? | 2015-07-27 | 2015-07-28 |  | 503d | finish no earlier than 2015-07-28 |
| 760 |  | Liquidity/Market Material Risk Aggregation Prepared | 0d | 2015-07-28 | 2015-07-28 |  | 504d | start no earlier than 2015-07-28 |
| 761 | 1.1.3.5.11.6 | **MILESTONE: Reputational/Strategic Material Risk Aggregation** | 20d? | 2015-07-01 | 2015-07-28 |  | 503d |  |
| 762 |  | ERM disseminates Workshop Pre-Read Materials to Risk Managers | 8d? | 2015-07-01 | 2015-07-10 |  | 505d | finish no earlier than 2015-07-10 |
| 763 |  | ERM facilitates Aggregation and Enrichment Activities | 10d? | 2015-07-13 | 2015-07-24 | 762 | 505d |  |
| 764 |  | Risk Manager presents inventory to level II subcommittee | 2d? | 2015-07-27 | 2015-07-28 |  | 503d | finish no earlier than 2015-07-28 |
| 765 |  | Reputational/Strategic Material Risk Aggregation Prepared | 0d | 2015-07-28 | 2015-07-28 |  | 504d | start no earlier than 2015-07-28 |
| 766 |  | MILESTONE:Present Results to NY SIS ERMC | 25d | 2015-07-28 | 2015-08-31 |  | 479d | finish no earlier than 2015-08-31 |
| 767 |  | MILESTONE:Present Results to NY SIS BERC | 25d | 2015-07-28 | 2015-08-31 |  | 479d | finish no earlier than 2015-08-31 |
| 768 | 1.1.3.6 | **Puerto Rico - Business Entity Material Risk Program** | 68d? | 2015-05-28 | 2015-08-31 |  | 479d |  |
| 769 | 1.1.3.6.1 | **DELIVERABLE:Retail Banking Material Risk Inventory** | 2d | 2015-06-29 | 2015-06-30 |  | 523d |  |
| 770 | 1.1.3.6.1.1 | **MILESTONE: Personal Loans Banking Material Risk Inventory** | 2d | 2015-06-29 | 2015-06-30 |  | 523d |  |

| ID | WBS | Task | Duration | Start | Finish | Total float | Constraint |
| --- | --- | --- | --- | --- | --- | --- | --- |
| 771 |  | Deliver Final Inventory to PR and SHUSA ERM | 2d | 2015-06-29 | 2015-06-30 | 523d | start no earlier than 2015-06-29 |
| 772 |  | Personal Loans Banking Material Risk Inventory Prepared | 0d | 2015-06-30 | 2015-06-30 | 524d | start no earlier than 2015-06-30 |
| 773 | 1.1.3.6.1.2 | **MILESTONE: Small Business Banking Material Risk Inventory** | 2d | 2015-06-29 | 2015-06-30 | 523d |  |
| 774 |  | Deliver Final Inventory to PR and SHUSA ERM | 2d | 2015-06-29 | 2015-06-30 | 523d | start no earlier than 2015-06-29 |
| 775 |  | Small Business Banking Material Risk Inventory Prepared | 0d | 2015-06-30 | 2015-06-30 | 524d | start no earlier than 2015-06-30 |
| 776 | 1.1.3.6.1.3 | **MILESTONE: Santander Insurance Agency Material Risk Inventory** | 2d | 2015-06-29 | 2015-06-30 | 523d |  |
| 777 |  | Deliver Final Inventory to PR and SHUSA ERM | 2d | 2015-06-29 | 2015-06-30 | 523d | start no earlier than 2015-06-29 |
| 778 |  | Santander Insurance Agency Material Risk Inventory Prepared | 0d | 2015-06-30 | 2015-06-30 | 524d | start no earlier than 2015-06-30 |
| 779 | 1.1.3.6.1.4 | **MILESTONE: Credit Cards Material Risk Inventory** | 2d | 2015-06-29 | 2015-06-30 | 523d |  |
| 780 |  | Deliver Final Inventory to PR and SHUSA ERM | 2d | 2015-06-29 | 2015-06-30 | 523d | start no earlier than 2015-06-29 |
| 781 |  | Credit Cards Material Risk Inventory Prepared | 0d | 2015-06-30 | 2015-06-30 | 524d | start no earlier than 2015-06-30 |
| 782 | 1.1.3.6.1.5 | **MILESTONE: Mortgages Material Risk Inventory** | 2d | 2015-06-29 | 2015-06-30 | 523d |  |
| 783 |  | Deliver Final Inventory to PR and SHUSA ERM | 2d | 2015-06-29 | 2015-06-30 | 523d | start no earlier than 2015-06-29 |
| 784 |  | Mortgages Material Risk Inventory Prepared | 0d | 2015-06-30 | 2015-06-30 | 524d | start no earlier than 2015-06-30 |
| 785 | 1.1.3.6.2 | **DELIVERABLE:Retail Banking: Create Retail Banking Material Risk Inventory** | 24d | 2015-05-28 | 2015-06-30 | 523d |  |
| 786 | 1.1.3.6.2.1 | **MILESTONE:Retail Banking: Create Retail Banking Material Risk Inventory** | 24d | 2015-05-28 | 2015-06-30 | 523d |  |
| 787 |  | Create Segment Material Risk Inventory (Aggregation) | 24d | 2015-05-28 | 2015-06-30 | 523d | start no earlier than 2015-05-28 |
| 788 |  | Segment head presents inventory to ERMC | 2d | 2015-06-29 | 2015-06-30 | 523d | start no earlier than 2015-06-29 |
| 789 |  | Retail Banking Material Risk Inventory Prepared | 0d | 2015-06-30 | 2015-06-30 | 524d | start no earlier than 2015-06-30 |
| 790 | 1.1.3.6.3 | **DELIVERABLE:Global Banking/Commercial Banking and CRE/Speciality and Gov't Banking Material Risk Inventory** | 2d | 2015-06-29 | 2015-06-30 | 523d |  |
| 791 | 1.1.3.6.3.1 | **MILESTONE: GBM Material Risk Inventory** | 2d | 2015-06-29 | 2015-06-30 | 523d |  |
| 792 |  | Deliver Final Inventory to PR and SHUSA ERM | 2d | 2015-06-29 | 2015-06-30 | 523d | start no earlier than 2015-06-29 |
| 793 |  | GBM Material Risk Inventory Prepared | 0d | 2015-06-30 | 2015-06-30 | 524d | start no earlier than 2015-06-30 |
| 794 | 1.1.3.6.3.2 | **MILESTONE: Enterprise Material Risk Inventory** | 2d | 2015-06-29 | 2015-06-30 | 523d |  |
| 795 |  | Deliver Final Inventory to PR and SHUSA ERM | 2d | 2015-06-29 | 2015-06-30 | 523d | start no earlier than 2015-06-29 |
| 796 |  | Enterprise Material Risk Inventory Prepared | 0d | 2015-06-30 | 2015-06-30 | 524d | start no earlier than 2015-06-30 |
| 797 | 1.1.3.6.3.3 | **MILESTONE: Institutional/Public Sector Material Risk Inventory** | 2d | 2015-06-29 | 2015-06-30 | 523d |  |
| 798 |  | Deliver Final Inventory to PR and SHUSA ERM | 2d | 2015-06-29 | 2015-06-30 | 523d | start no earlier than 2015-06-29 |
| 799 |  | Institutional/Public Sector Material Risk Inventory Prepared | 0d | 2015-06-30 | 2015-06-30 | 524d | start no earlier than 2015-06-30 |
| 800 | 1.1.3.6.4 | **DELIVERABLE:Global Banking/Commercial Banking/CRE & Speciality: Create Global Banking Material Risk Inventory** | 24d | 2015-05-28 | 2015-06-30 | 523d |  |
| 801 | 1.1.3.6.4.1 | **MILESTONE:Global Banking/Commercial Banking/CRE & Speciality: Create Global Banking Material Risk Inventory** | 24d | 2015-05-28 | 2015-06-30 | 523d |  |
| 802 |  | Create Segment Material Risk Inventory (Aggregation) | 24d | 2015-05-28 | 2015-06-30 | 523d | start no earlier than 2015-05-28 |
| 803 |  | Segment head presents inventory to ERMC | 2d | 2015-06-29 | 2015-06-30 | 523d | start no earlier than 2015-06-29 |
| 804 |  | Global Banking Material Risk Inventory Prepared | 0d | 2015-06-30 | 2015-06-30 | 524d | start no earlier than 2015-06-30 |
| 805 | 1.1.3.6.5 | **DELIVERABLE:Mortgage Servicing Material Risk Inventory** | 2d | 2015-06-29 | 2015-06-30 | 523d |  |
| 806 | 1.1.3.6.5.1 | **MILESTONE:Mortgage Servicing Material Risk Inventory** | 2d | 2015-06-29 | 2015-06-30 | 523d |  |
| 807 |  | Deliver Final Inventory to PR and SHUSA ERM | 2d | 2015-06-29 | 2015-06-30 | 523d | start no earlier than 2015-06-29 |
| 808 |  | Present inventory to ERMC | 2d | 2015-06-29 | 2015-06-30 | 523d | start no earlier than 2015-06-29 |
| 809 |  | Mortgage Servicing Material Risk Inventory Prepared | 0d | 2015-06-30 | 2015-06-30 | 524d | start no earlier than 2015-06-30 |
| 810 | 1.1.3.6.6 | **DELIVERABLE:Investment Services Material Risk Inventory** | 2d | 2015-06-29 | 2015-06-30 | 523d |  |
| 811 | 1.1.3.6.6.1 | **MILESTONE:Investment Services Material Risk Inventory** | 2d | 2015-06-29 | 2015-06-30 | 523d |  |
| 812 |  | Deliver Final Inventory to PR and SHUSA ERM | 2d | 2015-06-29 | 2015-06-30 | 523d | start no earlier than 2015-06-29 |
| 813 |  | Present inventory to ERMC | 2d | 2015-06-29 | 2015-06-30 | 523d | start no earlier than 2015-06-29 |
| 814 |  | Investment Services Material Risk Inventory Prepared | 0d | 2015-06-30 | 2015-06-30 | 524d | start no earlier than 2015-06-30 |
| 815 | 1.1.3.6.7 | **DELIVERABLE:Trust Material Risk Inventory** | 2d | 2015-06-29 | 2015-06-30 | 523d |  |
| 816 | 1.1.3.6.7.1 | **MILESTONE:Trust Material Risk Inventory** | 2d | 2015-06-29 | 2015-06-30 | 523d |  |
| 817 |  | Deliver Final Inventory to PR and SHUSA ERM | 2d | 2015-06-29 | 2015-06-30 | 523d | start no earlier than 2015-06-29 |
| 818 |  | Present inventory to ERMC | 2d | 2015-06-29 | 2015-06-30 | 523d | start no earlier than 2015-06-29 |
| 819 |  | Trust Material Risk Inventory Prepared | 0d | 2015-06-30 | 2015-06-30 | 524d | start no earlier than 2015-06-30 |
| 820 | 1.1.3.6.8 | **DELIVERABLE:Pension Plan Material Risk Inventory** | 2d | 2015-06-29 | 2015-06-30 | 523d |  |
| 821 | 1.1.3.6.8.1 | **MILESTONE:Pension Plan Material Risk Inventory** | 2d | 2015-06-29 | 2015-06-30 | 523d |  |
| 822 |  | Deliver Final Inventory to PR and SHUSA ERM | 2d | 2015-06-29 | 2015-06-30 | 523d | start no earlier than 2015-06-29 |
| 823 |  | Present inventory to ERMC | 2d | 2015-06-29 | 2015-06-30 | 523d | start no earlier than 2015-06-29 |
| 824 |  | Pension Plan Material Risk Inventory Prepared | 0d | 2015-06-30 | 2015-06-30 | 524d | start no earlier than 2015-06-30 |
| 825 | 1.1.3.6.9 | **DELIVERABLE:Foreign Accounts Material Risk Inventory** | 2d | 2015-06-29 | 2015-06-30 | 523d |  |
| 826 | 1.1.3.6.9.1 | **MILESTONE:Foreign Accounts Material Risk Inventory** | 2d | 2015-06-29 | 2015-06-30 | 523d |  |
| 827 |  | Deliver Final Inventory to PR and SHUSA ERM | 2d | 2015-06-29 | 2015-06-30 | 523d | start no earlier than 2015-06-29 |
| 828 |  | Present inventory to ERMC | 2d | 2015-06-29 | 2015-06-30 | 523d | start no earlier than 2015-06-29 |
| 829 |  | Foreign Accounts Material Risk Inventory Prepared | 0d | 2015-06-30 | 2015-06-30 | 524d | start no earlier than 2015-06-30 |
| 830 | 1.1.3.6.10 | **DELIVERABLE:Human Resources Material Risk Inventory** | 24d | 2015-05-28 | 2015-06-30 | 523d |  |
| 831 | 1.1.3.6.10.1 | **MILESTONE:Human Resources Material Risk Inventory** | 24d | 2015-05-28 | 2015-06-30 | 523d |  |
| 832 |  | Create risk Inventory | 17d | 2015-05-28 | 2015-06-19 | 530d | start no earlier than 2015-05-28 |
| 833 |  | Deliver Final Inventory to PR and SHUSA ERM | 2d | 2015-06-29 | 2015-06-30 | 523d | start no earlier than 2015-06-29 |
| 834 |  | Present inventory to ERMC | 2d | 2015-06-29 | 2015-06-30 | 523d | start no earlier than 2015-06-29 |
| 835 |  | Human Resources Material Risk Inventory Prepared | 0d | 2015-06-30 | 2015-06-30 | 524d | start no earlier than 2015-06-30 |
| 836 | 1.1.3.6.11 | **DELIVERABLE:Technology and Operations Material Risk Inventory** | 2d | 2015-06-29 | 2015-06-30 | 523d |  |
| 837 | 1.1.3.6.11.1 | **MILESTONE:Technology and Operations Material Risk Inventory** | 2d | 2015-06-29 | 2015-06-30 | 523d |  |
| 838 |  | Deliver Final Inventory to PR and SHUSA ERM | 2d | 2015-06-29 | 2015-06-30 | 523d | start no earlier than 2015-06-29 |
| 839 |  | Present inventory to ERMC | 2d | 2015-06-29 | 2015-06-30 | 523d | start no earlier than 2015-06-29 |
| 840 |  | Technology and Operations Material Risk Inventory Prepared | 0d | 2015-06-30 | 2015-06-30 | 524d | start no earlier than 2015-06-30 |

| ID | WBS | Task | Duration | Start | Finish | Predecessors | Total float | Constraint |
| --- | --- | --- | --- | --- | --- | --- | --- | --- |
| 841 | 1.1.3.6.12 | **DELIVERABLE:Legal Material Risk Inventory** | 2d | 2015-06-29 | 2015-06-30 |  | 523d |  |
| 842 | 1.1.3.6.12.1 | **MILESTONE:Legal Material Risk Inventory** | 2d | 2015-06-29 | 2015-06-30 |  | 523d |  |
| 843 |  | Deliver Final Inventory to PR and SHUSA ERM | 2d | 2015-06-29 | 2015-06-30 |  | 523d | start no earlier than 2015-06-29 |
| 844 |  | Present inventory to ERMC | 2d | 2015-06-29 | 2015-06-30 |  | 523d | start no earlier than 2015-06-29 |
| 845 |  | Legal Material Risk Inventory Prepared | 0d | 2015-06-30 | 2015-06-30 |  | 524d | start no earlier than 2015-06-30 |
| 846 | 1.1.3.6.13 | **DELIVERABLE:Finance Material Risk Inventory** | 2d | 2015-06-29 | 2015-06-30 |  | 523d |  |
| 847 | 1.1.3.6.13.1 | **MILESTONE:Finance Material Risk Inventory** | 2d | 2015-06-29 | 2015-06-30 |  | 523d |  |
| 848 |  | Deliver Final Inventory to PR and SHUSA ERM | 2d | 2015-06-29 | 2015-06-30 |  | 523d | start no earlier than 2015-06-29 |
| 849 |  | Present inventory to ERMC | 2d | 2015-06-29 | 2015-06-30 |  | 523d | start no earlier than 2015-06-29 |
| 850 |  | Finance Material Risk Inventory Prepared | 0d | 2015-06-30 | 2015-06-30 |  | 524d | start no earlier than 2015-06-30 |
| 851 | 1.1.3.6.14 | **DELIVERABLE:SFS - Island Finance Material Risk Inventory** | 2d | 2015-06-29 | 2015-06-30 |  | 523d |  |
| 852 | 1.1.3.6.14.1 | **MILESTONE:SFS - Island Finance Material Risk Inventory** | 2d | 2015-06-29 | 2015-06-30 |  | 523d |  |
| 853 |  | Deliver Final Inventory to PR and SHUSA ERM | 2d | 2015-06-29 | 2015-06-30 |  | 523d | start no earlier than 2015-06-29 |
| 854 |  | Present inventory to ERMC | 2d | 2015-06-29 | 2015-06-30 |  | 523d | start no earlier than 2015-06-29 |
| 855 |  | SFS - Island Finance Material Risk Inventory Prepared | 0d | 2015-06-30 | 2015-06-30 |  | 524d | start no earlier than 2015-06-30 |
| 856 | 1.1.3.6.15 | **DELIVERABLE:SFS - Special Assets Material Risk Inventory** | 2d | 2015-06-29 | 2015-06-30 |  | 523d |  |
| 857 | 1.1.3.6.15.1 | **MILESTONE:SFS - Special Assets Material Risk Inventory** | 2d | 2015-06-29 | 2015-06-30 |  | 523d |  |
| 858 |  | Deliver Final Inventory to PR and SHUSA ERM | 2d | 2015-06-29 | 2015-06-30 |  | 523d | start no earlier than 2015-06-29 |
| 859 |  | Present inventory to ERMC | 2d | 2015-06-29 | 2015-06-30 |  | 523d | start no earlier than 2015-06-29 |
| 860 |  | SFS - Special Assets Material Risk Inventory Prepared | 0d | 2015-06-30 | 2015-06-30 |  | 524d | start no earlier than 2015-06-30 |
| 861 | 1.1.3.6.16 | **DELIVERABLE:Santander Overseas Bank - GBM Material Risk Inventory** | 2d | 2015-06-29 | 2015-06-30 |  | 523d |  |
| 862 | 1.1.3.6.16.1 | **MILESTONE:Santander Overseas Bank - GBM Material Risk Inventory** | 2d | 2015-06-29 | 2015-06-30 |  | 523d |  |
| 863 |  | Deliver Final Inventory to PR and SHUSA ERM | 2d | 2015-06-29 | 2015-06-30 |  | 523d | start no earlier than 2015-06-29 |
| 864 |  | Present inventory to ERMC | 2d | 2015-06-29 | 2015-06-30 |  | 523d | start no earlier than 2015-06-29 |
| 865 |  | Santander Overseas Bank - GBM Material Risk Inventory Prepared | 0d | 2015-06-30 | 2015-06-30 |  | 524d | start no earlier than 2015-06-30 |
| 866 | 1.1.3.6.17 | **DELIVERABLE:Puerto Rico - Santander Bancorp Aggregation Workshops** | 20d? | 2015-07-01 | 2015-07-28 |  | 503d |  |
| 867 | 1.1.3.6.17.1 | **MILESTONE: Credit Risk Aggregation** | 20d? | 2015-07-01 | 2015-07-28 |  | 503d |  |
| 868 |  | ERM disseminates Workshop Pre-Read Materials to Risk Managers | 8d? | 2015-07-01 | 2015-07-10 |  | 505d | finish no earlier than 2015-07-10 |
| 869 |  | ERM facilitates Aggregation and Enrichment Activities | 10d? | 2015-07-13 | 2015-07-24 | 868 | 505d |  |
| 870 |  | Risk Manager presents inventory to level II subcommittee | 2d? | 2015-07-27 | 2015-07-28 |  | 503d | finish no earlier than 2015-07-28 |
| 871 |  | Credit Risk Aggregation Prepared | 0d | 2015-07-28 | 2015-07-28 |  | 504d | start no earlier than 2015-07-28 |
| 872 | 1.1.3.6.17.2 | **MILESTONE: Operational Risk Material Risk Aggregation** | 20d? | 2015-07-01 | 2015-07-28 |  | 503d |  |
| 873 |  | ERM disseminates Workshop Pre-Read Materials to Risk Managers | 8d? | 2015-07-01 | 2015-07-10 |  | 505d | finish no earlier than 2015-07-10 |
| 874 |  | ERM facilitates Aggregation and Enrichment Activities | 10d? | 2015-07-13 | 2015-07-24 | 873 | 505d |  |
| 875 |  | Risk Manager presents inventory to level II subcommittee | 2d? | 2015-07-27 | 2015-07-28 |  | 503d | finish no earlier than 2015-07-28 |
| 876 |  | Operational Risk Material Risk Aggregation Prepared | 0d | 2015-07-28 | 2015-07-28 |  | 504d | start no earlier than 2015-07-28 |
| 877 | 1.1.3.6.17.3 | **MILESTONE: Compliance Material Risk Aggregation** | 20d? | 2015-07-01 | 2015-07-28 |  | 503d |  |
| 878 |  | ERM disseminates Workshop Pre-Read Materials to Risk Managers | 8d? | 2015-07-01 | 2015-07-10 |  | 505d | finish no earlier than 2015-07-10 |
| 879 |  | ERM facilitates Aggregation and Enrichment Workshop | 10d? | 2015-07-13 | 2015-07-24 | 878 | 505d |  |
| 880 |  | Risk Manager presents inventory to level II subcommittee | 2d? | 2015-07-27 | 2015-07-28 |  | 503d | finish no earlier than 2015-07-28 |
| 881 |  | Compliance Material Risk Aggregation Prepared | 0d | 2015-07-28 | 2015-07-28 |  | 504d | start no earlier than 2015-07-28 |
| 882 | 1.1.3.6.17.4 | **MILESTONE: Model Material Risk Aggregation** | 20d? | 2015-07-01 | 2015-07-28 |  | 503d |  |
| 883 |  | ERM disseminates Workshop Pre-Read Materials to Risk Managers | 8d? | 2015-07-01 | 2015-07-10 |  | 505d | finish no earlier than 2015-07-10 |
| 884 |  | ERM facilitates Aggregation and Enrichment Activities | 10d? | 2015-07-13 | 2015-07-24 | 883 | 505d |  |
| 885 |  | Risk Manager presents inventory to level II subcommittee | 2d? | 2015-07-27 | 2015-07-28 |  | 503d | finish no earlier than 2015-07-28 |
| 886 |  | Model Material Risk Aggregation Prepared | 0d | 2015-07-28 | 2015-07-28 |  | 504d | start no earlier than 2015-07-28 |
| 887 | 1.1.3.6.17.5 | **MILESTONE: Liquidity/Market Material Risk Aggregation** | 20d? | 2015-07-01 | 2015-07-28 |  | 503d |  |
| 888 |  | ERM disseminates Workshop Pre-Read Materials to Risk Managers | 8d? | 2015-07-01 | 2015-07-10 |  | 505d | finish no earlier than 2015-07-10 |
| 889 |  | ERM facilitates Aggregation and Enrichment Activities | 10d? | 2015-07-13 | 2015-07-24 | 888 | 505d |  |
| 890 |  | Risk Manager presents inventory to level II subcommittee | 2d? | 2015-07-27 | 2015-07-28 |  | 503d | finish no earlier than 2015-07-28 |
| 891 |  | Liquidity/Market Material Risk Aggregation Prepared | 0d | 2015-07-28 | 2015-07-28 |  | 504d | start no earlier than 2015-07-28 |
| 892 | 1.1.3.6.17.6 | **MILESTONE: Reputational/Strategic Material Risk Aggregation** | 20d? | 2015-07-01 | 2015-07-28 |  | 503d |  |
| 893 |  | ERM disseminates Workshop Pre-Read Materials to Risk Managers | 8d? | 2015-07-01 | 2015-07-10 |  | 515d | finish no earlier than 2015-07-10 |
| 894 |  | ERM facilitates Aggregation and Enrichment Workshop | 5d? | 2015-07-20 | 2015-07-24 |  | 505d | finish no earlier than 2015-07-24 |
| 895 |  | Risk Manager presents inventory to level II subcommittee | 2d? | 2015-07-27 | 2015-07-28 |  | 503d | finish no earlier than 2015-07-28 |
| 896 |  | Reputational/Strategic Material Risk Aggregation Prepared | 0d | 2015-07-28 | 2015-07-28 |  | 504d | start no earlier than 2015-07-28 |
| 897 |  | DELIVERABLE:Present Results to PR Santander Bancorp ERMC | 25d | 2015-07-28 | 2015-08-31 |  | 479d | start no earlier than 2015-07-28 |
| 898 |  | DELIVERABLE:Present Results to PR Santander Bancorp BERC | 25d | 2015-07-28 | 2015-08-31 |  | 479d | start no earlier than 2015-07-28 |
| 899 | 1.1.3.7 | **Miami - Business Entity Material Risk Program** | 68d? | 2015-05-28 | 2015-08-31 |  | 479d |  |
| 900 | 1.1.3.7.1 | **DELIVERABLE:Private Banking Material Risk Inventory** | 2d | 2015-06-29 | 2015-06-30 |  | 523d |  |
| 901 | 1.1.3.7.1.1 | **MILESTONE:Private Banking Material Risk Inventory** | 2d | 2015-06-29 | 2015-06-30 |  | 523d |  |
| 902 |  | Deliver Final Inventory to Miami and SHUSA ERM | 2d | 2015-06-29 | 2015-06-30 |  | 523d | start no earlier than 2015-06-29 |
| 903 |  | Present inventory to ERMC | 2d | 2015-06-29 | 2015-06-30 |  | 523d | start no earlier than 2015-06-29 |
| 904 |  | Private Banking Material Risk Inventory Prepared | 0d | 2015-06-30 | 2015-06-30 |  | 524d | start no earlier than 2015-06-30 |
| 905 | 1.1.3.7.2 | **DELIVERABLE:Personal Lending Material Risk Inventory** | 2d | 2015-06-29 | 2015-06-30 |  | 523d |  |
| 906 | 1.1.3.7.2.1 | **MILESTONE:Personal Lending Material Risk Inventory** | 2d | 2015-06-29 | 2015-06-30 |  | 523d |  |
| 907 |  | Deliver Final Inventory to Miami and SHUSA ERM | 2d | 2015-06-29 | 2015-06-30 |  | 523d | start no earlier than 2015-06-29 |
| 908 |  | Present inventory to ERMC | 2d | 2015-06-29 | 2015-06-30 |  | 523d | start no earlier than 2015-06-29 |
| 909 |  | Personal Lending Material Risk Inventory Prepared | 0d | 2015-06-30 | 2015-06-30 |  | 524d | start no earlier than 2015-06-30 |
| 910 | 1.1.3.7.3 | **DELIVERABLE:Human Resources Material Risk Inventory** | 2d | 2015-06-29 | 2015-06-30 |  | 523d |  |

| ID | WBS | Task | Duration | Start | Finish | Predecessors | Total float | Constraint |
| --- | --- | --- | --- | --- | --- | --- | --- | --- |
| 911 | 1.1.3.7.3.1 | **MILESTONE:Human Resources Material Risk Inventory** | 2d | 2015-06-29 | 2015-06-30 |  | 523d |  |
| 912 |  | Deliver Final Inventory to Miami and SHUSA ERM | 2d | 2015-06-29 | 2015-06-30 |  | 523d | start no earlier than 2015-06-29 |
| 913 |  | Present inventory to ERMC | 2d | 2015-06-29 | 2015-06-30 |  | 523d | start no earlier than 2015-06-29 |
| 914 |  | Human Resources Material Risk Inventory Prepared | 0d | 2015-06-30 | 2015-06-30 |  | 524d | start no earlier than 2015-06-30 |
| 915 | 1.1.3.7.4 | **DELIVERABLE:Finance and Accounting Material Risk Inventory** | 24d | 2015-05-28 | 2015-06-30 |  | 523d |  |
| 916 | 1.1.3.7.4.1 | **MILESTONE:Finance and Accounting Material Risk Inventory** | 24d | 2015-05-28 | 2015-06-30 |  | 523d |  |
| 917 |  | Create risk Inventory | 17d | 2015-05-28 | 2015-06-19 |  | 530d | start no earlier than 2015-05-28 |
| 918 |  | Deliver Final Inventory to Miami and SHUSA ERM | 2d | 2015-06-29 | 2015-06-30 |  | 523d | start no earlier than 2015-06-29 |
| 919 |  | Present inventory to ERMC | 2d | 2015-06-29 | 2015-06-30 |  | 523d | start no earlier than 2015-06-29 |
| 920 |  | Finance and Accounting Material Risk Inventory Prepared | 0d | 2015-06-30 | 2015-06-30 |  | 524d | start no earlier than 2015-06-30 |
| 921 | 1.1.3.7.5 | **DELIVERABLE:Technology and Operations Material Risk Inventory** | 2d | 2015-06-29 | 2015-06-30 |  | 523d |  |
| 922 | 1.1.3.7.5.1 | **MILESTONE:Technology and Operations Material Risk Inventory** | 2d | 2015-06-29 | 2015-06-30 |  | 523d |  |
| 923 |  | Deliver Final Inventory to Miami and SHUSA ERM | 2d | 2015-06-29 | 2015-06-30 |  | 523d | start no earlier than 2015-06-29 |
| 924 |  | Present inventory to ERMC | 2d | 2015-06-29 | 2015-06-30 |  | 523d | start no earlier than 2015-06-29 |
| 925 |  | Technology and Operations Material Risk Inventory Prepared | 0d | 2015-06-30 | 2015-06-30 |  | 524d | start no earlier than 2015-06-30 |
| 926 | 1.1.3.7.6 | **DELIVERABLE:Legal Material Risk Inventory** | 2d | 2015-06-29 | 2015-06-30 |  | 523d |  |
| 927 | 1.1.3.7.6.1 | **MILESTONE:Legal Material Risk Inventory** | 2d | 2015-06-29 | 2015-06-30 |  | 523d |  |
| 928 |  | Deliver Final Inventory to Miami and SHUSA ERM | 2d | 2015-06-29 | 2015-06-30 |  | 523d | start no earlier than 2015-06-29 |
| 929 |  | Present inventory to ERMC | 2d | 2015-06-29 | 2015-06-30 |  | 523d | start no earlier than 2015-06-29 |
| 930 |  | Legal Material Risk Inventory Prepared | 0d | 2015-06-30 | 2015-06-30 |  | 524d | start no earlier than 2015-06-30 |
| 931 | 1.1.3.7.7 | **DELIVERABLE:Miami Aggregation Workshops** | 20d? | 2015-07-01 | 2015-07-28 |  | 503d |  |
| 932 | 1.1.3.7.7.1 | **MILESTONE: Credit Risk Aggregation** | 20d? | 2015-07-01 | 2015-07-28 |  | 503d |  |
| 933 |  | ERM disseminates Workshop Pre-Read Materials to Risk Managers | 8d? | 2015-07-01 | 2015-07-10 |  | 505d | finish no earlier than 2015-07-10 |
| 934 |  | ERM facilitates Aggregation and Enrichment Activities | 10d? | 2015-07-13 | 2015-07-24 | 933 | 505d |  |
| 935 |  | Risk Manager presents inventory to level II subcommittee | 2d? | 2015-07-27 | 2015-07-28 |  | 503d | finish no earlier than 2015-07-28 |
| 936 |  | Credit Risk Aggregation Prepared | 0d | 2015-07-28 | 2015-07-28 |  | 504d | start no earlier than 2015-07-28 |
| 937 | 1.1.3.7.7.2 | **MILESTONE: Operational Risk Material Risk Aggregation** | 20d? | 2015-07-01 | 2015-07-28 |  | 503d |  |
| 938 |  | ERM disseminates Workshop Pre-Read Materials to Risk Managers | 8d? | 2015-07-01 | 2015-07-10 |  | 505d | finish no earlier than 2015-07-10 |
| 939 |  | ERM facilitates Aggregation and Enrichment Activities | 10d? | 2015-07-13 | 2015-07-24 | 938 | 505d |  |
| 940 |  | Risk Manager presents inventory to level II subcommittee | 2d? | 2015-07-27 | 2015-07-28 |  | 503d | finish no earlier than 2015-07-28 |
| 941 |  | Operational Risk Material Risk Aggregation Prepared | 0d | 2015-07-28 | 2015-07-28 |  | 504d | start no earlier than 2015-07-28 |
| 942 | 1.1.3.7.7.3 | **MILESTONE: Compliance Material Risk Aggregation** | 20d? | 2015-07-01 | 2015-07-28 |  | 503d |  |
| 943 |  | ERM disseminates Workshop Pre-Read Materials to Risk Managers | 8d? | 2015-07-01 | 2015-07-10 |  | 505d | finish no earlier than 2015-07-10 |
| 944 |  | ERM facilitates Aggregation and Enrichment Activities | 10d? | 2015-07-13 | 2015-07-24 | 943 | 505d |  |
| 945 |  | Risk Manager presents inventory to level II subcommittee | 2d? | 2015-07-27 | 2015-07-28 |  | 503d | finish no earlier than 2015-07-28 |
| 946 |  | Compliance Material Risk Aggregation Prepared | 0d | 2015-07-28 | 2015-07-28 |  | 504d | start no earlier than 2015-07-28 |
| 947 | 1.1.3.7.7.4 | **MILESTONE: Model Material Risk Aggregation** | 20d? | 2015-07-01 | 2015-07-28 |  | 503d |  |
| 948 |  | ERM disseminates Workshop Pre-Read Materials to Risk Managers | 8d? | 2015-07-01 | 2015-07-10 |  | 505d | finish no earlier than 2015-07-10 |
| 949 |  | ERM facilitates Aggregation and Enrichment Workshop | 10d? | 2015-07-13 | 2015-07-24 | 948 | 505d |  |
| 950 |  | Risk Manager presents inventory to level II subcommittee | 2d? | 2015-07-27 | 2015-07-28 |  | 503d | finish no earlier than 2015-07-28 |
| 951 |  | Model Material Risk Aggregation Prepared | 0d | 2015-07-28 | 2015-07-28 |  | 504d | start no earlier than 2015-07-28 |
| 952 | 1.1.3.7.7.5 | **MILESTONE: Liquidity/Market Material Risk Aggregation** | 20d? | 2015-07-01 | 2015-07-28 |  | 503d |  |
| 953 |  | ERM disseminates Workshop Pre-Read Materials to Risk Managers | 8d? | 2015-07-01 | 2015-07-10 |  | 505d | finish no earlier than 2015-07-10 |
| 954 |  | ERM facilitates Aggregation and Enrichment Activities | 10d? | 2015-07-13 | 2015-07-24 | 953 | 505d |  |
| 955 |  | Risk Manager presents inventory to level II subcommittee | 2d? | 2015-07-27 | 2015-07-28 |  | 503d | finish no earlier than 2015-07-28 |
| 956 |  | Liquidity/Market Material Risk Aggregation Prepared | 0d | 2015-07-28 | 2015-07-28 |  | 504d | start no earlier than 2015-07-28 |
| 957 | 1.1.3.7.7.6 | **MILESTONE: Reputational/Strategic Material Risk Aggregation** | 20d? | 2015-07-01 | 2015-07-28 |  | 503d |  |
| 958 |  | ERM disseminates Workshop Pre-Read Materials to Risk Managers | 8d? | 2015-07-01 | 2015-07-10 |  | 505d | finish no earlier than 2015-07-10 |
| 959 |  | ERM facilitates Aggregation and Enrichment Workshop | 10d? | 2015-07-13 | 2015-07-24 | 958 | 505d |  |
| 960 |  | Risk Manager presents inventory to level II subcommittee | 2d? | 2015-07-27 | 2015-07-28 |  | 503d | finish no earlier than 2015-07-28 |
| 961 |  | Reputational/Strategic Material Risk Aggregation Prepared | 0d | 2015-07-28 | 2015-07-28 |  | 504d | start no earlier than 2015-07-28 |
| 962 |  | MILESTONE:Present Miami to SCUSA ERMC | 25d | 2015-07-28 | 2015-08-31 |  | 479d | finish no earlier than 2015-08-31 |
| 963 |  | MILESTONE:Present Miami to SCUSA BERC | 25d | 2015-07-28 | 2015-08-31 |  | 479d | finish no earlier than 2015-08-31 |
| 964 | 1.1.3.8 | **Review Foundational Risk ID Processes and Build Multi-Year Enhancement Objectives** | 51d | 2016-01-18 | 2016-03-28 |  | 0d |  |
| 965 | 1.1.3.8.1 | **DELIVERABLE: Assess Foundational Risk Processes and ensure complete foundational risk inventory is in place** | 10d | 2016-01-18 | 2016-01-29 |  | 0d |  |
| 966 | 1.1.3.8.1.1 | **MILESTONE: Assess Foundational Risk Processes and ensure complete foundational risk inventory is in place** | 10d | 2016-01-18 | 2016-01-29 |  | 0d |  |
| 967 |  | Identify existing Foundational Risk Processes | 10d | 2016-01-18 | 2016-01-29 |  |  |  |
| 968 |  | Confirm and validated foundational risk inventory - develop or enhance as needed | 10d | 2016-01-18 | 2016-01-29 |  |  |  |
| 969 |  | MILESTONE: Landscape of Foundational Risk Processes and risk inventory confirmed | 0d | 2016-01-29 | 2016-01-29 |  |  |  |
| 970 | 1.1.3.8.2 | **DELIVERABLE: Review each Foundational Risk Process, identify deficient processes, and use gap analyses to determine how to optimize processes** | 31d | 2016-02-01 | 2016-03-14 |  | 0d |  |
| 971 | 1.1.3.8.2.1 | **MILESTONE: Review each Foundational Risk Process, identify deficient processes, and use gap analyses to determine how to optimize processes** | 31d | 2016-02-01 | 2016-03-14 |  | 0d |  |
| 972 |  | Review and assess each Foundational Risk Process | 31d | 2016-02-01 | 2016-03-14 |  |  |  |
| 973 |  | Determine optimal future state for each process | 31d | 2016-02-01 | 2016-03-14 |  |  |  |
| 974 |  | Perform gap analyses for processes determined to be deficient | 31d | 2016-02-01 | 2016-03-14 |  |  |  |
| 975 |  | MILESTONE: Each Foundational Risk Process reviewed and assessed | 0d | 2016-03-14 | 2016-03-14 |  |  |  |
| 976 | 1.1.3.8.3 | **DELIVERABLE: Develop remediation of Foundational Risk Process plan** | 11d | 2016-03-14 | 2016-03-28 |  | 0d |  |
| 977 | 1.1.3.8.3.1 | **MILESTONE: Develop remediation of Foundational Risk Process plan** | 11d | 2016-03-14 | 2016-03-28 |  | 0d |  |
| 978 |  | Identify deficiencies in current plan | 11d | 2016-03-14 | 2016-03-28 |  |  |  |
| 979 |  | Determine optimal state for plan | 11d | 2016-03-14 | 2016-03-28 |  |  |  |
| 980 |  | Perform gap analysis in order to develop plan remediation | 11d | 2016-03-14 | 2016-03-28 |  |  |  |

| ID | WBS | Task | Duration | Start | Finish | Predecessors | Complete | Total float | Constraint |
| --- | --- | --- | --- | --- | --- | --- | --- | --- | --- |
| 981 |  | MILESTONE: Plan remediation developed | 0d | 2016-03-28 | 2016-03-28 |  |  |  |  |
| 982 | 1.1.3.9 | **Year 2 and Year 3 Priorities** | 315d | 2015-11-02 | 2017-01-13 |  |  |  |  |
| 983 | 1.1.3.9.1 | **DELIVERABLE: Updated risk taxonomy** | 21d | 2015-11-02 | 2015-11-30 |  |  | 0d |  |
| 984 |  | MILESTONE: Draft of updated risk taxonomy based on 2015 results | 8d | 2015-11-02 | 2015-11-11 |  |  |  |  |
| 985 |  | MILESTONE: Final updated risk taxonomy based on 2015 results | 14d | 2015-11-11 | 2015-11-30 |  |  |  |  |
| 986 | 1.1.3.9.2 | **DELIVERABLE: Updated material risk inventory template and guidance** | 23d | 2015-12-01 | 2015-12-31 |  |  | 0d |  |
| 987 |  | MILESTONE: Updated material risk inventory template | 23d | 2015-12-01 | 2015-12-31 |  |  |  |  |
| 988 |  | MILESTONE: Updated material risk guidance | 23d | 2015-12-01 | 2015-12-31 |  |  |  |  |
| 989 |  | MILESTONE: Updated aggregation and enrichment guidance | 23d | 2015-12-01 | 2015-12-31 |  |  |  |  |
| 990 | 1.1.3.9.3 | **DELIVERABLE: Automated interface for risk inventory template** | 65d | 2016-01-01 | 2016-03-31 |  |  | 0d |  |
| 991 |  | MILESTONE: Technology requirements and BRD for risk inventory template web interface | 14d | 2016-01-01 | 2016-01-20 |  |  |  |  |
| 992 |  | MILESTONE: Implementation of web interface for risk inventory template | 24d | 2016-01-20 | 2016-02-22 |  |  |  |  |
| 993 |  | MILESTONE: Web interface pilot with selected business entities | 20d | 2016-02-22 | 2016-03-18 |  |  |  |  |
| 994 |  | MILESTONE: Roll out of web interface across business entities | 10d | 2016-03-18 | 2016-03-31 |  |  |  |  |
| 995 | 1.1.3.9.4 | **DELIVERABLE: Training materials, policies and procedures based on updated process** | 43d | 2016-04-01 | 2016-05-31 |  |  | 0d |  |
| 996 |  | MILESTONE: Development and rollout of training package for material risk ID process | 43d | 2016-04-01 | 2016-05-31 |  |  |  |  |
| 997 |  | MILESTONE: Update and rollout of Policies and procedures for material risk ID process | 43d | 2016-04-01 | 2016-05-31 |  |  |  |  |
| 998 | 1.1.3.9.5 | **DELIVERABLE: Database for foundational inputs and data sources for risk ID** | 176d | 2016-03-15 | 2016-11-15 |  |  | 0d |  |
| 999 |  | MILESTONE: Development of technology requirements and BRDs for database with business entity level foundational inputs and data sources | 24d | 2016-03-15 | 2016-04-15 |  |  |  |  |
| 1000 |  | MILESTONE: Implementation of database for foundational inputs and data sources | 110d | 2016-03-15 | 2016-08-15 |  |  |  |  |
| 1001 |  | MILESTONE: Database pilot for selected business entities | 23d | 2016-08-15 | 2016-09-14 |  |  |  |  |
| 1002 |  | MILESTONE: Roll out of database across business entities | 45d | 2016-09-14 | 2016-11-15 |  |  |  |  |
| 1003 | 1.1.3.9.6 | **DELIVERABLE: Training materials, policies and procedures for risk ID database and process** | 44d | 2016-11-15 | 2017-01-13 |  |  | 0d |  |
| 1004 |  | MILESTONE: Training package for material risk ID database and process developed and rolled out | 44d | 2016-11-15 | 2017-01-13 |  |  |  |  |
| 1005 |  | MILESTONE: Policies and procedures for material risk ID process updated and rolled out | 44d | 2016-11-15 | 2017-01-13 |  |  |  |  |
| 1006 | 1.1.4 | **Risk Management Processes** | 513d? | 2014-10-01 A | 2016-09-16 |  | 17% | 205d |  |
| 1007 | 1.1.4.1 | **Risk Type Implementation for SHUSA, SBNA, and SCUSA (6 Risk Types)** | 182d | 2015-09-11 | 2016-05-24 |  |  | 0d |  |
| 1008 | 1.1.4.1.1 | **DELIVERABLE: Wave 1 Risk Types A and B Implemented at SHUSA, SBNA, SCUSA and Other Entities** | 63d | 2015-09-11 | 2015-12-09 |  |  | 0d |  |
| 1009 | 1.1.4.1.1.1 | **MILESTONE: Risk type A (Most likely Credit) Framework Implemented at SHUSA, SBNA, and SCUSA** | 63d | 2015-09-11 | 2015-12-09 |  |  | 0d |  |
| 1010 |  | Implement Risk type A (Most likely Credit) Framework at SHUSA | 63d | 2015-09-11 | 2015-12-08 |  |  | 408d | start no earlier than 2015-09-11 |
| 1011 |  | Implement Risk type A (Most likely Credit) Framework at SBNA | 63d | 2015-09-11 | 2015-12-08 |  |  |  |  |
| 1012 |  | Implement Risk type A (Most likely Credit) Framework at SCUSA | 63d | 2015-09-11 | 2015-12-08 |  |  |  |  |
| 1013 |  | Risk type A (Most likely Credit) Framework Implemented at SHUSA, SBNA, and SCUSA | 0d | 2015-12-09 | 2015-12-09 | 1012, 1011, 1010 |  |  |  |
| 1014 | 1.1.4.1.1.2 | **MILESTONE: Risk type B (Most likely ERM + RAS + Strategic) Framework Implemented at SHUSA, SBNA, and SCUSA** | 63d | 2015-09-11 | 2015-12-09 |  |  | 0d |  |
| 1015 |  | Implement Risk type B (Most likely ERM + RAS + Strategic)) Framework at SHUSA | 63d | 2015-09-11 | 2015-12-08 |  |  | 408d | start no earlier than 2015-09-11 |
| 1016 |  | Implement Risk type B (Most likely ERM + RAS + Strategic) Framework at SBNA | 63d | 2015-09-11 | 2015-12-08 |  |  |  |  |
| 1017 |  | Implement Risk type B (Most likely ERM + RAS + Strategic) Framework at SCUSA | 63d | 2015-09-11 | 2015-12-08 |  |  |  |  |
| 1018 |  | Risk type B (Most likely ERM + RAS + Strategic) Framework Implemented at SHUSA, SBNA, and SCUSA | 0d | 2015-12-09 | 2015-12-09 | 1017, 1016, 1015 |  |  |  |
| 1019 | 1.1.4.1.2 | **DELIVERABLE: Wave 2 Risk Types C and D Implemented at SHUSA, SBNA, SCUSA and Other Entities** | 62d | 2015-12-04 | 2016-03-01 |  |  | 62d |  |
| 1020 | 1.1.4.1.2.1 | **MILESTONE: Risk Type C (Most Likely Market & Liquidity) at SHUSA, SBNA, SCUSA and Other Entities** | 62d | 2015-12-04 | 2016-03-01 |  |  | 62d |  |
| 1021 |  | Implement Risk type C (Most likely Market & Liquidity) Framework at SHUSA | 62d | 2015-12-04 | 2016-02-29 |  |  | 349d | start no earlier than 2015-12-04 |
| 1022 |  | Implement Risk type C (Most likely Market & Liquidity) Framework at SBNA | 62d | 2015-12-04 | 2016-02-29 |  |  | 349d | start no earlier than 2015-12-04 |
| 1023 |  | Implement Risk type C (Most likely Market & Liquidity) Framework at SCUSA | 62d | 2015-12-04 | 2016-02-29 |  |  | 349d | start no earlier than 2015-12-04 |
| 1024 |  | Risk Type C (Most Likely Market & Liquidity) at SHUSA, SBNA, SCUSA and Other Entities Implemented | 0d | 2016-03-01 | 2016-03-01 | 1023, 1022, 1021 |  |  |  |
| 1025 | 1.1.4.1.2.2 | **MILESTONE: Risk type D (Most likely Compliance) Framework at SHUSA, SBNA, SCUSA, and Other Entities Implemented** | 62d | 2015-12-04 | 2016-03-01 |  |  | 62d |  |
| 1026 |  | Implement Risk type D (Most likely Compliance) Framework at SHUSA | 62d | 2015-12-04 | 2016-02-29 |  |  | 349d | start no earlier than 2015-12-04 |
| 1027 |  | Implement Risk type D (Most likely Compliance) Framework at SBNA | 62d | 2015-12-04 | 2016-02-29 |  |  | 349d | start no earlier than 2015-12-04 |
| 1028 |  | Implement Risk type D (Most likely Compliance) Framework at SCUSA | 62d | 2015-12-04 | 2016-02-29 |  |  | 349d | start no earlier than 2015-12-04 |
| 1029 |  | MILESTONE: Risk type D (Most likely Compliance) Framework at SHUSA, SBNA, SCUSA, and Other Entities Implemented | 0d | 2016-03-01 | 2016-03-01 | 1028, 1027, 1026 |  |  |  |
| 1030 | 1.1.4.1.3 | **DELIVERABLE: Wave 3 Risk Types E and F Implemented at SHUSA, SBNA, SCUSA and Other Entities** | 62d | 2016-02-26 | 2016-05-24 |  |  | 62d |  |
| 1031 | 1.1.4.1.3.1 | **MILESTONE: Risk type E (Most likely Risk Management Information) Framework at SHUSA, SBNA, and SCUSA Implemented** | 62d | 2016-02-26 | 2016-05-24 |  |  | 62d |  |
| 1032 |  | Implement Risk type E (Most likely Risk Management Information) Framework at SHUSA, SBNA, and SCUSA | 62d | 2016-02-26 | 2016-05-23 |  |  | 289d | start no earlier than 2016-02-26 |
| 1033 |  | Implement Risk type E (Most likely Risk Management Information) Framework at SHUSA, SBNA, and SCUSA | 62d | 2016-02-26 | 2016-05-23 |  |  | 289d | start no earlier than 2016-02-26 |
| 1034 |  | Implement Risk type E (Most likely Risk Management Information) Framework at SHUSA, SBNA, and SCUSA | 62d | 2016-02-26 | 2016-05-23 |  |  | 289d | start no earlier than 2016-02-26 |
| 1035 |  | Risk type E (Most likely Risk Management Information) Framework at SHUSA, SBNA, and SCUSA Implemented | 0d | 2016-05-24 | 2016-05-24 | 1034, 1033, 1032 |  |  |  |
| 1036 | 1.1.4.1.3.2 | **MILESTONE: Risk type F (Most likely Capital Risk) Framework at SHUSA, SBNA, and SCUSA Implemented** | 62d | 2016-02-26 | 2016-05-24 |  |  | 62d |  |
| 1037 |  | Implement Risk type F (Most likely Capital Risk) Framework at SHUSA, SBNA, and SCUSA | 62d | 2016-02-26 | 2016-05-23 |  |  | 289d | start no earlier than 2016-02-26 |
| 1038 |  | Implement Risk type F (Most likely Capital Risk) Framework at SHUSA, SBNA, and SCUSA | 62d | 2016-02-26 | 2016-05-23 |  |  | 289d | start no earlier than 2016-02-26 |
| 1039 |  | Implement Risk type F (Most likely Capital Risk) Framework at SHUSA, SBNA, and SCUSA | 62d | 2016-02-26 | 2016-05-23 |  |  | 289d | start no earlier than 2016-02-26 |
| 1040 |  | Risk type F (Most likely Capital Risk) Framework at SHUSA, SBNA, and SCUSA Implemented | 0d | 2016-05-24 | 2016-05-24 | 1039, 1038, 1037 |  |  |  |
| 1041 | 1.1.4.2 | **New Credit Risk Rating System** | 392d | 2014-10-01 A | 2016-03-31 |  | 43% | 326d |  |
| 1042 | 1.1.4.2.1 | **DELIVERABLE: Implementation of new ratings to reflect statistically valid rating methodology (CRE Q1-16 /C&I Q2-16)** | 392d | 2014-10-01 A | 2016-03-31 |  | 43% | 326d |  |
| 1043 | 1.1.4.2.1.1 | **MILESTONE: Rating Determination (Includes Model Development)** | 392d | 2014-10-01 A | 2016-03-31 |  | 43% | 326d |  |
| 1044 | 1.1.4.2.1.1.1 | **TASK: CRE** | 304d | 2014-10-01 A | 2015-11-30 |  | 61% | 414d |  |
| 1045 |  | Complete Road Map for CRE and C&I internal risk rating framework | 44d | 2014-10-01 A | 2014-12-01 A |  | 100% |  |  |
| 1046 |  | Data Selection and Sample Procurement for CRE & C&I for internal risk rating framework | 65d | 2014-10-01 A | 2014-12-30 A |  | 100% |  |  |
| 1047 |  | CRE Model developed on sample data (good end results) | 43d | 2014-11-01 A | 2014-12-31 A |  | 100% |  |  |
| 1048 |  | CRE data procurement process completed | 42d | 2015-01-01 A | 2015-02-28 A |  | 100% |  |  |
| 1049 |  | Phase I CRE Model developed on data from 2005 - 2009 (statistical and expert model) | 22d | 2015-03-01 A | 2015-03-31 A |  | 100% |  |  |
| 1050 |  | Phase I CRE Model documentation completed | 22d | 2015-03-01 A | 2015-03-31 A |  | 100% |  |  |

| ID | WBS | Task | Duration | Start | Finish | Predecessors | Complete | Total float | Constraint |
| --- | --- | --- | --- | --- | --- | --- | --- | --- | --- |
| 1051 |  | Phase II CRE Model development in process (includes data from 2005 to 2014) (statistical and expert model) | 33d | 2015-04-01 A | 2015-05-15 A |  | 100% |  |  |
| 1052 |  | Phase II CRE Model documentation in progress | 33d | 2015-04-01 A | 2015-05-15 A |  | 100% |  |  |
| 1053 |  | IT Requirements submission | 21d | 2015-05-01 A | 2015-05-29 A |  | 100% |  |  |
| 1054 |  | Data Technology to implement models CRE | 88d | 2015-06-01 A | 2015-09-30 |  | 5% | 457d |  |
| 1055 |  | QA Submission for CRE Models | 22d | 2015-06-01 | 2015-06-30 |  |  | 523d | start no earlier than 2015-06-01 |
| 1056 |  | QA Approval for CRE Models (David Spector) | 65d | 2015-06-01 | 2015-08-28 |  |  | 480d | start no earlier than 2015-06-01 |
| 1057 |  | Credit Professional start testing and using the CRE Model | 22d | 2015-10-01 | 2015-10-30 |  |  | 435d | start no earlier than 2015-10-01 |
| 1058 |  | Final Rollout | 21d | 2015-11-02 | 2015-11-30 |  |  | 414d | start no earlier than 2015-11-02 |
| 1059 |  | CRE Part Prepared | 0d | 2015-11-30 | 2015-11-30 |  |  | 415d | start no earlier than 2015-11-30 |
| 1060 | 1.1.4.2.1.1.2 | **TASK: C&I (Start after the CRE, structure can be leverage from CRE)** | 216d | 2015-02-02 A | 2015-11-30 |  | 59% | 414d |  |
| 1061 |  | Prepare plan for C&I - dependent on CRE IT requirements submission (completion date estimated for 12/3/15) | 1d | 2015-05-01 A | 2015-05-01 A |  | 100% |  |  |
| 1062 |  | C&I data procurement process completed | 20d | 2015-02-02 A | 2015-02-27 A |  | 100% |  |  |
| 1063 |  | C&I Model developed on sample data (good end results) | 20d | 2015-02-02 A | 2015-02-27 A |  | 100% |  |  |
| 1064 |  | Phase II C&I Model development in process (includes data from 2005 to 2014) (statistical and expert model) | 23d | 2015-07-01 | 2015-07-31 |  |  | 500d | start no earlier than 2015-07-01 |
| 1065 |  | Phase II C&I Model documentation in progress | 1d | 2015-08-31 | 2015-08-31 |  |  | 479d | start no earlier than 2015-08-31 |
| 1066 |  | IT Requirements submission | 1d | 2015-09-30 | 2015-09-30 |  |  | 457d | start no earlier than 2015-09-30 |
| 1067 |  | Data Technology to implement models C&I | 1d | 2015-10-30 | 2015-10-30 |  |  | 435d | start no earlier than 2015-10-30 |
| 1068 |  | QA Submission for C&I Models | 1d | 2015-10-30 | 2015-10-30 |  |  | 435d | start no earlier than 2015-10-30 |
| 1069 |  | QA Approval for C&I Models (David Spector) | 1d | 2015-11-30 | 2015-11-30 |  |  | 414d | start no earlier than 2015-11-30 |
| 1070 |  | C&I Part Prepared | 0d | 2015-11-30 | 2015-11-30 |  |  | 415d | start no earlier than 2015-11-30 |
| 1071 | 1.1.4.2.1.1.3 | **TASK: Governance** | 45d | 2015-06-01 A | 2015-07-31 |  | 32% | 500d |  |
| 1072 |  | Finalize Risk Rating Charter | 22d | 2015-06-01 A | 2015-06-30 A |  | 100% |  |  |
| 1073 |  | Finalize Rating Policy Document | 23d | 2015-07-01 | 2015-07-31 |  |  | 500d | start no earlier than 2015-07-01 |
| 1074 |  | Obtain Policy Approval from CRC | 23d | 2015-07-01 | 2015-07-31 |  |  | 500d | start no earlier than 2015-07-01 |
| 1075 |  | Governance Part Prepared | 0d | 2015-07-31 | 2015-07-31 |  |  | 501d | start no earlier than 2015-07-31 |
| 1076 | 1.1.4.2.1.1.4 | **TASK: Training** | 153d | 2015-06-01 | 2015-12-30 |  |  | 392d |  |
| 1077 |  | Complete internal socialization document | 22d | 2015-06-01 | 2015-06-30 |  |  | 523d | start no earlier than 2015-06-01 |
| 1078 |  | Develop CRE Training Module | 22d | 2015-09-01 | 2015-09-30 |  |  | 457d | start no earlier than 2015-09-01 |
| 1079 |  | CRE Training Rollout | 22d | 2015-12-01 | 2015-12-30 |  |  | 392d | start no earlier than 2015-12-01 |
| 1080 |  | Develop C&I Training | 22d | 2015-12-01 | 2015-12-30 |  |  | 392d | start no earlier than 2015-12-01 |
| 1081 |  | Training Prepared | 0d | 2015-12-30 | 2015-12-30 |  |  | 393d | start no earlier than 2015-12-30 |
| 1082 | 1.1.4.2.1.1.5 | **TASK: Testing** | 88d | 2015-06-01 | 2015-09-30 |  |  | 457d |  |
| 1083 |  | In conjunction with Modeling, prepare for User Testing | 22d | 2015-06-01 | 2015-06-30 |  |  | 523d | start no earlier than 2015-06-01 |
| 1084 |  | UAT feedback and Modeling | 22d | 2015-09-01 | 2015-09-30 |  |  | 457d | start no earlier than 2015-09-01 |
| 1085 |  | Testing Prepared | 0d | 2015-09-30 | 2015-09-30 |  |  | 458d | start no earlier than 2015-09-30 |
| 1086 | 1.1.4.2.1.1.6 | **TASK: Implementation** | 219d | 2015-06-01 | 2016-03-31 |  |  | 326d |  |
| 1087 |  | T&O coordination/input | 22d | 2015-06-01 | 2015-06-30 |  |  | 523d | start no earlier than 2015-06-01 |
| 1088 |  | CRE Implementation | 1d | 2016-03-31 | 2016-03-31 |  |  | 326d | start no earlier than 2016-03-31 |
| 1089 |  | Implementation Prepared | 0d | 2016-03-31 | 2016-03-31 |  |  | 327d | start no earlier than 2016-03-31 |
| 1090 | 1.1.4.2.1.1.7 | **TASK: Procedures** | 21d | 2015-08-03 | 2015-08-31 |  |  | 479d |  |
| 1091 |  | Develop Standards and Processes for Users | 21d | 2015-08-03 | 2015-08-31 |  |  | 479d | start no earlier than 2015-08-03 |
| 1092 |  | Standards and Processes Prepared | 0d | 2015-08-31 | 2015-08-31 |  |  | 480d | start no earlier than 2015-08-31 |
| 1093 | 1.1.4.2.1.1.8 | **TASK: Approval Committee** | 22d | 2015-06-01 | 2015-06-30 |  |  | 523d |  |
| 1094 |  | Create Draft Committee Calendar for Q3 and Q4 2015 | 22d | 2015-06-01 | 2015-06-30 |  |  | 523d | start no earlier than 2015-06-01 |
| 1095 |  | Draft Committee Calendar Prepared | 0d | 2015-06-30 | 2015-06-30 |  |  | 524d | start no earlier than 2015-06-30 |
| 1096 | 1.1.4.2.1.1.9 | **TASK: Staffing** | 88d | 2015-06-01 | 2015-09-30 |  |  | 457d |  |
| 1097 |  | Decide on hire | 22d | 2015-09-01 | 2015-09-30 |  |  | 457d | start no earlier than 2015-09-01 |
| 1098 |  | Communication | 22d | 2015-06-01 | 2015-06-30 |  |  | 523d | start no earlier than 2015-06-01 |
| 1099 |  | Staffing Completed | 0d | 2015-06-30 | 2015-06-30 |  |  | 524d | start no earlier than 2015-06-30 |
| 1100 | 1.1.4.3 | **Liquidity Stress Test Challenge Process Framework** | 154d | 2015-06-01 | 2015-12-31 |  |  | 391d |  |
| 1101 | 1.1.4.3.1 | **DELIVERABLE: Liquidity Stress Test Challenge Process Framework** | 154d | 2015-06-01 | 2015-12-31 |  |  | 391d |  |
| 1102 | 1.1.4.3.1.1 | **MILESTONE: Liquidity Stress Test Challenge Process Framework Prepared** | 11d | 2015-06-01 | 2015-06-15 |  |  | 534d |  |
| 1103 |  | Document the roles and responsibilities of all parties involved with the liquidity stress test operating model | 11d | 2015-06-01 | 2015-06-15 |  |  | 534d | start no earlier than 2015-06-01 |
| 1104 |  | Define specific steps of the liquidity stress test process, including the review and approval process to the committees | 11d | 2015-06-01 | 2015-06-15 |  |  | 534d | start no earlier than 2015-06-01 |
| 1105 |  | Liquidity Stress Test Challenge Process Framework Prepared | 0d | 2015-06-15 | 2015-06-15 |  |  | 535d | start no earlier than 2015-06-15 |
| 1106 | 1.1.4.3.1.2 | **MILESTONE: Committees Approvals and Review** | 134d | 2015-06-29 | 2015-12-31 |  |  | 391d |  |
| 1107 |  | Submit to the Market Risk Committee for approval | 2d | 2015-06-29 | 2015-06-30 |  |  | 523d | start no earlier than 2015-06-29 |
| 1108 |  | Submit to the Liquidity Risk Management Committee for approval | 2d | 2015-06-29 | 2015-06-30 |  |  | 523d | start no earlier than 2015-06-29 |
| 1109 |  | Submit to the Enterprise Risk Management Committee for approval | 2d | 2015-06-29 | 2015-06-30 |  |  | 523d | start no earlier than 2015-06-29 |
| 1110 |  | Submit to BERC for review & Approval | 11d | 2015-09-01 | 2015-09-15 |  |  | 468d | start no earlier than 2015-09-01 |
| 1111 |  | Implement operating model | 66d | 2015-10-01 | 2015-12-31 |  |  | 391d | start no earlier than 2015-10-01 |
| 1112 |  | Committees Approvals and Review Completed | 0d | 2015-12-31 | 2015-12-31 |  |  | 392d | start no earlier than 2015-12-31 |
| 1113 | 1.1.4.4 | **Year 2 & 3 Deliverable / Milestone** | 1d? | 2014-10-01 | 2014-10-01 |  |  |  |  |
| 1114 | 1.1.4.4.1 | **DELIVERABLE: Targeted, high-level review of wholesale credit** | 45d | 2016-02-29 | 2016-04-29 |  |  | -412d |  |
| 1115 | 1.1.4.4.1.1 | **MILESTONE: High-level review and revision of wholesale credit process limits and controls and delegation of authority at SCUSA and SBNA** | 45d | 2016-02-29 | 2016-04-29 |  |  | -412d |  |
| 1116 |  | Identify key steps in credit origination process by product type | 10d | 2016-02-29 | 2016-03-11 |  |  | -412d | start no earlier than 2016-02-29 |
| 1117 |  | Define controls and operational limits for each process step | 15d | 2016-03-14 | 2016-04-01 | 1116 |  | -412d |  |
| 1118 |  | Articulate scope of authority across the organization and associated escalation procedures | 15d | 2016-04-04 | 2016-04-22 | 1117 |  | -412d |  |
| 1119 |  | Launch remediation efforts, depending on progress of roll-out of organizational structure | 5d | 2016-04-25 | 2016-04-29 | 1118 |  | -412d |  |
| 1120 |  | Launch of remediation efforts | 0d | 2016-04-29 | 2016-04-29 | 1118, 1119 |  | -412d |  |

| ID | WBS | Task | Duration | Start | Finish | Predecessors | Total float | Constraint |
| --- | --- | --- | --- | --- | --- | --- | --- | --- |
| 1121 | 1.1.4.4.2 | **DELIVERABLE: Gap analyses and remediation plans for the management of credit, market and trading, interest rate and strategic/reputational risk** | 60d | 2016-06-27 | 2016-09-16 |  | -512d |  |
| 1122 | 1.1.4.4.2.1 | **MILESTONE: Gap analyses and remediation plans for each risk (credit, market and trading, interest rate and strategic/reputational)** | 60d | 2016-06-27 | 2016-09-16 |  | -512d |  |
| 1123 |  | Identify shortcomings in efficiency, methodology, tools and processes | 40d | 2016-06-27 | 2016-08-19 |  | -512d | start no earlier than 2016-06-27 |
| 1124 |  | Benchmark current practices with industry best practices | 10d | 2016-08-08 | 2016-08-19 | 1123FS-10d | -512d |  |
| 1125 |  | Create actionable prioritized remediation plans to address shortcomings and gaps to best practice | 15d | 2016-08-22 | 2016-09-09 | 1124 | -512d |  |
| 1126 |  | Socialize remediation plans with key stakeholders (SHUSA, SBNA, SCUSA) | 5d | 2016-09-12 | 2016-09-16 | 1125 | -512d |  |
| 1127 |  | Complete gap analysis and delivery of remediation plans | 0d | 2016-09-09 | 2016-09-09 | 1125 | -507d |  |
| 1128 | 1.1.5 | **Risk Monitoring** | 661d? | 2014-09-19 | 2017-03-31 |  | 0d |  |
| 1129 | 1.1.5.1 | **Internal Reporting Review, Design and Enhancements** | 401d? | 2014-09-19 | 2016-04-01 |  | 0d |  |
| 1130 | 1.1.5.1.1 | **DELIVERABLE: Quick-win enhancements for priority reports (Board and Level 1 Risk Committees)** | 45d | 2015-06-15 | 2015-08-17 |  | 490d |  |
| 1131 | 1.1.5.1.1.1 | **MILESTONE: Assessment of current reporting landscape (for Board and Level 1 Risk Committee reports only)** | 30d | 2015-06-15 | 2015-07-27 |  | 505d |  |
| 1132 |  | Inventory existing reports | 10d | 2015-06-15 | 2015-06-26 |  | 525d | start no earlier than 2015-06-15 |
| 1133 |  | Assess reports against best practice | 10d | 2015-06-22 | 2015-07-03 |  | 505d | start no earlier than 2015-06-22 |
| 1134 |  | Determine if any quick-win enhancements can be made in terms of audience, content, frequency, format, etc. | 10d | 2015-07-06 | 2015-07-17 | 1133 | 505d | finish no earlier than 2015-07-03 |
| 1135 |  | Detail prioritization of and plan for enhancements | 5d | 2015-07-20 | 2015-07-24 | 1134 | 505d | finish no earlier than 2015-07-03 |
| 1136 |  | Completion of assessment and plan for implementation of enhancements | 0d | 2015-07-27 | 2015-07-27 | 1135 | 505d | start no earlier than 2015-07-27 |
| 1137 | 1.1.5.1.1.2 | **MILESTONE: Assessment of governance around reports (for Board and Level 1 Risk Committee reports only)** | 25d | 2015-06-22 | 2015-07-27 |  | 505d |  |
| 1138 |  | Assess governance around internal reporting | 10d | 2015-06-22 | 2015-07-03 |  | 505d | start no earlier than 2015-06-22 |
| 1139 |  | Determine if any quick-win enhancements can be made in terms of standards, processes (e.g. review process), documentation, controls, etc. | 10d | 2015-07-06 | 2015-07-17 | 1138 | 505d | finish no earlier than 2015-07-17 |
| 1140 |  | Detail prioritization of and plan for enhancements | 5d | 2015-07-20 | 2015-07-24 | 1139 | 505d | finish no earlier than 2015-07-17 |
| 1141 |  | Completion of assessment and plan for implementation of enhancements | 0d | 2015-07-27 | 2015-07-27 | 1140 | 505d | start no earlier than 2015-07-27 |
| 1142 | 1.1.5.1.1.3 | **MILESTONE: Implementation of quick-win enhancements (for Board and Level 1 Risk Committee reports only)** | 15d | 2015-07-27 | 2015-08-17 |  | 490d |  |
| 1143 |  | Implement quick-win enhancements for priority reports | 10d | 2015-07-27 | 2015-08-07 |  | 490d | start no earlier than 2015-07-27 |
| 1144 |  | Socialize with key stakeholders (SHUSA Board and Risk Managers) | 5d | 2015-08-10 | 2015-08-14 | 1143 | 490d | finish no earlier than 2015-07-31 |
| 1145 |  | Updated priority reports | 0d | 2015-08-17 | 2015-08-17 | 1144 | 490d | start no earlier than 2015-08-17 |
| 1146 | 1.1.5.1.2 | **DELIVERABLE: Definition of target risk reporting landscape** | 30d | 2015-07-27 | 2015-09-07 |  | 475d |  |
| 1147 | 1.1.5.1.2.1 | **MILESTONE: Definition of target risk reporting landscape** | 30d | 2015-07-27 | 2015-09-07 |  | 475d |  |
| 1148 |  | Refine different audiences of Risk reporting (Group, local, regulatory, etc.) | 5d | 2015-07-27 | 2015-07-31 |  | 500d | start no earlier than 2015-07-27 |
| 1149 |  | For each audience, outline essential content and frequency of reporting and document as target risk reporting landscape | 25d | 2015-07-27 | 2015-08-28 |  | 475d | start no earlier than 2015-07-27 |
| 1150 |  | Socialize with key stakeholders (SHUSA) and update target landscape as necessary | 5d | 2015-08-31 | 2015-09-04 | 1149 | 475d | finish no earlier than 2015-08-14 |
| 1151 |  | Prioritize reports for enhancement and assign reports to Wave 1 vs. Wave 2 of enhancements based on materiality | 5d | 2015-08-31 | 2015-09-04 |  | 475d | start no earlier than 2015-08-31 |
| 1152 |  | Documented target risk reporting landscape | 0d | 2015-09-07 | 2015-09-07 | 1151 | 475d | start no earlier than 2015-09-07 |
| 1153 | 1.1.5.1.3 | **DELIVERABLE: Wave 1 of reporting enhancements** | 50d | 2015-08-31 | 2015-11-09 |  | 430d |  |
| 1154 | 1.1.5.1.3.1 | **MILESTONE: Development of template reports and socialization of Wave 1** | 20d | 2015-08-31 | 2015-09-25 |  | 460d |  |
| 1155 |  | Design reporting templates/dashboard based on latest industry practices, leveraging existing work | 15d | 2015-08-31 | 2015-09-18 |  | 460d | start no earlier than 2015-08-31 |
| 1156 |  | Review glossary of definitions to use across subsidiaries and business units | 15d | 2015-08-31 | 2015-09-18 |  | 465d | start no earlier than 2015-08-31 |
| 1157 |  | Socialize with key stakeholders (SHUSA) and update target landscape as necessary | 5d | 2015-09-21 | 2015-09-25 | 1155 | 460d | start no earlier than 2015-09-21 |
| 1158 |  | Completed templates for Wave 1 reports | 0d | 2015-09-25 | 2015-09-25 |  | 461d | start no earlier than 2015-09-25 |
| 1159 | 1.1.5.1.3.2 | **MILESTONE: Roll-out of Wave 1 reports** | 30d | 2015-09-28 | 2015-11-09 |  | 425d |  |
| 1160 |  | Review business and data requirements for both interim and target state of Wave 1 reports and make additions as necessary | 20d | 2015-09-28 | 2015-10-23 |  | 425d | start no earlier than 2015-09-28 |
| 1161 |  | Pilot reports using available data (manual where necessary) | 10d | 2015-09-28 | 2015-10-09 |  | 450d | start no earlier than 2015-09-28 |
| 1162 |  | Collect feedback from key stakeholders (SHUSA) | 5d | 2015-10-26 | 2015-10-30 |  | 435d | finish no earlier than 2015-10-30 |
| 1163 |  | Refine reports based on stakeholder feedback | 5d | 2015-11-02 | 2015-11-06 |  | 430d | finish no earlier than 2015-11-06 |
| 1164 |  | Implement refined reports in-production | 1d | 2015-11-06 | 2015-11-06 |  | 430d | start no earlier than 2015-11-06 |
| 1165 |  | Completion of Wave 1 roll-out | 0d | 2015-11-09 | 2015-11-09 |  | 430d | start no earlier than 2015-11-09 |
| 1166 | 1.1.5.1.4 | **DELIVERABLE: Wave 2 of reporting enhancements** | 60d | 2015-10-05 | 2015-12-28 |  | 395d |  |
| 1167 | 1.1.5.1.4.1 | **MILESTONE: Development of template reports and socialization of Wave 2 (based on materiality)** | 20d | 2015-10-05 | 2015-10-30 |  | 435d |  |
| 1168 |  | Design reporting templates/dashboard based on latest industry practices, leveraging existing work | 15d | 2015-10-05 | 2015-10-23 |  | 435d | start no earlier than 2015-10-05 |
| 1169 |  | Socialize with key stakeholders (SHUSA) and update target landscape as necessary | 5d | 2015-10-26 | 2015-10-30 | 1168 | 435d | start no earlier than 2015-10-26 |
| 1170 |  | Completed templates for Wave 2 reports | 0d | 2015-10-30 | 2015-10-30 |  | 436d | start no earlier than 2015-10-30 |
| 1171 | 1.1.5.1.4.2 | **MILESTONE: Roll-out of Wave 2 reports** | 40d | 2015-11-02 | 2015-12-28 |  | 385d |  |
| 1172 |  | Review business and data requirements for both interim and target state of Wave 2 reports and make additions as necessary | 35d | 2015-11-02 | 2015-12-18 |  | 385d | finish no earlier than 2015-12-18 |
| 1173 |  | Pilot reports using available data (manual where necessary) | 30d | 2015-11-02 | 2015-12-11 |  | 405d | finish no earlier than 2015-12-11 |
| 1174 |  | Collect feedback from key stakeholders (SHUSA) | 5d | 2015-12-14 | 2015-12-18 |  | 400d | finish no earlier than 2015-12-18 |
| 1175 |  | Refine reports based on stakeholder feedback | 5d | 2015-12-21 | 2015-12-25 |  | 395d | finish no earlier than 2015-12-25 |
| 1176 |  | Implement refined reports in-production | 1d | 2015-12-25 | 2015-12-25 |  | 395d | start no earlier than 2015-12-25 |
| 1177 |  | Completion of Wave 2 roll-out | 0d | 2015-12-28 | 2015-12-28 |  | 395d | start no earlier than 2015-12-28 |
| 1178 | 1.1.5.1.5 | **DELIVERABLE: Wave 3 of reporting enhancements** | 401d? | 2014-09-19 | 2016-04-01 |  | 0d |  |
| 1179 | 1.1.5.1.5.1 | **MILESTONE: Development template reports and socialization of Wave 3 (Remaining Entities)** | 70d | 2015-12-28 | 2016-04-01 |  | 325d |  |
| 1180 |  | Expansion to include IHC and all US entities, same steps as Wave 1 and 2 - timeline TBD | 70d | 2015-12-28 | 2016-04-01 |  | 325d | start no earlier than 2015-12-28 |
| 1181 |  | Completion of Wave 3 roll-out | 0d | 2016-04-01 | 2016-04-01 |  | 326d | start no earlier than 2016-04-01 |
| 1182 | 1.1.5.1.5.2 | **MILESTONE: Roll- out of Wave 3 reports** | 1d? | 2014-09-19 | 2014-09-19 |  | 0d |  |
| 1183 |  | Completion of Wave 3 Roll-out | 1d? | 2014-09-19 | 2014-09-19 |  |  |  |
| 1184 | 1.1.5.2 | **Current State Gap Analysis** | 55d | 2015-10-26 | 2016-01-08 |  | 385d |  |
| 1185 | 1.1.5.2.1 | **DELIVERABLE: Gap Analysis of Current Data Against Enhanced Report Data Requirements** | 55d | 2015-10-26 | 2016-01-08 |  | 385d |  |
| 1186 | 1.1.5.2.1.1 | **MILESTONE: Data Inventory of Wave 1 of Enhanced Reports Created** | 5d | 2015-10-26 | 2015-10-30 |  | 425d |  |
| 1187 |  | Conduct Data Inventory of Wave 1 of Enhanced Reports | 5d | 2015-10-26 | 2015-10-30 | 1160 | 425d |  |
| 1188 |  | Data Inventory of Wave 1 of Enhanced Reports Created | 0d | 2015-10-30 | 2015-10-30 | 1187 | 435d |  |
| 1189 | 1.1.5.2.1.2 | **MILESTONE: Current Data Inventory Assessed Against Wave 1 of Enhanced Reports** | 10d | 2015-11-02 | 2015-11-13 |  | 425d |  |
| 1190 |  | Assess Current Data Inventory Against Wave 1 of Newly Enhanced Reports | 10d | 2015-11-02 | 2015-11-13 | 1187 | 425d |  |

| ID | WBS | Task | Duration | Start | Finish | Predecessors | Total float | Constraint |
| --- | --- | --- | --- | --- | --- | --- | --- | --- |
| 1191 |  | Current Data Inventory Assessed Against Wave 1 of Enhanced Reports | 0d | 2015-11-13 | 2015-11-13 | 1190 | 425d |  |
| 1192 | 1.1.5.2.1.3 | **MILESTONE: Data Inventory of Wave 2 of Enhanced Reports Created** | 5d | 2015-12-21 | 2015-12-25 |  | 385d |  |
| 1193 |  | Conduct Data Inventory of Wave 2 of Enhanced Reports | 5d | 2015-12-21 | 2015-12-25 | 1172 | 385d |  |
| 1194 |  | Data Inventory of Wave 2 of Enhanced Reports Created | 0d | 2015-12-25 | 2015-12-25 | 1193 | 395d |  |
| 1195 | 1.1.5.2.1.4 | **MILESTONE: Current Data Inventory Assessed Against Wave 2 of Enhanced Reports** | 10d | 2015-12-28 | 2016-01-08 |  | 385d |  |
| 1196 |  | Assess Current Data Inventory Against Wave 2 of Enhanced Reports | 10d | 2015-12-28 | 2016-01-08 | 1193 | 385d |  |
| 1197 |  | Current Data Inventory Assessed Against Wave 2 of Enhanced Reports | 0d | 2016-01-08 | 2016-01-08 | 1196 | 385d |  |
| 1198 | 1.1.5.3 | **Years 2 and 3** | 261d? | 2016-04-01 | 2017-03-31 |  | 0d |  |
| 1199 | 1.1.5.3.1 | **DELIVERABLE: Gap Analysis of Current Data Against Enhanced Reporting** | 0d | 2016-06-30 | 2016-06-30 |  | 0d |  |
| 1200 |  | MILESTONE: Data Inventory of Wave 3 of Enhanced Reports Created | 0d | 2016-06-30 | 2016-06-30 |  |  |  |
| 1201 |  | MILESTONE: Current Data Inventory Assessed Against Wave 3 of Enhanced Reports | 0d | 2016-06-30 | 2016-06-30 |  |  |  |
| 1202 | 1.1.5.3.2 | **DELIVERABLE: Develop and launch additional waves of reporting enhancements** | 131d | 2016-04-01 | 2016-09-30 |  | 195d |  |
| 1203 | 1.1.5.3.2.1 | **MILESTONE: Develop templates reports at multiple levels of granularity (TBD), including management committee (based on materiality) and sub-committees level, Line of Business, and day-to-day operations level** | 130d | 2016-04-01 | 2016-09-29 |  | 196d |  |
| 1204 |  | Design reporting templates/dashboard based on latest industry practices, leveraging existing work | 65d | 2016-04-01 | 2016-06-30 |  | 196d | start no earlier than 2016-04-01 |
| 1205 |  | Review glossary of definitions to use across subsidiaries and business units | 65d | 2016-04-01 | 2016-06-30 |  | 261d | start no earlier than 2016-04-01 |
| 1206 |  | Socialize with key stakeholders (SHUSA) and update target landscape as necessary | 65d | 2016-07-01 | 2016-09-29 | 1204 | 196d | start no earlier than 2016-04-01 |
| 1207 |  | Completed template development for additional levels of granularity | 0d | 2016-06-30 | 2016-06-30 |  | 262d | start no earlier than 2016-06-30 |
| 1208 | 1.1.5.3.2.2 | **MILESTONE: Launch reports at multiple levels of granularity** | 66d | 2016-07-01 | 2016-09-30 |  | 195d |  |
| 1209 |  | Review business and data requirements for both interim and target state of Wave 1 reports and make additions as necessary | 66d | 2016-07-01 | 2016-09-30 |  | 195d | start no earlier than 2016-07-01 |
| 1210 |  | Pilot reports using available data (manual where necessary) | 66d | 2016-07-01 | 2016-09-30 |  | 195d | start no earlier than 2016-07-01 |
| 1211 |  | Collect feedback from key stakeholders (SHUSA) | 66d | 2016-07-01 | 2016-09-30 |  | 195d | start no earlier than 2016-07-01 |
| 1212 |  | Refine reports based on stakeholder feedback | 66d | 2016-07-01 | 2016-09-30 |  | 195d | start no earlier than 2016-07-01 |
| 1213 |  | Implement refined reports in-production | 66d | 2016-07-01 | 2016-09-30 |  | 195d | start no earlier than 2016-07-01 |
| 1214 |  | Completed launch | 0d | 2016-09-30 | 2016-09-30 |  | 196d | start no earlier than 2016-09-30 |
| 1215 | 1.1.5.3.3 | **DELIVERABLE: Refinements to monitoring documentation and automation** | 131d | 2016-04-01 | 2016-09-30 |  | 195d |  |
| 1216 | 1.1.5.3.3.1 | **MILESTONE: Completion of methodology documentation and technology implementation** | 131d | 2016-04-01 | 2016-09-30 |  | 195d |  |
| 1217 |  | Document methodology for creating all adjusted/new reports | 131d | 2016-04-01 | 2016-09-30 |  | 195d | start no earlier than 2016-04-01 |
| 1218 |  | Test and implement technology to automate the completion of the Y2/Q1 reports | 131d | 2016-04-01 | 2016-09-30 |  | 195d | start no earlier than 2016-04-01 |
| 1219 |  | Completion of methodology documentation and technology implementation | 0d | 2016-09-30 | 2016-09-30 |  | 196d | start no earlier than 2016-09-30 |
| 1220 | 1.1.5.3.4 | **DELIVERABLE: Develop controls for additional reporting** | 131d | 2016-04-01 | 2016-09-30 |  | 195d |  |
| 1221 | 1.1.5.3.4.1 | **MILESTONE: Completion of QA Controls** | 131d | 2016-04-01 | 2016-09-30 |  | 195d |  |
| 1222 |  | Develop quality assurance controls for newly enhanced reports | 131d | 2016-04-01 | 2016-09-30 |  | 195d | start no earlier than 2016-04-01 |
| 1223 |  | Completion of QA controls | 0d | 2016-09-30 | 2016-09-30 |  | 196d | start no earlier than 2016-09-30 |
| 1224 | 1.1.5.3.5 | **DELIVERABLE: Assess resource needs and conduct additional refinements to monitoring requirements** | 261d? | 2016-04-01 | 2017-03-31 |  | 0d |  |
| 1225 |  | MILESTONE: Assess resources to produce and deliver reports | 196d | 2016-04-01 | 2016-12-30 |  | 130d | start no earlier than 2016-04-01 |
| 1226 |  | MILESTONE: Continually update business requirements for reporting, and assess resources to produce and deliver reports | 261d | 2016-04-01 | 2017-03-31 |  | 65d | start no earlier than 2016-04-01 |
| 1227 |  | MILESTONE: Completion of additional refinements to monitoring requirements | 0d | 2017-03-31 | 2017-03-31 |  | 66d | start no earlier than 2017-03-31 |

## Version 2 (saved 2015-06-26, file 20150624 Risk Transformation_Master Submit_updt625.mpp)

Last finish stays 2017-06-30. Complete tasks 13 → 9.

Added:

| ID | Task | Duration | Start | Finish | Predecessors | Constraint |
| --- | --- | --- | --- | --- | --- | --- |
| 6 | DELIVERABLE: SHUSA-level RAS Implementation, supporting processes and documentation | 0d | 2015-08-14 | 2015-08-14 |  | start no earlier than 2015-08-14 |
| 7 | DELIVERABLE: SHUSA-level RAS framework approval process | 0d | 2015-10-30 | 2015-10-30 |  | start no earlier than 2015-10-30 |
| 8 | DELIVERABLE: Assessment of short-term SCUSA RAS | 0d | 2015-06-26 | 2015-06-26 |  | start no earlier than 2015-06-26 |
| 9 | DELIVERABLE: Definition of approach for cascading SHUSA-level RAS to subsidiaries and levels below | 0d | 2015-08-14 | 2015-08-14 |  | start no earlier than 2015-08-14 |
| 10 | DELIVERABLE: RAS for priority subsidiaries SBNA & SCUSA – follow similar process as SHUSA | 0d | 2016-02-24 | 2016-02-24 |  | start no earlier than 2016-02-24 |
| 11 | DELIVERABLE: RAS for remainder of subsidiaries and select Bus (SIS NY, Puerto Rico, Miami) | 0d | 2016-06-30 | 2016-06-30 |  | start no earlier than 2016-06-30 |
| 12 | DELIVERABLE: Initialized embedding of RAS in material processes | 0d | 2015-11-27 | 2015-11-27 |  | start no earlier than 2015-11-27 |
| 13 | DELIVERABLE: Plan implementation of RAS in all material processes | 0d | 2016-01-11 | 2016-01-11 |  | start no earlier than 2016-01-11 |
| 69 | Deliver SHUSA Metrics IT Requirements to Data / IT | 0d | 2015-08-04 | 2015-08-04 | 68 |  |
| 108 | Deliver Board-approved SHUSA-level RAS to CCAR | 0d | 2015-11-02 | 2015-11-02 | 107 |  |
| 168 | Deliver Requirements for SHUSA metrics and limits to Data / IT | 0d | 2015-10-06 | 2015-10-06 | 167 |  |
| 244 | Deliver plan to Operational Risk, Model Risk and Model Development for individual risk types to be aligned | 0d | 2016-01-12 | 2016-01-12 | 243 |  |
| 271 | DELIVERABLE: Enhance Performance Scorecards | 0d | 2015-11-30 | 2015-11-30 |  | start no earlier than 2015-11-30 |
| 272 | DELIVERABLE: Risk organizational structure charts and subsidiary reporting schemes submitted to CRO for approval (SHUSA) | 0d | 2015-07-24 | 2015-07-24 |  | start no earlier than 2015-07-24 |
| 273 | DELIVERABLE: Risk type A (Most likely Credit) | 0d | 2015-09-14 | 2015-09-14 |  | start no earlier than 2015-09-14 |
| 274 | DELIVERABLE: Risk type B (Most likely ERM + RAS + Strategic) | 0d | 2015-09-14 | 2015-09-14 |  | start no earlier than 2015-09-14 |
| 275 | DELIVERABLE: Risk type C (Most likely Market & Liquidity) | 0d | 2015-12-07 | 2015-12-07 |  | start no earlier than 2015-12-07 |
| 276 | DELIVERABLE: Risk type D (Most likely Compliance) | 0d | 2015-12-07 | 2015-12-07 |  | start no earlier than 2015-12-07 |
| 277 | DELIVERABLE: Risk type E (Most likely Risk Management Information) | 0d | 2016-02-29 | 2016-02-29 |  | start no earlier than 2016-02-29 |
| 278 | DELIVERABLE: Risk type F (Most likely Capital Risk) | 0d | 2016-02-29 | 2016-02-29 |  | start no earlier than 2016-02-29 |
| 279 | DELIVERABLE: 1st Round Post Implementation Review Conducted | 0d | 2016-01-04 | 2016-01-04 |  | start no earlier than 2016-01-04 |
| 280 | DELIVERABLE: 2nd Round Post Implementation Review Conducted | 0d | 2016-03-25 | 2016-03-25 |  | start no earlier than 2016-03-25 |
| 281 | DELIVERABLE: 3rd Round Post Implementation Review Conducted | 0d | 2016-06-20 | 2016-06-20 |  | start no earlier than 2016-06-20 |
| 282 | DELIVERABLE: Strong and Desired Risk Culture Defined | 0d | 2016-04-18 | 2016-04-18 |  | start no earlier than 2016-04-18 |
| 283 | DELIVERABLE: Rollout Performance Assessment and Compensation Frameworks across the Organization | 0d | 2017-01-02 | 2017-01-02 |  |  |
| 284 | DELIVERABLE: Communication and training for organizational changes related to 3 LOD | 0d | 2017-01-02 | 2017-01-02 |  |  |
| 285 | DELIVERABLE: Design recruitment and retention mechanisms | 0d | 2017-04-04 | 2017-04-04 |  |  |
| 367 | **Year 2 and Year 3 Priorities** | 328d? | 2016-01-01 | 2017-04-04 |  |  |
| 426 | DELIVERABLE: Assess Foundational Risk Processes and ensure complete foundational risk inventory is in place | 0d | 2016-01-29 | 2016-01-29 |  | start no earlier than 2016-01-29 |
| 427 | DELIVERABLE: Review each Foundational Risk Process, identify deficient processes, and use gap analyses to determine how to optimize processes | 0d | 2016-03-14 | 2016-03-14 |  | start no earlier than 2016-03-14 |
| 428 | DELIVERABLE: Develop remediation of Foundational Risk Process plan | 0d | 2016-03-28 | 2016-03-28 |  | start no earlier than 2016-03-28 |
| 429 | DELIVERABLE: Updated risk taxonomy | 0d | 2015-11-30 | 2015-11-30 |  | start no earlier than 2015-11-30 |
| 430 | DELIVERABLE: Updated material risk inventory template and guidance | 0d | 2015-12-31 | 2015-12-31 |  | start no earlier than 2015-12-31 |
| 431 | DELIVERABLE: Automated interface for risk inventory template | 0d | 2016-03-31 | 2016-03-31 |  | start no earlier than 2016-03-31 |
| 432 | DELIVERABLE: Training materials, policies and procedures based on updated process | 0d | 2016-05-31 | 2016-05-31 |  | start no earlier than 2016-05-31 |
| 433 | DELIVERABLE: Database for foundational inputs and data sources for risk ID | 0d | 2016-11-15 | 2016-11-15 |  | start no earlier than 2016-11-15 |
| 434 | DELIVERABLE: Training materials, policies and procedures for risk ID database and process | 0d | 2017-01-13 | 2017-01-13 |  | start no earlier than 2017-01-13 |
| 435 | **Material Risk Program** | 140d? | 2015-05-28 | 2015-12-10 |  |  |
| 494 | **TASK:SHUSA Top Down Aggregation** | 10d? | 2015-09-25 | 2015-10-09 |  |  |
| 500 | **TASK:Material Risk SHUSA Approval** | 17d? | 2015-10-09 | 2015-11-03 |  |  |
| 504 | Deliver SHUSA Material Risks to CCAR and Capital Plan | 0d | 2015-11-03 | 2015-11-03 | 503 |  |
| 507 | **TASK:Risk ID and Assessment Policy** | 54d? | 2015-09-25 | 2015-12-10 |  |  |
| 548 | **TASK: Commercial: Create Commercial Banking Material Risk Inventory** | 24d | 2015-05-28 | 2015-06-30 |  |  |
| 575 | **TASK: Automotive: Create Automotive Finance Material Risk Inventory** | 24d | 2015-05-28 | 2015-06-30 |  |  |
| 580 | **TASK: Commerical Real Estate Material Risk Inventory** | 3d | 2015-06-26 | 2015-06-30 |  |  |
| 595 | **TASK: Legal Material Risk Inventory** | 3d | 2015-06-26 | 2015-06-30 |  |  |
| 647 | Present SBNA Results to CCAR | 1d | 2015-08-31 | 2015-08-31 |  |  |
| 648 | Deliver SBNA Material Risks to CCAR and Capital Plan | 0d | 2015-09-01 | 2015-09-01 | 646 |  |
| 651 | **TASK:Automotive Finance Material Risk Inventory** | 2d | 2015-06-29 | 2015-06-30 |  |  |
| 656 | **TASK:Personal Lending Material Risk Inventory** | 2d | 2015-06-29 | 2015-06-30 |  |  |
| 661 | **TASK:Human Resources Material Risk Inventory** | 2d | 2015-06-29 | 2015-06-30 |  |  |
| 666 | **TASK:Finance and Accounting Material Risk Inventory** | 2d | 2015-06-29 | 2015-06-30 |  |  |
| 671 | **TASK:Technology and Operations Material Risk Inventory** | 2d | 2015-06-29 | 2015-06-30 |  |  |
| 676 | **TASK:Legal Material Risk Inventory** | 2d | 2015-06-29 | 2015-06-30 |  |  |
| 713 | Present SCUSA Material Risks to CCAR | 1d | 2015-09-01 | 2015-09-01 |  |  |
| 714 | Deliver SCUSA Material Risks to CCAR and Capital Plan | 0d | 2015-09-02 | 2015-09-02 | 713 |  |
| 717 | **TASK:GBM-Cash Equities Brokerage Material Risk Inventory** | 2d | 2015-06-29 | 2015-06-30 |  |  |
| 722 | **TASK:GBM- Debt Underwriting Material Risk Inventory** | 2d | 2015-06-29 | 2015-06-30 |  |  |
| 727 | **TASK:GBM Equity Underwriting Material Risk Inventory** | 2d | 2015-06-29 | 2015-06-30 |  |  |
| 732 | **TASK:GBM- Fixed Income/Bond TradingMaterial Risk Inventory** | 2d | 2015-06-29 | 2015-06-30 |  |  |
| 737 | **TASK:GBM - Futures Brokerage Material Risk Inventory** | 2d | 2015-06-29 | 2015-06-30 |  |  |
| 742 | **TASK:GBM - Fixed Income and Equity Research Material Risk Inventory** | 2d | 2015-06-29 | 2015-06-30 |  |  |
| 747 | **TASK:Human Resources Material Risk Inventory** | 2d | 2015-06-29 | 2015-06-30 |  |  |
| 752 | **TASK:Finance Material Risk Inventory** | 2d | 2015-06-29 | 2015-06-30 |  |  |
| 757 | **TASK:Technology and Operations Material Risk Inventory** | 2d | 2015-06-29 | 2015-06-30 |  |  |
| 762 | **TASK:Legal Material Risk Inventory** | 2d | 2015-06-29 | 2015-06-30 |  |  |
| 799 | Present NY SIS Material Risks to CCAR | 1d | 2015-09-01 | 2015-09-01 |  |  |
| 800 | Deliver NY SIS Material Risks to CCAR and Capital Plan | 0d | 2015-09-02 | 2015-09-02 |  |  |
| 819 | **TASK:Retail Banking: Create Retail Banking Material Risk Inventory** | 24d | 2015-05-28 | 2015-06-30 |  |  |
| 834 | **TASK:Global Banking/Commercial Banking/CRE & Speciality: Create Global Banking Material Risk Inventory** | 24d | 2015-05-28 | 2015-06-30 |  |  |
| 839 | **TASK:Mortgage Servicing Material Risk Inventory** | 2d | 2015-06-29 | 2015-06-30 |  |  |
| 844 | **TASK:Investment Services Material Risk Inventory** | 2d | 2015-06-29 | 2015-06-30 |  |  |
| 849 | **TASK:Trust Material Risk Inventory** | 2d | 2015-06-29 | 2015-06-30 |  |  |
| 854 | **TASK:Pension Plan Material Risk Inventory** | 2d | 2015-06-29 | 2015-06-30 |  |  |
| 859 | **TASK:Foreign Accounts Material Risk Inventory** | 2d | 2015-06-29 | 2015-06-30 |  |  |
| 864 | **TASK:Human Resources Material Risk Inventory** | 24d | 2015-05-28 | 2015-06-30 |  |  |
| 870 | **TASK:Technology and Operations Material Risk Inventory** | 2d | 2015-06-29 | 2015-06-30 |  |  |
| 875 | **TASK:Legal Material Risk Inventory** | 2d | 2015-06-29 | 2015-06-30 |  |  |
| 880 | **TASK:Finance Material Risk Inventory** | 2d | 2015-06-29 | 2015-06-30 |  |  |
| 885 | **TASK:SFS - Island Finance Material Risk Inventory** | 2d | 2015-06-29 | 2015-06-30 |  |  |
| 890 | **TASK:SFS - Special Assets Material Risk Inventory** | 2d | 2015-06-29 | 2015-06-30 |  |  |
| 895 | **TASK:Santander Overseas Bank - GBM Material Risk Inventory** | 2d | 2015-06-29 | 2015-06-30 |  |  |
| 932 | Present Puerto Rico Material Risks to CCAR | 1d | 2015-09-01 | 2015-09-01 |  |  |
| 933 | Deliver Puerto Rico Material Risks to CCAR and Capital Plan | 0d | 2015-09-02 | 2015-09-02 |  |  |
| 936 | **TASK:Private Banking Material Risk Inventory** | 2d | 2015-06-29 | 2015-06-30 |  |  |
| 999 | Present Miami Material Risks to CCAR | 1d | 2015-09-01 | 2015-09-01 |  |  |
| 1000 | Deliver Miami Material Risks to CCAR and Capital Plan | 0d | 2015-09-02 | 2015-09-02 |  |  |
| 1029 | Deliver Technology requirements and BRD for Risk inventory template web interface | 0d | 2016-01-22 | 2016-01-22 |  |  |
| 1045 | **Risk Management Processes Deliverables** | 202d | 2015-12-09 | 2016-09-16 |  |  |
| 1046 | DELIVERABLE: Wave 1 Risk Types A and B Implemented at SHUSA, SBNA, SCUSA and Other Entities | 0d | 2015-12-09 | 2015-12-09 |  | start no earlier than 2015-12-09 |
| 1047 | DELIVERABLE: Wave 2 Risk Types C and D Implemented at SHUSA, SBNA, SCUSA and Other Entities | 0d | 2016-03-01 | 2016-03-01 |  | start no earlier than 2016-03-01 |
| 1048 | DELIVERABLE: Wave 3 Risk Types E and F Implemented at SHUSA, SBNA, SCUSA and Other Entities | 0d | 2016-05-24 | 2016-05-24 |  | start no earlier than 2016-05-24 |
| 1049 | DELIVERABLE: Implementation of new ratings to reflect statistically valid rating methodology (CRE Q1-16 /C&I Q2-16) | 0d | 2016-03-31 | 2016-03-31 |  | start no earlier than 2016-03-31 |
| 1050 | DELIVERABLE: Liquidity Stress Test Challenge Process Framework | 0d | 2015-12-31 | 2015-12-31 |  | start no earlier than 2015-12-31 |
| 1051 | DELIVERABLE: Targeted, high-level review of wholesale credit | 0d | 2016-04-29 | 2016-04-29 |  | start no earlier than 2016-04-29 |
| 1052 | DELIVERABLE: Gap analyses and remediation plans for the management of credit, market and trading, interest rate and strategic/reputational risk | 0d | 2016-09-16 | 2016-09-16 |  | start no earlier than 2016-09-16 |
| 1175 | **Risk Monitoring Deliverables** | 424d | 2015-08-17 | 2017-03-31 |  |  |
| 1176 | DELIVERABLE: Quick-win enhancements for priority reports (Board and Level 1 Risk Committees) | 0d | 2015-08-17 | 2015-08-17 |  | start no earlier than 2015-08-17 |
| 1177 | DELIVERABLE: Definition of target risk reporting landscape | 0d | 2015-09-07 | 2015-09-07 |  | start no earlier than 2015-09-07 |
| 1178 | DELIVERABLE: Wave 1 of reporting enhancements | 0d | 2015-11-09 | 2015-11-09 |  | start no earlier than 2015-11-09 |
| 1179 | DELIVERABLE: Wave 2 of reporting enhancements | 0d | 2015-12-28 | 2015-12-28 |  | start no earlier than 2015-12-28 |
| 1180 | DELIVERABLE: Wave 3 of reporting enhancements | 0d | 2016-04-01 | 2016-04-01 |  | start no earlier than 2016-04-01 |
| 1181 | DELIVERABLE: Gap Analysis of Current Data Against Enhanced Report Data Requirements | 0d | 2016-01-08 | 2016-01-08 |  | start no earlier than 2016-01-08 |
| 1182 | DELIVERABLE: Gap Analysis of Current Data Against Enhanced Reporting | 0d | 2016-06-30 | 2016-06-30 |  | start no earlier than 2016-06-30 |
| 1183 | DELIVERABLE: Develop and launch additional waves of reporting enhancements | 0d | 2016-09-30 | 2016-09-30 |  | start no earlier than 2016-09-30 |
| 1184 | DELIVERABLE: Refinements to monitoring documentation and automation | 0d | 2016-09-30 | 2016-09-30 |  | start no earlier than 2016-09-30 |
| 1185 | DELIVERABLE: Develop controls for additional reporting | 0d | 2016-09-30 | 2016-09-30 |  | start no earlier than 2016-09-30 |
| 1186 | DELIVERABLE: Assess resource needs and conduct additional refinements to monitoring requirements | 0d | 2017-03-31 | 2017-03-31 |  | start no earlier than 2017-03-31 |

Removed: 6 DELIVERABLE: Cascaded RAS across enterprise through creation of subsidiary-level and, where ncessary, BU-level statements; 7 DELIVERABLE: Embedded RAS in material processes across the enterprise; 261 example deliverable (linked to the detail below); 344 DELIVERABLE: Design risk-based compensation framework; 351 DELIVERABLE: Communication and stakeholder engagement; 357 DELIVERABLE: Updates to performance assessment templates; 364 DELIVERABLE: Communications to emphasize progress being made / share best practices; 371 DELIVERABLE: Convey organizational changes to the enterprise; 376 DELIVERABLE: Enterprise-wide training and development of job descriptions with explicit focus on three lines of defense; 385 DELIVERABLE: Recruitment and retention mechanisms (e.g. Professional development and job rotation programs, job satisfaction assessments, and compensation structure); 390 DELIVERABLE: Action plans for necessary remediation efforts; 397 DELIVERABLE: Assess Risk Culture across the Organization; 467 DELIVERABLE:SHUSA Top Down Aggregation; 473 DELIVERABLE:Material Risk SHUSA Approval; 479 DELIVERABLE:Risk ID and Assessment Policy; 520 DELIVERABLE: Commercial: Create Commercial Banking Material Risk Inventory; 537 DELIVERABLE:Automotive Finance Material Risk Inventory; 547 DELIVERABLE: Automotive: Create Automotive Finance Material Risk Inventory; 552 DELIVERABLE: Commerical Real Estate Material Risk Inventory; 567 DELIVERABLE: Legal Material Risk Inventory; 582 DELIVERABLE:Finance Material Risk Inventory; 685 DELIVERABLE:GBM-Cash Equities Brokerage Material Risk Inventory; 690 DELIVERABLE:GBM- Debt Underwriting Material Risk Inventory; 695 DELIVERABLE:GBM Equity Underwriting Material Risk Inventory; 700 DELIVERABLE:GBM- Fixed Income/Bond TradingMaterial Risk Inventory; 705 DELIVERABLE:GBM - Futures Brokerage Material Risk Inventory; 710 DELIVERABLE:GBM - Fixed Income and Equity Research Material Risk Inventory; 715 DELIVERABLE:Human Resources Material Risk Inventory; 720 DELIVERABLE:Finance Material Risk Inventory; 725 DELIVERABLE:Technology and Operations Material Risk Inventory; 730 DELIVERABLE:Legal Material Risk Inventory; 785 DELIVERABLE:Retail Banking: Create Retail Banking Material Risk Inventory; 800 DELIVERABLE:Global Banking/Commercial Banking/CRE & Speciality: Create Global Banking Material Risk Inventory; 805 DELIVERABLE:Mortgage Servicing Material Risk Inventory; 810 DELIVERABLE:Investment Services Material Risk Inventory; 815 DELIVERABLE:Trust Material Risk Inventory; 820 DELIVERABLE:Pension Plan Material Risk Inventory; 825 DELIVERABLE:Foreign Accounts Material Risk Inventory; 830 DELIVERABLE:Human Resources Material Risk Inventory; 836 DELIVERABLE:Technology and Operations Material Risk Inventory; 841 DELIVERABLE:Legal Material Risk Inventory; 851 DELIVERABLE:SFS - Island Finance Material Risk Inventory; 856 DELIVERABLE:SFS - Special Assets Material Risk Inventory; 861 DELIVERABLE:Santander Overseas Bank - GBM Material Risk Inventory; 900 DELIVERABLE:Private Banking Material Risk Inventory; 905 DELIVERABLE:Personal Lending Material Risk Inventory; 910 DELIVERABLE:Human Resources Material Risk Inventory; 915 DELIVERABLE:Finance and Accounting Material Risk Inventory; 921 DELIVERABLE:Technology and Operations Material Risk Inventory; 926 DELIVERABLE:Legal Material Risk Inventory

Changed:

| ID | Task | Start | Finish | Duration | Complete | Total float | Predecessors | Other |
| --- | --- | --- | --- | --- | --- | --- | --- | --- |
| 1 | **Capital and Risk Transformation SHUSA** | 2014-09-19 A → 2014-10-02 A (+13d) |  | 726d? → 717d? | 3% → 8% |  |  |  |
| 2 | **Risk Transformation** | 2014-09-19 A → 2014-10-02 A (+13d) |  | 726d? → 717d? | 3% → 8% |  |  |  |
| 3 | **Risk Appetite Statement(RAS)** |  |  | 545d? → 545d |  |  |  |  |
| 4 | **Risk Appetite Statement(RAS) Deliverables** | 2015-08-17 → 2015-06-26 (-52d) |  | 489d → 525d |  |  |  |  |
| 5 | DELIVERABLE: SHUSA-level RAS Design | 2015-10-30 → 2015-08-28 (-63d) | 2015-10-30 → 2015-08-28 (-63d) |  |  | none → 481d | 26, 33, 40, 52, 58, 74, 80, 88, 94, 107 → none | constraint none → start no earlier than 2015-08-28 |
| 14 | DELIVERABLE: Continue to cascade the risk appetite statement for the remainder of subsidiaries and business units and ensure alignment with overall SHUSA risk appetite statement |  |  |  |  | none → 262d | 249 → none | constraint none → start no earlier than 2016-06-30 |
| 15 | DELIVERABLE: Embed risk appetite statement in key processes at lower levels of the organization |  |  |  |  | none → 262d | 253 → none | constraint none → start no earlier than 2016-06-30 |
| 16 | DELIVERABLE: Continue to communicate risk appetite statement throughout the enterprise, including training in the new escalation and remediation process |  |  |  |  | none → 196d | 258 → none | constraint none → start no earlier than 2016-09-30 |
| 17 | DELIVERABLE: Periodically enhance risk appetite statement based on the latest results of material risk identification and improved risk measurement across the enterprise |  |  |  |  | none → 1d | 265, 262 → none | constraint none → start no earlier than 2017-06-30 |
| 18 | **Re-designed SHUSA RAS framework** |  | 2015-10-30 → 2015-11-02 (+3d) |  |  | 435d → 41d |  |  |
| 21 | Finalize CART plan at task-level |  |  |  |  |  |  | constraint finish no earlier than 2015-06-08 → start no earlier than 2015-06-08 |
| 22 | Socialize plan with key stakeholders (SHUSA) |  |  |  |  |  |  | constraint finish no earlier than 2015-06-19 → start no earlier than 2015-06-09 |
| 25 | Communicate plan to CART stakeholders |  |  |  |  |  |  | constraint finish no earlier than 2015-06-19 → start no earlier than 2015-06-15 |
| 28 | Draft guidelines and approach for metrics and limits (no Finance metrics, risk profile, risk appetite, stressed metrics) |  |  |  |  |  |  | constraint finish no earlier than 2015-06-12 → start no earlier than 2015-06-08 |
| 29 | Socialize Risk Appetite guidelines to stakeholders (SHUSA) |  |  |  |  |  |  | constraint finish no earlier than 2015-06-19 → start no earlier than 2015-06-15 |
| 32 | Update guidelines per stakeholder feedback |  |  |  |  |  |  | constraint finish no earlier than 2015-06-26 → start no earlier than 2015-06-22 |
| 35 | Draft of enterprise-wide core values, RAS principles and major risk categories (e.g. credit) |  |  |  |  |  |  | constraint finish no earlier than 2015-06-12 → start no earlier than 2015-06-08 |
| 36 | Socialize Risk Appetite philosophy to stakeholders (SHUSA) |  |  |  |  |  |  | constraint finish no earlier than 2015-06-19 → start no earlier than 2015-06-15 |
| 39 | Update values, principles and risk categories per stakeholder feedback |  |  |  |  |  |  | constraint finish no earlier than 2015-06-26 → start no earlier than 2015-06-22 |
| 42 | Identify and document material risks for enterprise, including input from stakeholders (SHUSA) |  |  |  |  |  |  | constraint finish no earlier than 2015-06-12 → start no earlier than 2015-06-08 |
| 45 | Identify and document constraints from regulators and other stakeholders (i.e. ratings agencies) |  |  |  |  |  |  | constraint finish no earlier than 2015-06-19 → start no earlier than 2015-06-15 |
| 46 | Consolidate all requirements from Group, including updated corporate metrics (recalculated with April numbers) |  |  |  |  |  |  | constraint finish no earlier than 2015-06-19 → start no earlier than 2015-06-15 |
| 47 | Document owners and rationale for all corporate metrics |  |  |  |  |  |  | constraint finish no earlier than 2015-06-19 → start no earlier than 2015-06-15 |
| 48 | Facilitate review and challenge session for list of material risks with key stakeholders (SHUSA) |  |  |  |  |  |  | constraint finish no earlier than 2015-06-24 → start no earlier than 2015-06-22 |
| 51 | Update documentation of material risks and constraints, given stakeholder input |  |  |  |  |  |  | constraint finish no earlier than 2015-06-26 → start no earlier than 2015-06-24 |
| 54 | Draft a qualitative risk appetite statement for all risks detailed in documentation of material risks for enterprise, considering documented constraints |  |  |  |  |  |  | constraint finish no earlier than 2015-07-03 → start no earlier than 2015-06-08 |
| 55 | Socialize SHUSA-level qualitative statements with stakeholders (SHUSA) |  |  |  |  |  |  | constraint finish no earlier than 2015-07-10 → start no earlier than 2015-07-06 |
| 60 | Finalize list of proposed SHUSA metrics |  |  |  |  |  |  | constraint finish no earlier than 2015-06-15 → start no earlier than 2015-06-15 |
| 61 | Facilitate review and challenge session for proposed metrics, limits and thresholds with key stakeholders (SHUSA) |  |  |  |  |  |  | constraint finish no earlier than 2015-06-16 → start no earlier than 2015-06-16 |
| 64 | Update list of SHUSA metrics, given stakeholder input, and identify and document owners for each metric |  |  |  |  |  |  | constraint finish no earlier than 2015-06-19 → start no earlier than 2015-06-17 |
| 65 | Detail limits and thresholds for list of SHUSA metrics |  |  |  |  |  |  | constraint finish no earlier than 2015-06-26 → start no earlier than 2015-06-22 |
| 66 | Calibrate limits based on analysis of historical data, industry benchmarking, etc. |  |  |  |  |  |  | constraint finish no earlier than 2015-08-07 → start no earlier than 2015-06-29 |
| 67 | Document rationale for SHUSA metrics |  |  |  |  |  |  | constraint finish no earlier than 2015-07-17 → start no earlier than 2015-07-13 |
| 68 | Document IT requirements for SHUSA metrics |  |  |  |  |  |  | constraint finish no earlier than 2015-07-31 → start no earlier than 2015-07-13 |
| 70 | Consolidate metrics, limits and thresholds into quantifiable statements for material risks |  |  |  |  |  |  | constraint finish no earlier than 2015-08-12 → start no earlier than 2015-08-10 |
| 71 | Socialize quantitative statements with stakeholders (SHUSA) |  |  |  |  |  |  | constraint finish no earlier than 2015-08-14 → start no earlier than 2015-08-13 |
| 76 | Draft SHUSA-level RAS |  |  |  |  |  |  | constraint finish no earlier than 2015-08-21 → start no earlier than 2015-08-17 |
| 77 | Socialize SHUSA-level RAS with stakeholders (SHUSA) |  |  |  |  |  |  | constraint finish no earlier than 2015-08-28 → start no earlier than 2015-08-24 |
| 83 | Draft SHUSA-level RAS reporting and monitoring process |  |  |  |  |  |  | constraint finish no earlier than 2015-07-24 → start no earlier than 2015-07-06 |
| 84 | Draft SHUSA-level RAS breach escalation process and detail consequences |  |  |  |  |  |  | constraint finish no earlier than 2015-07-24 → start no earlier than 2015-07-06 |
| 87 | Socialize processes with stakeholders (SCUSA) |  |  |  |  |  |  | constraint finish no earlier than 2015-07-31 → start no earlier than 2015-07-27 |
| 90 | Draft SHUSA-level RAS development documentation and governance process |  |  |  |  |  |  | constraint finish no earlier than 2015-08-07 → start no earlier than 2015-07-20 |
| 93 | Socialize documents with stakeholders (SCUSA) |  |  |  |  |  |  | constraint finish no earlier than 2015-08-14 → start no earlier than 2015-08-10 |
| 95 | **DELIVERABLE: SHUSA-level RAS framework approval process** |  | 2015-10-30 → 2015-11-02 (+3d) |  |  | 435d → 45d |  |  |
| 96 | **MILESTONE: Educate Board and senior committees on RAS and secure approval** |  | 2015-10-30 → 2015-11-02 (+3d) |  |  | 435d → 45d |  |  |
| 97 | Create materials for Board training on RAS roles & responsibilities |  |  |  |  |  |  | constraint finish no earlier than 2015-09-04 → start no earlier than 2015-08-31 |
| 98 | Create materials for Board training on RAS structure and metrics |  |  |  |  |  |  | constraint finish no earlier than 2015-09-04 → start no earlier than 2015-08-31 |
| 99 | Deliver Board training session(s) |  |  |  |  |  |  | constraint finish no earlier than 2015-09-25 → start no earlier than 2015-09-21 |
| 100 | Present SHUSA-level RAS to ERMC/EMC |  |  |  |  |  |  | constraint finish no earlier than 2015-09-11 → start no earlier than 2015-08-31 |
| 101 | Present CDR presentation to Madrid for review |  |  |  |  |  |  | constraint finish no earlier than 2015-09-11 → start no earlier than 2015-08-31 |
| 102 | Update RAS given feedback from SHUSA and Madrid risk committees |  |  |  |  |  |  | constraint finish no earlier than 2015-09-18 → start no earlier than 2015-09-14 |
| 103 | Present to Board/BERC for review |  |  |  |  |  |  | constraint finish no earlier than 2015-10-02 → start no earlier than 2015-09-21 |
| 104 | Present SHUSA-level RAS to CDR |  |  |  |  |  |  | constraint finish no earlier than 2015-10-09 → start no earlier than 2015-10-05 |
| 105 | Update RAS given feedback from CDR |  |  |  |  |  |  | constraint finish no earlier than 2015-10-23 → start no earlier than 2015-10-12 |
| 106 | Submit SHUSA-level RAS for Board approval |  |  |  |  |  |  | constraint finish no earlier than 2015-10-30 → start no earlier than 2015-10-26 |
| 109 | **Cascaded RAS across enterprise through creation of subsidiary-level and, where necessary, BU-level statements** |  |  | 284d? → 284d |  |  |  |  |
| 112 | Assess current state of SCUSA RAS, focusing on pre-determined "pain points" (not reviewing RAS in entirety) |  |  |  |  |  |  | constraint finish no earlier than 2015-06-01 → start no earlier than 2015-06-01 |
| 113 | Determine plan for short-term remediation |  |  |  |  |  |  | constraint finish no earlier than 2015-06-05 → start no earlier than 2015-06-01 |
| 116 | Redefine SCUSA liquidity limit |  |  |  |  |  |  | constraint finish no earlier than 2015-06-12 → start no earlier than 2015-06-08 |
| 117 | Redefine SCUSA RWA limit |  |  |  |  |  |  | constraint finish no earlier than 2015-06-12 → start no earlier than 2015-06-08 |
| 118 | Redefine SCUSA total asset limit |  |  |  |  |  |  | constraint finish no earlier than 2015-06-12 → start no earlier than 2015-06-08 |
| 119 | Socialize updated limits and all proposed remediations to SCUSA RAS |  |  |  |  |  |  | constraint finish no earlier than 2015-06-19 → start no earlier than 2015-06-15 |
| 120 | Update SCUSA RAS based on agreed upon remediations |  |  |  |  |  |  | constraint finish no earlier than 2015-06-26 → start no earlier than 2015-06-22 |
| 124 | Determine organizational levels to which cascading is appropriate and draft planned approach |  |  |  |  |  |  | constraint finish no earlier than 2015-08-07 → start no earlier than 2015-08-03 |
| 125 | Facilitate review and challenge sessions for cascading approach with stakeholders (SHUSA) |  |  |  |  |  |  | constraint finish no earlier than 2015-08-12 → start no earlier than 2015-08-10 |
| 128 | Update documentation for cascading approach, given stakeholder input |  |  |  |  |  |  | constraint finish no earlier than 2015-08-14 → start no earlier than 2015-08-12 |
| 130 | **DELIVERABLE: RAS for priority subsidiaries SBNA & SCUSA – follow similar process as SHUSA** |  |  | 138d? → 138d |  |  |  |  |
| 132 | Identify and document subsidiary-specific risks and constraints, including those not captured in SHUSA-level RAS(SBNA) |  |  |  |  |  |  | constraint finish no earlier than 2015-08-21 → start no earlier than 2015-08-17 |
| 134 | Identify and document constraints from Group, regulators and other stakeholders (i.e. ratings agencies) |  |  |  |  |  |  | constraint finish no earlier than 2015-08-21 → start no earlier than 2015-08-17 |
| 135 | Facilitate review and challenge session for list of material risks with key stakeholders (SHUSA) |  |  |  |  |  |  | constraint finish no earlier than 2015-08-26 → start no earlier than 2015-08-24 |

| ID | Task | Start | Finish | Duration | Total float | Other |
| --- | --- | --- | --- | --- | --- | --- |
| 138 | Update documentation of subsidiary-specific risks and constraints, given stakeholder input(SBNA) |  |  |  |  | constraint finish no earlier than 2015-08-28 → start no earlier than 2015-08-27 |
| 141 | **MILESTONE: For each risk, determine a qualitative risk appetite statement (leveraging SHUSA-level RAS)** |  |  | 15d? → 15d |  |  |
| 142 | Determine SHUSA-level RAS statements relevant to subsidiaries(SBNA) |  |  |  |  | constraint finish no earlier than 2015-09-02 → start no earlier than 2015-08-31 |
| 143 | Determine SHUSA-level RAS statements relevant to subsidiaries(SCUSA) |  | 2015-08-31 → 2015-09-02 (+2d) | 1d? → 3d |  |  |
| 144 | Detail statements for material risks specific to the subsidiary, not captured in SHUSA-level RAS(SBNA) |  |  |  |  | constraint finish no earlier than 2015-09-11 → start no earlier than 2015-09-03 |
| 146 | Consolidate into subsidiary specific-list of statements (leverage existing work) (SBNA) |  |  |  |  | constraint finish no earlier than 2015-09-16 → start no earlier than 2015-09-14 |
| 148 | Socialize SBNA and SCUSA qualitative statements with key stakeholders (SHUSA) |  |  |  |  | constraint finish no earlier than 2015-09-18 → start no earlier than 2015-09-17 |
| 154 | Determine SHUSA-level RAS metrics relevant to subsidiaries(SCUSA) |  |  |  |  | constraint finish no earlier than 2015-09-16 → start no earlier than 2015-09-14 |
| 156 | Identify metrics for material risks specific to the subsidiary, not captured in SHUSA-level RAS, and compile in list with relevant metrics from SHUSA-level RAS(SCUSA) |  |  |  |  | constraint finish no earlier than 2015-09-18 → start no earlier than 2015-09-17 |
| 157 | Facilitate review and challenge session for proposed metrics, limits and thresholds with key stakeholders (SHUSA) |  |  |  |  | constraint finish no earlier than 2015-09-28 → start no earlier than 2015-09-28 |
| 160 | Update list of subsidiary-specific metrics, given stakeholder input, and identify and document owners for each metric(SBNA) |  |  |  |  | constraint finish no earlier than 2015-10-02 → start no earlier than 2015-09-29 |
| 162 | Detail limits and thresholds for list of subsidiary-specific metrics(SBNA) |  |  |  |  | constraint finish no earlier than 2015-09-25 → start no earlier than 2015-09-21 |
| 164 | Calibrate limits for subsidiary risks, ensure subsidiary-level limits align to SHUSA-level limits(SBNA) |  |  |  |  | constraint finish no earlier than 2015-10-30 → start no earlier than 2015-09-21 |
| 166 | Document rationale for SHUSA metrics |  |  |  |  | constraint finish no earlier than 2015-09-25 → start no earlier than 2015-09-21 |
| 167 | Document IT requirements for SHUSA metrics |  |  |  |  | constraint finish no earlier than 2015-10-02 → start no earlier than 2015-09-14 |
| 169 | Consolidate metrics, limits and thresholds into quantifiable statements for subsidiary-specific risks(SBNA) |  |  |  |  | constraint finish no earlier than 2015-11-04 → start no earlier than 2015-11-02 |
| 171 | Socialize SBNA and SCUSA quantitative statements with stakeholders (SHUSA) |  |  |  |  | constraint finish no earlier than 2015-11-06 → start no earlier than 2015-11-05 |
| 176 | Draft SBNA RAS |  |  |  |  | constraint finish no earlier than 2015-11-13 → start no earlier than 2015-11-09 |
| 180 | Socialize SBNA RAS and SCUSA RAS with stakeholders (SCUSA) |  |  |  |  | constraint finish no earlier than 2015-11-20 → start no earlier than 2015-11-16 |
| 183 | 6-week buffer for governance process(SHUSA) |  |  |  |  | constraint finish no earlier than 2015-12-31 → start no earlier than 2015-11-20 |
| 188 | Create communication materials to aid in socialization process(SHUSA) |  |  |  |  | constraint finish no earlier than 2016-01-13 → start no earlier than 2015-12-31 |
| 191 | Facilitate training, town halls, etc. to communicate RAS to enterprise(SHUSA) |  |  |  |  | constraint finish no earlier than 2016-02-24 → start no earlier than 2016-01-14 |
| 224 | **Embedded RAS in material processes across the enterprise** |  | 2016-01-11 → 2016-01-12 (+1d) | 105d → 106d | 385d → 106d |  |
| 227 | Compare draft of SHUSA-level RAS against draft of strategic plan |  |  |  |  | constraint finish no earlier than 2015-08-21 → start no earlier than 2015-08-17 |
| 228 | Identify gaps and adjust strategic plan as necessary |  |  |  |  | constraint finish no earlier than 2015-08-28 → start no earlier than 2015-08-24 |
| 231 | Socialize with key stakeholders (SCUSA) |  |  |  |  | constraint finish no earlier than 2015-09-04 → start no earlier than 2015-08-31 |
| 234 | Identify processes that should be explicitly linked to RAS (e.g. strategic planning, capital planning) |  |  |  |  | constraint finish no earlier than 2015-11-06 → start no earlier than 2015-11-02 |
| 235 | Detail nature of process linkage, including alignment to statements, metrics and limits described in the RAS |  |  |  |  | constraint finish no earlier than 2015-11-06 → start no earlier than 2015-11-02 |
| 236 | Assess degree to which RAS considerations are already embedded in key processes |  |  |  |  | constraint finish no earlier than 2015-11-06 → start no earlier than 2015-11-02 |
| 237 | Identify gaps and update key process maps accordingly |  |  |  |  | constraint finish no earlier than 2015-11-27 → start no earlier than 2015-11-09 |
| 239 | **DELIVERABLE: Plan implementation of RAS in all material processes** |  | 2016-01-11 → 2016-01-12 (+1d) | 30d → 31d | 385d → 31d |  |
| 240 | **MILESTONE: Plan implementation of RAS in all material processes** |  | 2016-01-11 → 2016-01-12 (+1d) | 30d → 31d | 385d → 31d |  |
| 241 | Detail plan for implementation of RAS in material processes (e.g. new product and business activity approval process) |  |  |  |  | constraint finish no earlier than 2015-12-25 → start no earlier than 2015-11-30 |
| 242 | Detail processes/controls to ensure that RAS is being further integrated into all processes until BAU |  |  |  |  | constraint finish no earlier than 2016-01-08 → start no earlier than 2015-12-28 |
| 245 | **Year 2 and Year 3 Priorities** |  |  |  |  | was named Years 2 and 3 |
| 267 | **Risk Governance & Organization Deliverables** | 2015-06-23 → 2015-07-24 (+31d) | 2016-06-20 → 2017-04-04 (+288d) | 259d → 442d | 270d → 64d |  |
| 268 | DELIVERABLE: Diagnostic of Risk Mgmt. Committee effectiveness |  |  |  |  | was named DELIVERABLE: Strengthen Board and Management Committee Oversight; constraint start no earlier than 2015-08-31 → start no earlier than 2015-11-30 |
| 269 | DELIVERABLE: Conduct Training for Board | 2015-07-27 → 2015-08-31 (+35d) | 2015-07-27 → 2015-08-31 (+35d) |  | 505d → 480d | was named DELIVERABLE: Strengthen the structure of risk leadership (SHUSA and subsidiary CROs, Risk Control Officers); constraint start no earlier than 2015-07-27 → start no earlier than 2015-08-31 |
| 270 | DELIVERABLE: Determine Scheme of Coordination Between SHUSA and Parent and Define Risk Committees Composition / Mandates / Charters |  |  |  |  | was named DELIVERABLE: Design Target Operating Model aligned with 3LoD principles - by risk type; constraint start no earlier than 2015-09-14 → start no earlier than 2016-06-20 |
| 292 | Delivery of Board Training (session 1) |  |  |  |  | constraint finish no earlier than 2015-07-17 → start no earlier than 2015-06-22 |
| 293 | Board risk training curriculum and schedule |  |  |  |  | constraint finish no earlier than 2015-08-10 → start no earlier than 2015-07-07 |
| 294 | Delivery of Board Training (session 2) |  |  |  |  | constraint finish no earlier than 2015-08-28 → start no earlier than 2015-08-10 |
| 298 | Governance and coordination mechanisms between SHUSA and parent |  |  |  |  | constraint finish no earlier than 2015-08-07 → start no earlier than 2015-07-13 |
| 299 | Definition of composition / mandates / charters for BERC and Level 1 Risk Committees |  |  |  |  | constraint finish no earlier than 2015-09-18 → start no earlier than 2015-07-20 |
| 300 | Definition of composition / mandates / charters for Level 2 Risk Committees |  |  |  |  | constraint finish no earlier than 2015-10-30 → start no earlier than 2015-08-31 |
| 304 | Perform high level assessment and remediation of performance scorecards |  |  |  |  | constraint finish no earlier than 2015-11-27 → start no earlier than 2015-11-02 |
| 309 | Formalize subsidiary CRO reporting lines, socialize and refine solution (SHUSA) |  |  |  |  | constraint finish no earlier than 2015-07-03 → start no earlier than 2015-06-22 |
| 310 | Define implications of reporting lines (for Performance assessment and hiring/firing authority) (SHUSA) |  |  |  |  | constraint finish no earlier than 2015-07-10 → start no earlier than 2015-06-29 |
| 314 | Review of existing 1st LoD structure and capabilities |  |  |  |  | constraint finish no earlier than 2015-07-17 → start no earlier than 2015-06-22 |
| 317 | Framework update with refined roles and responsibilities splits |  |  |  | 350d → 270d | constraint finish no earlier than 2015-07-03 → start no earlier than 2015-06-22 |
| 318 | Formalized Risk group org. structure with aligned talent assessment and development |  |  |  | 350d → 270d | constraint finish no earlier than 2015-08-07 → start no earlier than 2015-07-06 |
| 319 | Implementation planning, specification of interrelationships |  |  |  | 350d → 270d | constraint finish no earlier than 2015-09-11 → start no earlier than 2015-08-10 |
| 323 | Framework update with refined roles and responsibilities splits |  |  |  |  | constraint finish no earlier than 2015-07-03 → start no earlier than 2015-06-22 |
| 324 | Formalized Risk group org. structure with aligned talent assessment and development |  |  |  |  | constraint finish no earlier than 2015-08-07 → start no earlier than 2015-07-06 |
| 325 | Implementation planning, specification of interrelationships |  |  |  |  | constraint finish no earlier than 2015-09-11 → start no earlier than 2015-08-10 |
| 329 | Framework update with refined roles and responsibilities splits |  |  |  |  | constraint finish no earlier than 2015-09-25 → start no earlier than 2015-09-14 |
| 330 | Formalized Risk group org. structure with aligned talent assessment and development |  |  |  |  | constraint finish no earlier than 2015-10-30 → start no earlier than 2015-09-28 |
| 331 | Implementation planning, specification of interrelationships |  |  |  |  | constraint finish no earlier than 2015-12-04 → start no earlier than 2015-11-02 |
| 335 | Framework update with refined roles and responsibilities splits |  |  |  |  | constraint finish no earlier than 2015-09-25 → start no earlier than 2015-09-14 |
| 336 | Formalized Risk group org. structure with aligned talent assessment and development |  |  |  |  | constraint finish no earlier than 2015-10-30 → start no earlier than 2015-09-28 |
| 337 | Implementation planning, specification of interrelationships |  |  |  |  | constraint finish no earlier than 2015-12-04 → start no earlier than 2015-11-02 |
| 341 | Framework update with refined roles and responsibilities splits |  |  |  |  | constraint finish no earlier than 2015-12-18 → start no earlier than 2015-12-07 |
| 342 | Formalized Risk group org. structure with aligned talent assessment and development |  |  |  |  | constraint finish no earlier than 2016-01-22 → start no earlier than 2015-12-21 |
| 343 | Implementation planning, specification of interrelationships |  |  |  |  | constraint finish no earlier than 2016-02-26 → start no earlier than 2016-01-25 |
| 347 | Framework update with refined roles and responsibilities splits |  |  |  |  | constraint finish no earlier than 2015-12-18 → start no earlier than 2015-12-07 |
| 348 | Formalized Risk group org. structure with aligned talent assessment and development |  |  |  |  | constraint finish no earlier than 2016-01-22 → start no earlier than 2015-12-21 |
| 349 | Implementation planning, specification of interrelationships |  |  |  |  | constraint finish no earlier than 2016-02-26 → start no earlier than 2016-01-25 |
| 353 | Post Implementation Review (First Round) |  |  |  | 390d → 270d | constraint finish no earlier than 2016-01-01 → start no earlier than 2015-12-07 |
| 354 | MILESTONE: 1st Round Post Implementation Review Conducted |  |  |  | none → 390d | constraint none → start no earlier than 2016-01-04 |
| 357 | Post Implementation Review (Second Round) |  |  |  | 330d → 270d | constraint finish no earlier than 2016-03-25 → none |

| ID | Task | Finish | Duration | Total float | Other |
| --- | --- | --- | --- | --- | --- |
| 358 | MILESTONE: 2nd Round Post Implementation Review Conducted | 2016-02-29 → 2016-03-25 (+25d) | 0d → 20d | none → 330d | constraint none → start no earlier than 2016-02-29 |
| 361 | Post Implementation Review (Third Round) |  |  |  | constraint finish no earlier than 2016-06-17 → start no earlier than 2016-05-23 |
| 362 | MILESTONE: 3rd Round Post Implementation Review Conducted |  |  | none → 270d | constraint none → start no earlier than 2016-06-20 |
| 365 | Define Strong and desired Risk culture |  |  |  | constraint none → start no earlier than 2016-02-29 |
| 366 | MILESTONE: Strong and Desired Risk Culture Instilled |  |  | none → 315d | constraint none → start no earlier than 2016-04-18 |
| 368 | **DELIVERABLE: Rollout Performance Assessment and Compensation Frameworks across the Organization** |  |  |  | was named Rollout Performance Assessment and Compensation Frameworks across the Organization |
| 385 | **DELIVERABLE: Communication and training for organizational changes related to 3 LOD** |  |  |  | was named Remediation of issues found during post-implementation reviews |
| 403 | **DELIVERABLE: Design recruitment and retention mechanisms** |  |  |  | was named Design recruitment and retention mechanisms |
| 409 | Selection of key remediation initiatives with key stakeholders |  |  |  | constraint start no earlier than 2016-10-01 → start no earlier than 2016-10-03 |
| 410 | Planning of initiatives between SHUSA and its subsidiaries |  |  |  | constraint start no earlier than 2016-10-01 → start no earlier than 2016-10-03 |
| 411 | Rollout of initiatives at SHUSA |  |  |  | constraint start no earlier than 2016-10-01 → start no earlier than 2016-10-03 |
| 412 | Rollout of initiatives at other subsidiaries |  |  |  | constraint start no earlier than 2017-01-01 → start no earlier than 2017-01-02 |
| 419 | **Risk Measurement Deliverables** | 2015-12-10 → 2017-01-13 (+400d) | 97d → 383d | 407d → 121d |  |
| 420 | DELIVERABLE: Business Entity Material Risk Program Established for SHUSA |  |  |  | was named Business Entity Material Risk Program Established for SHUSA; constraint none → start no earlier than 2015-12-10 |
| 421 | DELIVERABLE: Business Entity Material Risk Program Established for SBNA |  |  |  | was named Business Entity Material Risk Program Established for SBNA; constraint none → start no earlier than 2015-07-28 |
| 422 | DELIVERABLE: Business Entity Material Risk Program Established for SCUSA |  |  |  | was named Business Entity Material Risk Program Established for SCUSA; constraint none → start no earlier than 2015-07-28 |
| 423 | DELIVERABLE: Business Entity Material Risk Program Established for New York(SIS) |  |  |  | was named Business Entity Material Risk Program Established for New York(SIS); constraint none → start no earlier than 2015-07-28 |
| 424 | DELIVERABLE: Business Entity Material Risk Program Established for Puerto Rico |  |  |  | was named Business Entity Material Risk Program Established for Puerto Rico; constraint none → start no earlier than 2015-07-28 |
| 425 | DELIVERABLE: Business Entity Material Risk Program Established for Miami |  |  |  | was named Business Entity Material Risk Program Established for Miami; constraint none → start no earlier than 2015-07-28 |
| 436 | **DELIVERABLE: SHUSA - Business Entity Material Risk Program** |  | 73d? → 72d? | 406d → 45d | was named SHUSA - Business Entity Material Risk Program |
| 437 | **MILESTONE: Preparation for Aggregation to Create SHUSA Material Risk Inventory** |  |  |  | was named DELIVERABLE: Preparation for Aggregation to Create SHUSA Material Risk Inventory |
| 438 | **TASK:Preparation for Aggregation to Create SHUSA Material Risk Inventory** |  |  |  | was named MILESTONE:Preparation for Aggregation to Create SHUSA Material Risk Inventory |
| 439 | ERM Collects Risk Inventories from Entity Risk Managers | 2015-09-08 → 2015-09-07 (-1d) | 6d? → 5d? | 473d → 474d | constraint finish no earlier than 2015-09-08 → start no earlier than 2015-09-01 |
| 440 | ERM Sorts risks and groups by Risk Type | 2015-09-08 → 2015-09-07 (-1d) | 6d? → 5d? | 473d → 474d | constraint finish no earlier than 2015-09-08 → start no earlier than 2015-09-01 |
| 441 | ERM Creates pre-Workshop, pre-read Materials and instructions for SHUSA Risk Managers | 2015-09-08 → 2015-09-07 (-1d) | 6d? → 5d? | 473d → 474d | constraint finish no earlier than 2015-09-08 → start no earlier than 2015-09-01 |
| 442 | ERM Distributes Workshop Materials to Responsible parties | 2015-09-09 → 2015-09-08 (-1d) | 2d? → 1d? | 472d → 473d | constraint finish no earlier than 2015-09-09 → start no earlier than 2015-09-08 |
| 444 | **MILESTONE: SHUSA Aggregation Workshops** |  | 13d? → 12d? | 460d → 461d | was named DELIVERABLE: SHUSA Aggregation Workshops |
| 445 | **TASK: Credit Risk Material Risk Aggregation** |  | 13d? → 12d? | 460d → 461d | was named MILESTONE: Credit Risk Material Risk Aggregation |
| 446 | Credit Risk performs pre-Read and analysis | 2015-09-15 → 2015-09-14 (-1d) | 5d? → 4d? | 468d → 469d | constraint finish no earlier than 2015-09-15 → start no earlier than 2015-09-09 |
| 447 | Risk Managers Conduct Credit pre-Workshop Enrichment and Aggregation Activites | 2015-09-15 → 2015-09-14 (-1d) | 5d? → 4d? | 468d → 469d | constraint finish no earlier than 2015-09-15 → start no earlier than 2015-09-09 |
| 448 | ERM facilitates Credit Aggregation and Enrichment Workshop | 2015-09-23 → 2015-09-22 (-1d) | 7d? → 6d? | 462d → 463d | constraint finish no earlier than 2015-09-23 → start no earlier than 2015-09-15 |
| 449 | Present to Level II Subcommittees | 2015-09-25 → 2015-09-24 (-1d) | 3d? → 2d? | 460d → 461d | constraint finish no earlier than 2015-09-25 → start no earlier than 2015-09-23 |
| 451 | **TASK: Operational Risk Material Risk Aggregation** |  | 13d? → 12d? | 460d → 461d | was named MILESTONE: Operational Risk Material Risk Aggregation |
| 452 | Operational Risk performs pre-Read and analysis | 2015-09-15 → 2015-09-14 (-1d) | 5d? → 4d? | 468d → 469d | constraint finish no earlier than 2015-09-15 → start no earlier than 2015-09-09 |
| 453 | Risk Managers Conduct Operational Risk pre-Workshop Enrichment and Aggregation Activites | 2015-09-15 → 2015-09-14 (-1d) | 5d? → 4d? | 468d → 469d | constraint finish no earlier than 2015-09-15 → start no earlier than 2015-09-09 |
| 454 | ERM facilitates Operational Risk Aggregation and Enrichment Workshop | 2015-09-23 → 2015-09-22 (-1d) | 7d? → 6d? | 462d → 463d | constraint finish no earlier than 2015-09-23 → start no earlier than 2015-09-15 |
| 455 | Present to Level II Subcommittees | 2015-09-25 → 2015-09-24 (-1d) | 3d? → 2d? | 460d → 461d | constraint finish no earlier than 2015-09-25 → start no earlier than 2015-09-23 |
| 457 | **TASK: Compliance Material Risk Aggregation** |  | 13d? → 12d? | 460d → 461d | was named MILESTONE: Compliance Material Risk Aggregation |
| 458 | Compliance performs pre-Read and analysis | 2015-09-15 → 2015-09-14 (-1d) | 5d? → 4d? | 468d → 469d | constraint finish no earlier than 2015-09-15 → start no earlier than 2015-09-09 |
| 459 | Risk Managers Conduct Compliance pre-Workshop Enrichment and Aggregation Activites | 2015-09-15 → 2015-09-14 (-1d) | 5d? → 4d? | 468d → 469d | constraint finish no earlier than 2015-09-15 → start no earlier than 2015-09-09 |
| 460 | ERM facilitates Compliance Aggregation and Enrichment Workshop | 2015-09-23 → 2015-09-22 (-1d) | 7d? → 6d? | 462d → 463d | constraint finish no earlier than 2015-09-23 → start no earlier than 2015-09-15 |
| 461 | Present to Level II Subcommittees | 2015-09-25 → 2015-09-24 (-1d) | 3d? → 2d? | 460d → 461d | constraint finish no earlier than 2015-09-25 → start no earlier than 2015-09-23 |
| 463 | **TASK: Model Material Risk Aggregation** |  | 13d? → 12d? | 460d → 461d | was named MILESTONE: Model Material Risk Aggregation |
| 464 | Model Risk performs pre-Read and analysis | 2015-09-15 → 2015-09-14 (-1d) | 5d? → 4d? | 468d → 469d | constraint finish no earlier than 2015-09-15 → start no earlier than 2015-09-09 |
| 465 | Risk Managers Conduct Model pre-Workshop Enrichment and Aggregation Activites | 2015-09-15 → 2015-09-14 (-1d) | 5d? → 4d? | 468d → 469d | constraint finish no earlier than 2015-09-15 → start no earlier than 2015-09-09 |
| 466 | ERM facilitates Model Aggregation and Enrichment Workshop | 2015-09-23 → 2015-09-22 (-1d) | 7d? → 6d? | 462d → 463d | constraint finish no earlier than 2015-09-23 → start no earlier than 2015-09-15 |
| 467 | Present to Level II Subcommittees | 2015-09-25 → 2015-09-24 (-1d) | 3d? → 2d? | 460d → 461d | constraint finish no earlier than 2015-09-25 → start no earlier than 2015-09-23 |
| 469 | **TASK: Market Material Risk Aggregation2** |  | 13d? → 12d? | 460d → 461d | was named MILESTONE: Market Material Risk Aggregation2 |
| 470 | Market Risk performs pre-Read and analysis | 2015-09-15 → 2015-09-14 (-1d) | 5d? → 4d? | 468d → 469d | constraint finish no earlier than 2015-09-15 → start no earlier than 2015-09-09 |
| 471 | Risk Managers Conduct Market pre-Workshop Enrichment and Aggregation Activites | 2015-09-15 → 2015-09-14 (-1d) | 5d? → 4d? | 468d → 469d | constraint finish no earlier than 2015-09-15 → start no earlier than 2015-09-09 |
| 472 | ERM facilitates Market Aggregation and Enrichment Workshop | 2015-09-23 → 2015-09-22 (-1d) | 7d? → 6d? | 462d → 463d | constraint finish no earlier than 2015-09-23 → start no earlier than 2015-09-15 |
| 473 | Present to Level II Subcommittees | 2015-09-25 → 2015-09-24 (-1d) | 3d? → 2d? | 460d → 461d | constraint finish no earlier than 2015-09-25 → start no earlier than 2015-09-23 |
| 475 | **TASK: Liquidity Material Risk Aggregation** |  | 13d? → 12d? | 460d → 461d | was named MILESTONE: Liquidity Material Risk Aggregation |
| 476 | Liquidity Risk performs pre-Read and analysis | 2015-09-15 → 2015-09-14 (-1d) | 5d? → 4d? | 468d → 469d | constraint finish no earlier than 2015-09-15 → start no earlier than 2015-09-09 |
| 477 | Risk Managers Conduct Liquidity pre-Workshop Enrichment and Aggregation Activites | 2015-09-15 → 2015-09-14 (-1d) | 5d? → 4d? | 468d → 469d | constraint finish no earlier than 2015-09-15 → start no earlier than 2015-09-09 |
| 478 | ERM facilitates Liquidity Aggregation and Enrichment Workshop | 2015-09-23 → 2015-09-22 (-1d) | 7d? → 6d? | 462d → 463d | constraint finish no earlier than 2015-09-23 → start no earlier than 2015-09-15 |
| 479 | Present to Level II Subcommittees | 2015-09-25 → 2015-09-24 (-1d) | 3d? → 2d? | 460d → 461d | constraint finish no earlier than 2015-09-25 → start no earlier than 2015-09-23 |
| 481 | **TASK: Strategic Material Risk Aggregation** |  | 13d? → 12d? | 460d → 461d | was named MILESTONE: Strategic Material Risk Aggregation |
| 482 | Strategic Risk performs pre-Read and analysis | 2015-09-15 → 2015-09-14 (-1d) | 5d? → 4d? | 468d → 469d | constraint finish no earlier than 2015-09-15 → start no earlier than 2015-09-09 |
| 483 | Risk Managers Conduct Strategic pre-Workshop Enrichment and Aggregation Activites | 2015-09-15 → 2015-09-14 (-1d) | 5d? → 4d? | 468d → 469d | constraint finish no earlier than 2015-09-15 → start no earlier than 2015-09-09 |
| 484 | ERM facilitates Strategic Aggregation and Enrichment Workshop | 2015-09-23 → 2015-09-22 (-1d) | 7d? → 6d? | 462d → 463d | constraint finish no earlier than 2015-09-23 → start no earlier than 2015-09-15 |
| 485 | Present to Level II Subcommittees | 2015-09-25 → 2015-09-24 (-1d) | 3d? → 2d? | 460d → 461d | constraint finish no earlier than 2015-09-25 → start no earlier than 2015-09-23 |
| 487 | **TASK: Reputational Material Risk Aggregation** |  | 13d? → 12d? | 460d → 461d | was named MILESTONE: Reputational Material Risk Aggregation |
| 488 | Reputational Risk performs pre-Read and analysis | 2015-09-15 → 2015-09-14 (-1d) | 5d? → 4d? | 468d → 469d | constraint finish no earlier than 2015-09-15 → start no earlier than 2015-09-09 |
| 489 | Risk Managers Conduct Reputational pre-Workshop Enrichment and Aggregation Activites | 2015-09-15 → 2015-09-14 (-1d) | 5d? → 4d? | 468d → 469d | constraint finish no earlier than 2015-09-15 → start no earlier than 2015-09-09 |
| 490 | ERM facilitates Reputational Aggregation and Enrichment Workshop | 2015-09-23 → 2015-09-22 (-1d) | 7d? → 6d? | 462d → 463d | constraint finish no earlier than 2015-09-23 → start no earlier than 2015-09-15 |
| 491 | Present to Level II Subcommittees | 2015-09-25 → 2015-09-24 (-1d) | 3d? → 2d? | 460d → 461d | constraint finish no earlier than 2015-09-25 → start no earlier than 2015-09-23 |
| 493 | **MILESTONE:SHUSA Top Down Aggregation** |  | 11d? → 10d? | 450d → 451d |  |
| 495 | ERM consolidates risks into SHUSA Inventory | 2015-09-28 → 2015-09-25 (-3d) | 2d? → 1d? | 459d → 460d | constraint finish no earlier than 2015-09-28 → start no earlier than 2015-09-25 |
| 496 | ERM distributes inventory to SHUSA Business and Risk executives | 2015-09-30 → 2015-09-29 (-1d) | 3d? → 2d? | 457d → 458d | constraint finish no earlier than 2015-09-30 → start no earlier than 2015-09-28 |

| ID | Task | Start | Finish | Duration | Total float | Other |
| --- | --- | --- | --- | --- | --- | --- |
| 497 | ERM incorporates final risks into SHUSA Inventory |  | 2015-10-09 → 2015-10-08 (-1d) | 5d? → 4d? | 450d → 451d |  |
| 499 | **MILESTONE:Material Risk SHUSA Approval** |  | 2015-10-30 → 2015-11-03 (+4d) | 16d? → 17d? | 435d → 17d |  |
| 501 | Present SHUSA Material Risks to BERC |  | 2015-10-16 → 2015-10-15 (-1d) | 6d? → 5d? | 445d → 446d | constraint finish no earlier than 2015-10-16 → start no earlier than 2015-10-09 |
| 502 | Present SHUSA Material Risks to ERMC |  | 2015-10-30 → 2015-10-29 (-1d) | 11d? → 10d? | 435d → 436d | constraint finish no earlier than 2015-10-30 → start no earlier than 2015-10-16 |
| 506 | **MILESTONE:Risk ID and Assessment Policy** |  |  | 55d? → 54d? | 406d → 407d |  |
| 508 | Risk ID and Assessment group drafts policy |  | 2015-10-30 → 2015-10-29 (-1d) | 26d? → 25d? | 435d → 436d | constraint finish no earlier than 2015-10-30 → start no earlier than 2015-09-25 |
| 509 | Risk ID and Assessment group presents draft to ERMC for approval |  | 2015-11-08 → 2015-11-05 (-3d) | 6d? → 5d? | 430d → 431d | constraint finish no earlier than 2015-11-08 → start no earlier than 2015-10-30 |
| 510 | Risk ID and Assessment group presents to Risk Committee (BERC) |  | 2015-12-10 → 2015-12-09 (-1d) | 29d? → 28d? | 406d → 407d | constraint finish no earlier than 2015-12-10 → start no earlier than 2015-11-02 |
| 512 | **DELIVERABLE: SBNA - Business Entity Material Risk Program** |  | 2015-08-31 → 2015-09-01 (+1d) |  | 479d → 67d | was named SBNA - Business Entity Material Risk Program |
| 513 | **MILESTONE:Retail Banking Material Risk Inventory** |  |  |  |  | was named DELIVERABLE:Retail Banking Material Risk Inventory |
| 514 | **TASK: Small Business Banking Material Risk Inventory** |  |  |  |  | was named MILESTONE: Small Business Banking Material Risk Inventory |
| 517 | **TASK: Cards Material Risk Inventory** |  |  |  |  | was named MILESTONE: Cards Material Risk Inventory |
| 520 | **TASK: Mortgages Material Risk Inventory** |  |  |  |  | was named MILESTONE: Mortgages Material Risk Inventory |
| 523 | **TASK: Purchased Portfolios (RV/Marine) Material Risk Inventory** |  |  |  |  | was named MILESTONE: Purchased Portfolios (RV/Marine) Material Risk Inventory |
| 526 | **TASK: Individual Material Risk Inventory** |  |  |  |  | was named MILESTONE: Individual Material Risk Inventory |
| 529 | **TASK: Wealth Management Material Risk Inventory** |  |  |  |  | was named MILESTONE: Wealth Management Material Risk Inventory |
| 532 | **MILESTONE:Retail: Create Retail Banking Material Risk Inventory** |  |  |  |  | was named DELIVERABLE:Retail: Create Retail Banking Material Risk Inventory |
| 533 | **TASK: Retail: Create Retail Banking Material Risk Inventory** |  |  |  |  | was named MILESTONE: Retail: Create Retail Banking Material Risk Inventory |
| 537 | **MILESTONE:Commercial Banking Material Risk Inventory** |  |  |  |  | was named DELIVERABLE:Commercial Banking Material Risk Inventory |
| 538 | **TASK: Commercial and Industrial Material Risk Inventory** |  |  |  |  | was named MILESTONE: Commercial and Industrial Material Risk Inventory |
| 541 | **TASK: Specialties Material Risk Inventory** |  |  |  |  | was named MILESTONE: Specialties Material Risk Inventory |
| 544 | **TASK: Government Banking Material Risk Inventory** |  |  |  |  | was named MILESTONE: Government Banking Material Risk Inventory |
| 552 | **MILESTONE:Global Banking Material Risk Inventory** |  |  |  |  | was named DELIVERABLE:Global Banking Material Risk Inventory |
| 553 | **TASK: MRG Material Risk Inventory** |  |  |  |  | was named MILESTONE: MRG Material Risk Inventory |
| 556 | **TASK: Large Corporates Material Risk Inventory** |  |  |  |  | was named MILESTONE: Large Corporates Material Risk Inventory |
| 559 | **MILESTONE:Global: Create Global Banking Material Risk Inventory** |  |  |  |  | was named DELIVERABLE:Global: Create Global Banking Material Risk Inventory |
| 560 | **TASK: Global: Create Global Banking Material Risk Inventory** |  |  |  |  | was named MILESTONE: Global: Create Global Banking Material Risk Inventory |
| 565 | **TASK: CEVF Material Risk Inventory** |  |  |  |  | was named MILESTONE: CEVF Material Risk Inventory |
| 568 | **TASK: Leasing Material Risk Inventory** |  |  |  |  | was named MILESTONE: Leasing Material Risk Inventory |
| 571 | **TASK: Dealer Floor Plan Material Risk Inventory** |  |  |  |  | was named MILESTONE: Dealer Floor Plan Material Risk Inventory |
| 584 | **MILESTONE:Financial Management Material Risk Inventory** |  |  |  |  | was named DELIVERABLE:Financial Management Material Risk Inventory |
| 585 | **TASK: Financial Management Material Risk Inventory** |  |  |  |  | was named MILESTONE: Financial Management Material Risk Inventory |
| 589 | **MILESTONE:Corporate Center Material Risk Inventory** |  |  |  |  | was named DELIVERABLE:Corporate Center Material Risk Inventory |
| 590 | **TASK: Corporate Center Material Risk Inventory** |  |  |  |  | was named MILESTONE: Corporate Center Material Risk Inventory |
| 599 | **MILESTONE:HR Material Risk Inventory** |  |  |  |  | was named DELIVERABLE:HR Material Risk Inventory |
| 600 | **TASK: HR Material Risk Inventory** |  |  |  |  | was named MILESTONE: HR Material Risk Inventory |
| 604 | **MILESTONE:Tech and Operations Material Risk Inventory** |  |  |  |  | was named DELIVERABLE:Tech and Operations Material Risk Inventory |
| 605 | **TASK: Tech and Operations Material Risk Inventory** |  |  |  |  | was named MILESTONE: Tech and Operations Material Risk Inventory |
| 609 | **MILESTONE:Finance Material Risk Inventory** | 2015-06-29 → 2015-06-26 (-3d) |  | 2d → 3d |  |  |
| 610 | **TASK: Finance Material Risk Inventory** |  |  |  |  | was named MILESTONE: Finance Material Risk Inventory |
| 614 | **MILESTONE:SBNA Aggregation Workshops** |  | 2015-08-31 → 2015-09-01 (+1d) |  | 479d → 43d | was named DELIVERABLE:SBNA Aggregation Workshops |
| 615 | **TASK: Credit Risk Aggregation** |  |  | 20d? → 19d? | 503d → 504d | was named MILESTONE: Credit Risk Aggregation |
| 616 | ERM disseminates Workshop Pre-Read Materials to Risk Managers |  | 2015-07-10 → 2015-07-09 (-1d) | 8d? → 7d? | 505d → 506d | constraint finish no earlier than 2015-07-10 → start no earlier than 2015-07-01 |
| 617 | ERM facilitates Aggregation and Enrichment Activities |  |  |  |  | constraint none → start no earlier than 2015-07-13 |
| 618 | Risk Manager presents inventory to level II subcommittee |  | 2015-07-28 → 2015-07-27 (-1d) | 2d? → 1d? | 503d → 504d | constraint finish no earlier than 2015-07-28 → start no earlier than 2015-07-27 |
| 620 | **TASK: Operational Risk Material Risk Aggregation** |  |  | 20d? → 19d? | 503d → 504d | was named MILESTONE: Operational Risk Material Risk Aggregation |
| 621 | ERM disseminates Workshop Pre-Read Materials to Risk Managers |  | 2015-07-10 → 2015-07-09 (-1d) | 8d? → 7d? | 505d → 506d | constraint finish no earlier than 2015-07-10 → start no earlier than 2015-07-01 |
| 622 | ERM facilitates Aggregation and Enrichment Activities |  |  |  |  | constraint none → start no earlier than 2015-07-13 |
| 623 | Risk Manager presents inventory to level II subcommittee |  | 2015-07-28 → 2015-07-27 (-1d) | 2d? → 1d? | 503d → 504d | constraint finish no earlier than 2015-07-28 → start no earlier than 2015-07-27 |
| 625 | **TASK: Compliance Material Risk Aggregation** |  |  | 20d? → 19d? | 503d → 504d | was named MILESTONE: Compliance Material Risk Aggregation |
| 626 | ERM disseminates Workshop Pre-Read Materials to Risk Managers |  | 2015-07-10 → 2015-07-09 (-1d) | 8d? → 7d? | 505d → 506d | constraint finish no earlier than 2015-07-10 → start no earlier than 2015-07-01 |
| 627 | ERM facilitates Aggregation and Enrichment Activities |  |  |  |  | constraint none → start no earlier than 2015-07-13 |
| 628 | Risk Manager presents inventory to level II subcommittee |  | 2015-07-28 → 2015-07-27 (-1d) | 2d? → 1d? | 503d → 504d | constraint finish no earlier than 2015-07-28 → start no earlier than 2015-07-27 |
| 630 | **TASK: Model Material Risk Aggregation** |  |  | 20d? → 19d? | 503d → 504d | was named MILESTONE: Model Material Risk Aggregation |
| 631 | ERM disseminates Workshop Pre-Read Materials to Risk Managers |  | 2015-07-10 → 2015-07-09 (-1d) | 8d? → 7d? | 505d → 506d | constraint finish no earlier than 2015-07-10 → start no earlier than 2015-07-01 |
| 632 | ERM facilitates Aggregation and Enrichment Activities |  |  |  |  | constraint none → start no earlier than 2015-07-13 |
| 633 | Risk Manager presents inventory to level II subcommittee |  | 2015-07-28 → 2015-07-27 (-1d) | 2d? → 1d? | 503d → 504d | constraint finish no earlier than 2015-07-28 → start no earlier than 2015-07-27 |
| 635 | **TASK: Liquidity/Market Material Risk Aggregation** |  |  | 20d? → 19d? | 503d → 504d | was named MILESTONE: Liquidity/Market Material Risk Aggregation |
| 636 | ERM disseminates Workshop Pre-Read Materials to Risk Managers |  | 2015-07-10 → 2015-07-09 (-1d) | 8d? → 7d? | 505d → 506d | constraint finish no earlier than 2015-07-10 → start no earlier than 2015-07-01 |
| 637 | ERM facilitates Aggregation and Enrichment Activities |  |  |  |  | constraint none → start no earlier than 2015-07-13 |
| 638 | Risk Manager presents inventory to level II subcommittee |  | 2015-07-28 → 2015-07-27 (-1d) | 2d? → 1d? | 503d → 504d | constraint finish no earlier than 2015-07-28 → start no earlier than 2015-07-27 |
| 640 | **TASK: Reputational/Strategic Material Risk Aggregation** |  |  | 20d? → 19d? | 503d → 504d | was named MILESTONE: Reputational/Strategic Material Risk Aggregation |
| 641 | ERM disseminates Workshop Pre-Read Materials to Risk Managers |  | 2015-07-10 → 2015-07-09 (-1d) | 8d? → 7d? | 505d → 506d | constraint finish no earlier than 2015-07-10 → start no earlier than 2015-07-01 |
| 642 | ERM facilitates Aggregation and Enrichment Workshop |  |  |  |  | constraint none → start no earlier than 2015-07-13 |
| 643 | Risk Manager presents inventory to level II subcommittee |  | 2015-07-28 → 2015-07-27 (-1d) | 2d? → 1d? | 503d → 504d | constraint finish no earlier than 2015-07-28 → start no earlier than 2015-07-27 |
| 645 | Present Results to SBNA ERMC |  | 2015-08-31 → 2015-08-28 (-3d) | 25d → 24d | 479d → 480d |  |
| 646 | Present Results to SBNA BERC |  | 2015-08-31 → 2015-08-28 (-3d) | 25d → 24d | 479d → 480d |  |
| 649 | **DELIVERABLE: SCUSA - Business Entity Material Risk Program** |  | 2015-08-31 → 2015-09-02 (+2d) | 46d? → 47d? | 479d → 46d | was named SCUSA - Business Entity Material Risk Program |
| 650 | **MILESTONE: Automotive Finance Material Risk Inventory** |  |  |  |  | was named DELIVERABLE: Automotive Finance Material Risk Inventory |
| 655 | **MILESTONE: Personal Lending Material Risk Inventory** |  |  |  |  | was named DELIVERABLE: Personal Lending Material Risk Inventory |

| ID | Task | Finish | Duration | Total float | Other |
| --- | --- | --- | --- | --- | --- |
| 660 | **MILESTONE: Human Resources Material Risk Inventory** |  |  |  | was named DELIVERABLE: Human Resources Material Risk Inventory |
| 665 | **MILESTONE: Finance and Accounting Material Risk Inventory** |  |  |  | was named DELIVERABLE: Finance and Accounting Material Risk Inventory |
| 670 | **MILESTONE: Technology and Operations Material Risk Inventory** |  |  |  | was named DELIVERABLE: Technology and Operations Material Risk Inventory |
| 675 | **MILESTONE: Legal Material Risk Inventory** |  |  |  | was named DELIVERABLE: Legal Material Risk Inventory |
| 680 | **MILESTONE: SCUSA Aggregation Workshops** |  | 20d? → 19d? | 503d → 504d | was named DELIVERABLE: SCUSA Aggregation Workshops |
| 681 | **TASK: Credit Risk Aggregation** |  | 20d? → 19d? | 503d → 504d | was named MILESTONE: Credit Risk Aggregation |
| 682 | ERM disseminates Workshop Pre-Read Materials to Risk Managers | 2015-07-10 → 2015-07-09 (-1d) | 8d? → 7d? | 505d → 506d | constraint finish no earlier than 2015-07-10 → start no earlier than 2015-07-01 |
| 683 | ERM facilitates Aggregation and Enrichment Activities |  |  |  | constraint none → start no earlier than 2015-07-13 |
| 684 | Risk Manager presents inventory to level II subcommittee | 2015-07-28 → 2015-07-27 (-1d) | 2d? → 1d? | 503d → 504d | constraint finish no earlier than 2015-07-28 → start no earlier than 2015-07-27 |
| 686 | **TASK: Operational Risk Material Risk Aggregation** |  | 20d? → 19d? | 503d → 504d | was named MILESTONE: Operational Risk Material Risk Aggregation |
| 687 | ERM disseminates Workshop Pre-Read Materials to Risk Managers | 2015-07-10 → 2015-07-09 (-1d) | 8d? → 7d? | 505d → 506d | constraint finish no earlier than 2015-07-10 → start no earlier than 2015-07-01 |
| 688 | ERM facilitates Aggregation and Enrichment Activities |  |  |  | constraint none → start no earlier than 2015-07-13 |
| 689 | Risk Manager presents inventory to level II subcommittee | 2015-07-28 → 2015-07-27 (-1d) | 2d? → 1d? | 503d → 504d | constraint finish no earlier than 2015-07-28 → start no earlier than 2015-07-27 |
| 691 | **TASK: Compliance Material Risk Aggregation** |  | 20d? → 19d? | 503d → 504d | was named MILESTONE: Compliance Material Risk Aggregation |
| 692 | ERM disseminates Workshop Pre-Read Materials to Risk Managers | 2015-07-10 → 2015-07-09 (-1d) | 8d? → 7d? | 505d → 506d | constraint finish no earlier than 2015-07-10 → start no earlier than 2015-07-01 |
| 693 | ERM facilitates Aggregation and Enrichment Activities |  |  |  | constraint none → start no earlier than 2015-07-13 |
| 694 | Risk Manager presents inventory to level II subcommittee | 2015-07-28 → 2015-07-27 (-1d) | 2d? → 1d? | 503d → 504d | constraint finish no earlier than 2015-07-28 → start no earlier than 2015-07-27 |
| 696 | **TASK: Model Material Risk Aggregation** |  | 20d? → 19d? | 503d → 504d | was named MILESTONE: Model Material Risk Aggregation |
| 697 | ERM disseminates Workshop Pre-Read Materials to Risk Managers | 2015-07-10 → 2015-07-09 (-1d) | 8d? → 7d? | 505d → 506d | constraint finish no earlier than 2015-07-10 → start no earlier than 2015-07-01 |
| 698 | ERM facilitates Aggregation and Enrichment Activities |  |  |  | constraint none → start no earlier than 2015-07-13 |
| 699 | Risk Manager presents inventory to level II subcommittee | 2015-07-28 → 2015-07-27 (-1d) | 2d? → 1d? | 503d → 504d | constraint finish no earlier than 2015-07-28 → start no earlier than 2015-07-27 |
| 701 | **TASK: Liquidity/Market Material Risk Aggregation** |  | 20d? → 19d? | 503d → 504d | was named MILESTONE: Liquidity/Market Material Risk Aggregation |
| 702 | ERM disseminates Workshop Pre-Read Materials to Risk Managers | 2015-07-10 → 2015-07-09 (-1d) | 8d? → 7d? | 505d → 506d | constraint finish no earlier than 2015-07-10 → start no earlier than 2015-07-01 |
| 703 | ERM facilitates Aggregation and Enrichment Activities |  |  |  | constraint none → start no earlier than 2015-07-13 |
| 704 | Risk Manager presents inventory to level II subcommittee | 2015-07-28 → 2015-07-27 (-1d) | 2d? → 1d? | 503d → 504d | constraint finish no earlier than 2015-07-28 → start no earlier than 2015-07-27 |
| 706 | **TASK: Reputational/Strategic Material Risk Aggregation** |  | 20d? → 19d? | 503d → 504d | was named MILESTONE: Reputational/Strategic Material Risk Aggregation |
| 707 | ERM disseminates Workshop Pre-Read Materials to Risk Managers | 2015-07-10 → 2015-07-09 (-1d) | 8d? → 7d? | 515d → 516d | constraint finish no earlier than 2015-07-10 → start no earlier than 2015-07-01 |
| 708 | ERM facilitates Aggregation and Enrichment Workshop | 2015-07-24 → 2015-07-23 (-1d) | 5d? → 4d? | 505d → 506d | constraint finish no earlier than 2015-07-24 → start no earlier than 2015-07-20 |
| 709 | Risk Manager presents inventory to level II subcommittee | 2015-07-28 → 2015-07-27 (-1d) | 2d? → 1d? | 503d → 504d | constraint finish no earlier than 2015-07-28 → start no earlier than 2015-07-27 |
| 711 | MILESTONE:Present Results to SCUSA ERMC |  |  |  | constraint finish no earlier than 2015-08-31 → start no earlier than 2015-07-28 |
| 712 | MILESTONE:Present Results to SCUSA BERC |  |  |  | constraint finish no earlier than 2015-08-31 → start no earlier than 2015-07-28 |
| 715 | **DELIVERABLE: New York Santander Investment Securities (SIS) - Business Entity Material Risk Program** | 2015-08-31 → 2015-09-02 (+2d) | 46d? → 47d? | 479d → 46d | was named New York Santander Investment Securities (SIS) - Business Entity Material Risk Program |
| 766 | **MILESTONE:NY SIS Aggregation Workshops** |  | 20d? → 19d? | 503d → 504d | was named DELIVERABLE:NY SIS Aggregation Workshops |
| 767 | **TASK: Credit Risk Aggregation** |  | 20d? → 19d? | 503d → 504d | was named MILESTONE: Credit Risk Aggregation |
| 768 | ERM disseminates Workshop Pre-Read Materials to Risk Managers | 2015-07-10 → 2015-07-09 (-1d) | 8d? → 7d? | 505d → 506d | constraint finish no earlier than 2015-07-10 → start no earlier than 2015-07-01 |
| 769 | ERM facilitates Aggregation and Enrichment Activities |  |  |  | constraint none → start no earlier than 2015-07-13 |
| 770 | Risk Manager presents inventory to level II subcommittee | 2015-07-28 → 2015-07-27 (-1d) | 2d? → 1d? | 503d → 504d | constraint finish no earlier than 2015-07-28 → start no earlier than 2015-07-27 |
| 772 | **TASK: Operational Risk Material Risk Aggregation** |  | 20d? → 19d? | 503d → 504d | was named MILESTONE: Operational Risk Material Risk Aggregation |
| 773 | ERM disseminates Workshop Pre-Read Materials to Risk Managers | 2015-07-10 → 2015-07-09 (-1d) | 8d? → 7d? | 505d → 506d | constraint finish no earlier than 2015-07-10 → start no earlier than 2015-07-01 |
| 774 | ERM facilitates Aggregation and Enrichment Activities |  |  |  | constraint none → start no earlier than 2015-07-13 |
| 775 | Risk Manager presents inventory to level II subcommittee | 2015-07-28 → 2015-07-27 (-1d) | 2d? → 1d? | 503d → 504d | constraint finish no earlier than 2015-07-28 → start no earlier than 2015-07-27 |
| 777 | **TASK: Compliance Material Risk Aggregation** |  | 20d? → 19d? | 503d → 504d | was named MILESTONE: Compliance Material Risk Aggregation |
| 778 | ERM disseminates Workshop Pre-Read Materials to Risk Managers | 2015-07-10 → 2015-07-09 (-1d) | 8d? → 7d? | 505d → 506d | constraint finish no earlier than 2015-07-10 → start no earlier than 2015-07-01 |
| 779 | ERM facilitates Aggregation and Enrichment Activities |  |  |  | constraint none → start no earlier than 2015-07-13 |
| 780 | Risk Manager presents inventory to level II subcommittee | 2015-07-28 → 2015-07-27 (-1d) | 2d? → 1d? | 503d → 504d | constraint finish no earlier than 2015-07-28 → start no earlier than 2015-07-27 |
| 782 | **TASK: Model Material Risk Aggregation** |  | 20d? → 19d? | 503d → 504d | was named MILESTONE: Model Material Risk Aggregation |
| 783 | ERM disseminates Workshop Pre-Read Materials to Risk Managers | 2015-07-10 → 2015-07-09 (-1d) | 8d? → 7d? | 505d → 506d | constraint finish no earlier than 2015-07-10 → start no earlier than 2015-07-01 |
| 784 | ERM facilitates Aggregation and Enrichment Workshop |  |  |  | constraint none → start no earlier than 2015-07-13 |
| 785 | Risk Manager presents inventory to level II subcommittee | 2015-07-28 → 2015-07-27 (-1d) | 2d? → 1d? | 503d → 504d | constraint finish no earlier than 2015-07-28 → start no earlier than 2015-07-27 |
| 787 | **TASK: Liquidity/Market Material Risk Aggregation** |  | 20d? → 19d? | 503d → 504d | was named MILESTONE: Liquidity/Market Material Risk Aggregation |
| 788 | ERM disseminates Workshop Pre-Read Materials to Risk Managers | 2015-07-10 → 2015-07-09 (-1d) | 8d? → 7d? | 505d → 506d | constraint finish no earlier than 2015-07-10 → start no earlier than 2015-07-01 |
| 789 | ERM facilitates Aggregation and Enrichment Activities |  |  |  | constraint none → start no earlier than 2015-07-13 |
| 790 | Risk Manager presents inventory to level II subcommittee | 2015-07-28 → 2015-07-27 (-1d) | 2d? → 1d? | 503d → 504d | constraint finish no earlier than 2015-07-28 → start no earlier than 2015-07-27 |
| 792 | **TASK: Reputational/Strategic Material Risk Aggregation** |  | 20d? → 19d? | 503d → 504d | was named MILESTONE: Reputational/Strategic Material Risk Aggregation |
| 793 | ERM disseminates Workshop Pre-Read Materials to Risk Managers | 2015-07-10 → 2015-07-09 (-1d) | 8d? → 7d? | 505d → 506d | constraint finish no earlier than 2015-07-10 → start no earlier than 2015-07-01 |
| 794 | ERM facilitates Aggregation and Enrichment Activities |  |  |  | constraint none → start no earlier than 2015-07-13 |
| 795 | Risk Manager presents inventory to level II subcommittee | 2015-07-28 → 2015-07-27 (-1d) | 2d? → 1d? | 503d → 504d | constraint finish no earlier than 2015-07-28 → start no earlier than 2015-07-27 |
| 797 | MILESTONE:Present Results to NY SIS ERMC |  |  |  | constraint finish no earlier than 2015-08-31 → start no earlier than 2015-07-28 |
| 798 | MILESTONE:Present Results to NY SIS BERC |  |  |  | constraint finish no earlier than 2015-08-31 → start no earlier than 2015-07-28 |
| 801 | **DELIVERABLE: Puerto Rico - Business Entity Material Risk Program** | 2015-08-31 → 2015-09-02 (+2d) | 68d? → 69d? | 479d → 68d | was named Puerto Rico - Business Entity Material Risk Program |
| 802 | **MILESTONE:Retail Banking Material Risk Inventory** |  |  |  | was named DELIVERABLE:Retail Banking Material Risk Inventory |
| 803 | **TASK: Personal Loans Banking Material Risk Inventory** |  |  |  | was named MILESTONE: Personal Loans Banking Material Risk Inventory |
| 806 | **TASK: Small Business Banking Material Risk Inventory** |  |  |  | was named MILESTONE: Small Business Banking Material Risk Inventory |
| 809 | **TASK: Santander Insurance Agency Material Risk Inventory** |  |  |  | was named MILESTONE: Santander Insurance Agency Material Risk Inventory |
| 812 | **TASK: Credit Cards Material Risk Inventory** |  |  |  | was named MILESTONE: Credit Cards Material Risk Inventory |
| 815 | **TASK: Mortgages Material Risk Inventory** |  |  |  | was named MILESTONE: Mortgages Material Risk Inventory |
| 823 | **MILESTONE:Global Banking/Commercial Banking and CRE/Speciality and Gov't Banking Material Risk Inventory** |  |  |  | was named DELIVERABLE:Global Banking/Commercial Banking and CRE/Speciality and Gov't Banking Material Risk Inventory |
| 824 | **TASK: GBM Material Risk Inventory** |  |  |  | was named MILESTONE: GBM Material Risk Inventory |
| 827 | **TASK: Enterprise Material Risk Inventory** |  |  |  | was named MILESTONE: Enterprise Material Risk Inventory |
| 830 | **TASK: Institutional/Public Sector Material Risk Inventory** |  |  |  | was named MILESTONE: Institutional/Public Sector Material Risk Inventory |

| ID | Task | Start | Finish | Duration | Total float | Other |
| --- | --- | --- | --- | --- | --- | --- |
| 863 | **MILESTONE:Human Resources Material Risk Inventory** | 2015-06-29 → 2015-05-28 (-32d) |  | 2d → 24d |  |  |
| 879 | **MILESTONE:Finance Material Risk Inventory** |  |  |  |  | was named DELIVERABLE:Finance Material Risk Inventory |
| 899 | **MILESTONE:Puerto Rico - Santander Bancorp Aggregation Workshops** |  |  | 20d? → 19d? | 503d → 504d | was named DELIVERABLE:Puerto Rico - Santander Bancorp Aggregation Workshops |
| 900 | **TASK: Credit Risk Aggregation** |  |  | 20d? → 19d? | 503d → 504d | was named MILESTONE: Credit Risk Aggregation |
| 901 | ERM disseminates Workshop Pre-Read Materials to Risk Managers |  | 2015-07-10 → 2015-07-09 (-1d) | 8d? → 7d? | 505d → 506d | constraint finish no earlier than 2015-07-10 → start no earlier than 2015-07-01 |
| 902 | ERM facilitates Aggregation and Enrichment Activities |  |  |  |  | constraint none → start no earlier than 2015-07-13 |
| 903 | Risk Manager presents inventory to level II subcommittee |  | 2015-07-28 → 2015-07-27 (-1d) | 2d? → 1d? | 503d → 504d | constraint finish no earlier than 2015-07-28 → start no earlier than 2015-07-27 |
| 905 | **TASK: Operational Risk Material Risk Aggregation** |  |  | 20d? → 19d? | 503d → 504d | was named MILESTONE: Operational Risk Material Risk Aggregation |
| 906 | ERM disseminates Workshop Pre-Read Materials to Risk Managers |  | 2015-07-10 → 2015-07-09 (-1d) | 8d? → 7d? | 505d → 506d | constraint finish no earlier than 2015-07-10 → start no earlier than 2015-07-01 |
| 907 | ERM facilitates Aggregation and Enrichment Activities |  |  |  |  | constraint none → start no earlier than 2015-07-13 |
| 908 | Risk Manager presents inventory to level II subcommittee |  | 2015-07-28 → 2015-07-27 (-1d) | 2d? → 1d? | 503d → 504d | constraint finish no earlier than 2015-07-28 → start no earlier than 2015-07-27 |
| 910 | **TASK: Compliance Material Risk Aggregation** |  |  | 20d? → 19d? | 503d → 504d | was named MILESTONE: Compliance Material Risk Aggregation |
| 911 | ERM disseminates Workshop Pre-Read Materials to Risk Managers |  | 2015-07-10 → 2015-07-09 (-1d) | 8d? → 7d? | 505d → 506d | constraint finish no earlier than 2015-07-10 → start no earlier than 2015-07-01 |
| 912 | ERM facilitates Aggregation and Enrichment Workshop |  |  |  |  | constraint none → start no earlier than 2015-07-13 |
| 913 | Risk Manager presents inventory to level II subcommittee |  | 2015-07-28 → 2015-07-27 (-1d) | 2d? → 1d? | 503d → 504d | constraint finish no earlier than 2015-07-28 → start no earlier than 2015-07-27 |
| 915 | **TASK: Model Material Risk Aggregation** |  |  | 20d? → 19d? | 503d → 504d | was named MILESTONE: Model Material Risk Aggregation |
| 916 | ERM disseminates Workshop Pre-Read Materials to Risk Managers |  | 2015-07-10 → 2015-07-09 (-1d) | 8d? → 7d? | 505d → 506d | constraint finish no earlier than 2015-07-10 → start no earlier than 2015-07-01 |
| 917 | ERM facilitates Aggregation and Enrichment Activities |  |  |  |  | constraint none → start no earlier than 2015-07-13 |
| 918 | Risk Manager presents inventory to level II subcommittee |  | 2015-07-28 → 2015-07-27 (-1d) | 2d? → 1d? | 503d → 504d | constraint finish no earlier than 2015-07-28 → start no earlier than 2015-07-27 |
| 920 | **TASK: Liquidity/Market Material Risk Aggregation** |  |  | 20d? → 19d? | 503d → 504d | was named MILESTONE: Liquidity/Market Material Risk Aggregation |
| 921 | ERM disseminates Workshop Pre-Read Materials to Risk Managers |  | 2015-07-10 → 2015-07-09 (-1d) | 8d? → 7d? | 505d → 506d | constraint finish no earlier than 2015-07-10 → start no earlier than 2015-07-01 |
| 922 | ERM facilitates Aggregation and Enrichment Activities |  |  |  |  | constraint none → start no earlier than 2015-07-13 |
| 923 | Risk Manager presents inventory to level II subcommittee |  | 2015-07-28 → 2015-07-27 (-1d) | 2d? → 1d? | 503d → 504d | constraint finish no earlier than 2015-07-28 → start no earlier than 2015-07-27 |
| 925 | **TASK: Reputational/Strategic Material Risk Aggregation** |  |  | 20d? → 19d? | 503d → 504d | was named MILESTONE: Reputational/Strategic Material Risk Aggregation |
| 926 | ERM disseminates Workshop Pre-Read Materials to Risk Managers |  | 2015-07-10 → 2015-07-09 (-1d) | 8d? → 7d? | 515d → 516d | constraint finish no earlier than 2015-07-10 → start no earlier than 2015-07-01 |
| 927 | ERM facilitates Aggregation and Enrichment Workshop |  | 2015-07-24 → 2015-07-23 (-1d) | 5d? → 4d? | 505d → 506d | constraint finish no earlier than 2015-07-24 → start no earlier than 2015-07-20 |
| 928 | Risk Manager presents inventory to level II subcommittee |  | 2015-07-28 → 2015-07-27 (-1d) | 2d? → 1d? | 503d → 504d | constraint finish no earlier than 2015-07-28 → start no earlier than 2015-07-27 |
| 930 | MILESTONE:Present Results to PR Santander Bancorp ERMC |  |  |  |  | was named DELIVERABLE:Present Results to PR Santander Bancorp ERMC |
| 931 | MILESTONE:Present Results to PR Santander Bancorp BERC |  |  |  |  | was named DELIVERABLE:Present Results to PR Santander Bancorp BERC |
| 934 | **DELIVERABLE: Miami - Business Entity Material Risk Program** |  | 2015-08-31 → 2015-09-02 (+2d) | 68d? → 69d? | 479d → 68d | was named Miami - Business Entity Material Risk Program; resources L. Madariaga → none |
| 941 | **TASK:Personal Lending Material Risk Inventory** |  |  |  |  | was named MILESTONE:Personal Lending Material Risk Inventory |
| 945 | **MILESTONE:Human Resources Material Risk Inventory** | 2015-05-28 → 2015-06-29 (+32d) |  | 24d → 2d |  |  |
| 946 | **TASK:Human Resources Material Risk Inventory** |  |  |  |  | was named MILESTONE:Human Resources Material Risk Inventory |
| 950 | **MILESTONE:Finance and Accounting Material Risk Inventory** | 2015-06-29 → 2015-05-28 (-32d) |  | 2d → 24d |  |  |
| 951 | **TASK:Finance and Accounting Material Risk Inventory** |  |  |  |  | was named MILESTONE:Finance and Accounting Material Risk Inventory |
| 957 | **TASK:Technology and Operations Material Risk Inventory** |  |  |  |  | was named MILESTONE:Technology and Operations Material Risk Inventory |
| 962 | **TASK:Legal Material Risk Inventory** |  |  |  |  | was named MILESTONE:Legal Material Risk Inventory |
| 966 | **MILESTONE:Miami Aggregation Workshops** |  |  | 20d? → 19d? | 503d → 504d | was named DELIVERABLE:Miami Aggregation Workshops |
| 967 | **TASK: Credit Risk Aggregation** |  |  | 20d? → 19d? | 503d → 504d | was named MILESTONE: Credit Risk Aggregation |
| 968 | ERM disseminates Workshop Pre-Read Materials to Risk Managers |  | 2015-07-10 → 2015-07-09 (-1d) | 8d? → 7d? | 505d → 506d | constraint finish no earlier than 2015-07-10 → start no earlier than 2015-07-01 |
| 969 | ERM facilitates Aggregation and Enrichment Activities |  |  |  |  | constraint none → start no earlier than 2015-07-13 |
| 970 | Risk Manager presents inventory to level II subcommittee |  | 2015-07-28 → 2015-07-27 (-1d) | 2d? → 1d? | 503d → 504d | constraint finish no earlier than 2015-07-28 → start no earlier than 2015-07-27 |
| 972 | **TASK: Operational Risk Material Risk Aggregation** |  |  | 20d? → 19d? | 503d → 504d | was named MILESTONE: Operational Risk Material Risk Aggregation |
| 973 | ERM disseminates Workshop Pre-Read Materials to Risk Managers |  | 2015-07-10 → 2015-07-09 (-1d) | 8d? → 7d? | 505d → 506d | constraint finish no earlier than 2015-07-10 → start no earlier than 2015-07-01 |
| 974 | ERM facilitates Aggregation and Enrichment Activities |  |  |  |  | constraint none → start no earlier than 2015-07-13 |
| 975 | Risk Manager presents inventory to level II subcommittee |  | 2015-07-28 → 2015-07-27 (-1d) | 2d? → 1d? | 503d → 504d | constraint finish no earlier than 2015-07-28 → start no earlier than 2015-07-27 |
| 977 | **TASK: Compliance Material Risk Aggregation** |  |  | 20d? → 19d? | 503d → 504d | was named MILESTONE: Compliance Material Risk Aggregation |
| 978 | ERM disseminates Workshop Pre-Read Materials to Risk Managers |  | 2015-07-10 → 2015-07-09 (-1d) | 8d? → 7d? | 505d → 506d | constraint finish no earlier than 2015-07-10 → start no earlier than 2015-07-01 |
| 979 | ERM facilitates Aggregation and Enrichment Activities |  |  |  |  | constraint none → start no earlier than 2015-07-13 |
| 980 | Risk Manager presents inventory to level II subcommittee |  | 2015-07-28 → 2015-07-27 (-1d) | 2d? → 1d? | 503d → 504d | constraint finish no earlier than 2015-07-28 → start no earlier than 2015-07-27 |
| 982 | **TASK: Model Material Risk Aggregation** |  |  | 20d? → 19d? | 503d → 504d | was named MILESTONE: Model Material Risk Aggregation |
| 983 | ERM disseminates Workshop Pre-Read Materials to Risk Managers |  | 2015-07-10 → 2015-07-09 (-1d) | 8d? → 7d? | 505d → 506d | constraint finish no earlier than 2015-07-10 → start no earlier than 2015-07-01 |
| 984 | ERM facilitates Aggregation and Enrichment Workshop |  |  |  |  | constraint none → start no earlier than 2015-07-13 |
| 985 | Risk Manager presents inventory to level II subcommittee |  | 2015-07-28 → 2015-07-27 (-1d) | 2d? → 1d? | 503d → 504d | constraint finish no earlier than 2015-07-28 → start no earlier than 2015-07-27 |
| 987 | **TASK: Liquidity/Market Material Risk Aggregation** |  |  | 20d? → 19d? | 503d → 504d | was named MILESTONE: Liquidity/Market Material Risk Aggregation |
| 988 | ERM disseminates Workshop Pre-Read Materials to Risk Managers |  | 2015-07-10 → 2015-07-09 (-1d) | 8d? → 7d? | 505d → 506d | constraint finish no earlier than 2015-07-10 → start no earlier than 2015-07-01 |
| 989 | ERM facilitates Aggregation and Enrichment Activities |  |  |  |  | constraint none → start no earlier than 2015-07-13 |
| 990 | Risk Manager presents inventory to level II subcommittee |  | 2015-07-28 → 2015-07-27 (-1d) | 2d? → 1d? | 503d → 504d | constraint finish no earlier than 2015-07-28 → start no earlier than 2015-07-27 |
| 992 | **TASK: Reputational/Strategic Material Risk Aggregation** |  |  | 20d? → 19d? | 503d → 504d | was named MILESTONE: Reputational/Strategic Material Risk Aggregation |
| 993 | ERM disseminates Workshop Pre-Read Materials to Risk Managers |  | 2015-07-10 → 2015-07-09 (-1d) | 8d? → 7d? | 505d → 506d | constraint finish no earlier than 2015-07-10 → start no earlier than 2015-07-01 |
| 994 | ERM facilitates Aggregation and Enrichment Workshop |  |  |  |  | constraint none → start no earlier than 2015-07-13 |
| 995 | Risk Manager presents inventory to level II subcommittee |  | 2015-07-28 → 2015-07-27 (-1d) | 2d? → 1d? | 503d → 504d | constraint finish no earlier than 2015-07-28 → start no earlier than 2015-07-27 |
| 997 | MILESTONE:Present Miami to SCUSA ERMC |  |  |  |  | constraint finish no earlier than 2015-08-31 → start no earlier than 2015-07-28 |
| 998 | MILESTONE:Present Miami to SCUSA BERC |  |  |  |  | constraint finish no earlier than 2015-08-31 → start no earlier than 2015-07-28 |
| 1004 | Identify existing Foundational Risk Processes |  |  |  | none → 370d | constraint none → start no earlier than 2016-01-18 |
| 1005 | Confirm and validated foundational risk inventory - develop or enhance as needed |  |  |  | none → 370d | constraint none → start no earlier than 2016-01-18 |
| 1006 | MILESTONE: Landscape of Foundational Risk Processes and risk inventory confirmed |  |  |  | none → 371d | constraint none → start no earlier than 2016-01-29 |
| 1009 | Review and assess each Foundational Risk Process |  |  |  | none → 339d | constraint none → start no earlier than 2016-02-01 |
| 1010 | Determine optimal future state for each process |  |  |  | none → 339d | constraint none → start no earlier than 2016-02-01 |
| 1011 | Perform gap analyses for processes determined to be deficient |  |  |  | none → 339d | constraint none → start no earlier than 2016-02-01 |

| ID | Task | Start | Finish | Duration | Complete | Total float | Other |
| --- | --- | --- | --- | --- | --- | --- | --- |
| 1012 | MILESTONE: Each Foundational Risk Process reviewed and assessed |  |  |  |  | none → 340d | constraint none → start no earlier than 2016-03-14 |
| 1015 | Identify deficiencies in current plan |  |  |  |  | none → 329d | constraint none → start no earlier than 2016-03-14 |
| 1016 | Determine optimal state for plan |  |  |  |  | none → 329d | constraint none → start no earlier than 2016-03-14 |
| 1017 | Perform gap analysis in order to develop plan remediation |  |  |  |  | none → 329d | constraint none → start no earlier than 2016-03-14 |
| 1018 | MILESTONE: Plan remediation developed |  |  |  |  | none → 330d | constraint none → start no earlier than 2016-03-28 |
| 1021 | MILESTONE: Draft of updated risk taxonomy based on 2015 results |  |  |  |  | none → 427d | constraint none → start no earlier than 2015-11-02 |
| 1022 | MILESTONE: Final updated risk taxonomy based on 2015 results |  |  |  |  | none → 414d | constraint none → start no earlier than 2015-11-11 |
| 1024 | MILESTONE: Updated material risk inventory template |  |  |  |  | none → 391d | constraint none → start no earlier than 2015-12-01 |
| 1025 | MILESTONE: Updated material risk guidance |  |  |  |  | none → 391d | constraint none → start no earlier than 2015-12-01 |
| 1026 | MILESTONE: Updated aggregation and enrichment guidance |  |  |  |  | none → 391d | constraint none → start no earlier than 2015-12-01 |
| 1028 | MILESTONE: Technology requirements and BRD for risk inventory template web interface |  |  |  |  | none → 377d | constraint none → start no earlier than 2016-01-01 |
| 1030 | MILESTONE: Implementation of web interface for risk inventory template |  |  |  |  | none → 354d | constraint none → start no earlier than 2016-01-20 |
| 1031 | MILESTONE: Web interface pilot with selected business entities |  |  |  |  | none → 335d | constraint none → start no earlier than 2016-02-22 |
| 1032 | MILESTONE: Roll out of web interface across business entities |  |  |  |  | none → 326d | constraint none → start no earlier than 2016-03-18 |
| 1034 | MILESTONE: Development and rollout of training package for material risk ID process |  |  |  |  | none → 283d | constraint none → start no earlier than 2016-04-01 |
| 1035 | MILESTONE: Update and rollout of Policies and procedures for material risk ID process |  |  |  |  | none → 283d | constraint none → start no earlier than 2016-04-01 |
| 1037 | MILESTONE: Development of technology requirements and BRDs for database with business entity level foundational inputs and data sources |  |  |  |  | none → 315d | constraint none → start no earlier than 2016-03-15 |
| 1038 | MILESTONE: Implementation of database for foundational inputs and data sources |  |  |  |  | none → 229d | constraint none → start no earlier than 2016-03-15 |
| 1039 | MILESTONE: Database pilot for selected business entities |  |  |  |  | none → 207d | constraint none → start no earlier than 2016-08-15 |
| 1040 | MILESTONE: Roll out of database across business entities |  |  |  |  | none → 163d | constraint none → start no earlier than 2016-09-14 |
| 1042 | MILESTONE: Training package for material risk ID database and process developed and rolled out |  |  |  |  | none → 120d | constraint none → start no earlier than 2016-11-15 |
| 1043 | MILESTONE: Policies and procedures for material risk ID process updated and rolled out |  |  |  |  | none → 120d | constraint none → start no earlier than 2016-11-15 |
| 1044 | **Risk Management Processes** | 2014-10-01 A → 2014-10-02 A (+1d) |  | 513d? → 512d | 17% → 31% |  |  |
| 1057 | Implement Risk type A (Most likely Credit) Framework at SBNA |  |  |  |  | none → 408d | constraint none → start no earlier than 2015-09-11 |
| 1058 | Implement Risk type A (Most likely Credit) Framework at SCUSA |  |  |  |  | none → 408d | constraint none → start no earlier than 2015-09-11 |
| 1059 | Risk type A (Most likely Credit) Framework Implemented at SHUSA, SBNA, and SCUSA |  |  |  |  | none → 408d | constraint none → start no earlier than 2015-12-09 |
| 1062 | Implement Risk type B (Most likely ERM + RAS + Strategic) Framework at SBNA |  |  |  |  | none → 408d | constraint none → start no earlier than 2015-09-11 |
| 1063 | Implement Risk type B (Most likely ERM + RAS + Strategic) Framework at SCUSA |  |  |  |  | none → 408d | constraint none → start no earlier than 2015-09-11 |
| 1064 | Risk type B (Most likely ERM + RAS + Strategic) Framework Implemented at SHUSA, SBNA, and SCUSA |  |  |  |  | none → 408d | constraint none → start no earlier than 2015-12-09 |
| 1070 | Risk Type C (Most Likely Market & Liquidity) at SHUSA, SBNA, SCUSA and Other Entities Implemented |  |  |  |  | none → 349d | constraint none → start no earlier than 2016-03-01 |
| 1075 | MILESTONE: Risk type D (Most likely Compliance) Framework at SHUSA, SBNA, SCUSA, and Other Entities Implemented |  |  |  |  | none → 349d | constraint none → start no earlier than 2016-03-01 |
| 1081 | Risk type E (Most likely Risk Management Information) Framework at SHUSA, SBNA, and SCUSA Implemented |  |  |  |  | none → 289d | constraint none → start no earlier than 2016-05-24 |
| 1083 | Implement Risk type F (Most likely Capital Risk) Framework at SHUSA |  |  |  |  |  | was named Implement Risk type F (Most likely Capital Risk) Framework at SHUSA, SBNA, and SCUSA |
| 1084 | Implement Risk type F (Most likely Capital Risk) Framework at SBNA |  |  |  |  |  | was named Implement Risk type F (Most likely Capital Risk) Framework at SHUSA, SBNA, and SCUSA |
| 1085 | Implement Risk type F (Most likely Capital Risk) Framework at SCUSA |  |  |  |  |  | was named Implement Risk type F (Most likely Capital Risk) Framework at SHUSA, SBNA, and SCUSA |
| 1086 | Risk type F (Most likely Capital Risk) Framework at SHUSA, SBNA, and SCUSA Implemented |  |  |  |  | none → 289d | constraint none → start no earlier than 2016-05-24 |
| 1087 | **New Credit Risk Rating System** | 2014-10-01 A → 2014-10-02 A (+1d) | 2016-03-31 → 2016-06-10 (+71d) | 392d → 442d | 43% → 50% | 326d → 275d | resources D. Spector → none |
| 1088 | **DELIVERABLE: Implementation of new ratings to reflect statistically valid rating methodology (CRE Q1-16 /C&I Q2-16)** | 2014-10-01 A → 2014-10-02 A (+1d) | 2016-03-31 → 2016-06-10 (+71d) | 392d → 442d | 43% → 50% | 326d → 275d |  |
| 1089 | **MILESTONE: Rating Determination (Includes Model Development)** | 2014-10-01 A → 2014-10-02 A (+1d) | 2016-03-31 → 2016-06-10 (+71d) | 392d → 442d | 43% → 50% | 326d → 275d |  |
| 1090 | **TASK: CRE** | 2014-10-01 A → 2014-10-02 A (+1d) | 2015-11-30 → 2016-06-10 (+193d) | 304d → 442d | 61% → 74% | 414d → 275d |  |
| 1091 | Complete Road Map for CRE and C&I internal risk rating framework | 2014-10-01 A → 2014-10-02 A (+1d) | 2014-12-01 A → 2014-12-15 A (+14d) | 44d → 53d |  |  | constraint none → start no earlier than 2014-10-01 |
| 1092 | Data Selection and Sample Procurement for CRE & C&I for internal risk rating framework | 2014-10-01 A → 2014-10-02 A (+1d) | 2014-12-30 A → 2015-01-13 A (+14d) | 65d → 74d |  |  | constraint none → start no earlier than 2014-10-01 |
| 1093 | CRE Model developed on sample data (good end results) | 2014-11-01 A → 2014-11-03 A (+2d) | 2014-12-31 A → 2015-02-13 A (+44d) | 43d → 75d |  |  | constraint none → start no earlier than 2014-11-01 |
| 1094 | CRE data procurement process completed | 2015-01-01 A → 2015-01-02 A (+1d) | 2015-02-28 A → 2015-06-15 A (+107d) | 42d → 117d |  |  | constraint none → start no earlier than 2015-01-01 |
| 1095 | Phase I CRE Model developed on data from 2005 - 2009 (statistical and expert model) | 2015-03-01 A → 2015-03-02 A (+1d) | 2015-03-31 A → 2015-09-10 A (+163d) | 22d → 139d |  |  | constraint none → start no earlier than 2015-03-01 |
| 1096 | Phase I CRE Model documentation completed | 2015-03-01 A → 2015-03-02 A (+1d) | 2015-03-31 A → 2015-09-10 A (+163d) | 22d → 139d |  |  | constraint none → start no earlier than 2015-03-01 |
| 1097 | Phase II CRE Model development in process (includes data from 2005 to 2014) (statistical and expert model) | 2015-04-01 A → 2015-04-02 A (+1d) | 2015-05-15 A → 2015-11-27 A (+196d) | 33d → 172d |  |  | constraint none → start no earlier than 2015-04-01 |
| 1098 | Phase II CRE Model documentation in progress | 2015-04-01 A → 2015-04-02 A (+1d) | 2015-05-15 A → 2015-11-27 A (+196d) | 33d → 172d |  |  | constraint none → start no earlier than 2015-04-01 |
| 1099 | IT Requirements submission | 2015-05-01 A → 2015-05-04 A (+3d) | 2015-05-29 A → 2016-01-12 A (+228d) | 21d → 182d |  |  | constraint none → start no earlier than 2015-05-01 |
| 1100 | Data Technology to implement models CRE | 2015-06-01 A → 2015-06-01 | 2015-09-30 → 2016-06-10 (+254d) | 88d → 270d | 5% → 0% | 457d → 275d | constraint none → start no earlier than 2015-06-01 |
| 1106 | **TASK: C&I (Start after the CRE, structure can be leverage from CRE)** | 2015-02-02 A → 2015-02-02 | 2015-11-30 → 2015-12-14 (+14d) | 216d → 226d | 59% → 0% | 414d → 404d |  |
| 1107 | Prepare plan for C&I - dependent on CRE IT requirements submission (completion date estimated for 12/3/15) | 2015-05-01 A → 2015-05-01 | 2015-05-01 A → 2015-12-14 (+227d) | 1d → 162d | 100% → 0% | none → 404d | constraint none → start no earlier than 2015-05-01 |
| 1108 | C&I data procurement process completed | 2015-02-02 A → 2015-02-02 | 2015-02-27 A → 2015-07-14 (+137d) | 20d → 117d | 100% → 0% | none → 513d | constraint none → start no earlier than 2015-02-02 |
| 1109 | C&I Model developed on sample data (good end results) | 2015-02-02 A → 2015-02-02 | 2015-02-27 A → 2015-07-14 (+137d) | 20d → 117d | 100% → 0% | none → 513d | constraint none → start no earlier than 2015-02-02 |
| 1117 | **TASK: Governance** | 2015-06-01 A → 2015-06-01 |  |  | 32% → 0% |  |  |
| 1118 | Finalize Risk Rating Charter | 2015-06-01 A → 2015-06-01 | 2015-06-30 A → 2015-06-30 |  | 100% → 0% | none → 523d | constraint none → start no earlier than 2015-06-01 |
| 1159 | **Year 2 and Year 3 Priorities** | 2014-10-01 → 2016-02-29 (+516d) | 2014-10-01 → 2016-09-16 (+716d) | 1d? → 145d |  | none → -184d | was named Year 2 & 3 Deliverable / Milestone |
| 1163 | Define controls and operational limits for each process step |  |  |  |  | -412d → -174d | constraint none → start no earlier than 2016-03-14 |
| 1164 | Articulate scope of authority across the organization and associated escalation procedures |  |  |  |  | -412d → -174d | constraint none → start no earlier than 2016-04-04 |
| 1165 | Launch remediation efforts, depending on progress of roll-out of organizational structure |  |  |  |  | -412d → -174d | constraint none → start no earlier than 2016-04-25 |
| 1166 | Launch of remediation efforts |  |  |  |  | -412d → -174d | constraint none → start no earlier than 2016-04-29 |
| 1170 | Benchmark current practices with industry best practices |  |  |  |  | -512d → -269d | constraint none → start no earlier than 2016-08-08 |
| 1171 | Create actionable prioritized remediation plans to address shortcomings and gaps to best practice |  |  |  |  | -512d → -269d | constraint none → start no earlier than 2016-08-22 |
| 1172 | Socialize remediation plans with key stakeholders (SHUSA, SBNA, SCUSA) |  |  |  |  | -512d → 205d | constraint none → start no earlier than 2016-09-12 |
| 1173 | Complete gap analysis and delivery of remediation plans |  |  |  |  | -507d → -269d | constraint none → start no earlier than 2016-09-09 |
| 1174 | **Risk Monitoring** | 2014-09-19 → 2015-06-15 (+269d) |  | 661d? → 470d |  | 0d → 65d |  |
| 1187 | **Internal Reporting Review, Design and Enhancements** | 2014-09-19 → 2015-06-15 (+269d) |  | 401d? → 210d |  | 0d → 325d |  |
| 1192 | Determine if any quick-win enhancements can be made in terms of audience, content, frequency, format, etc. |  |  |  |  |  | constraint finish no earlier than 2015-07-03 → start no earlier than 2015-07-06 |
| 1193 | Detail prioritization of and plan for enhancements |  |  |  |  |  | constraint finish no earlier than 2015-07-03 → start no earlier than 2015-07-20 |
| 1197 | Determine if any quick-win enhancements can be made in terms of standards, processes (e.g. review process), documentation, controls, etc. |  |  |  |  |  | constraint finish no earlier than 2015-07-17 → start no earlier than 2015-07-06 |

| ID | Task | Start | Finish | Duration | Total float | Other |
| --- | --- | --- | --- | --- | --- | --- |
| 1198 | Detail prioritization of and plan for enhancements |  |  |  |  | constraint finish no earlier than 2015-07-17 → start no earlier than 2015-07-20 |
| 1202 | Socialize with key stakeholders (SHUSA Board and Risk Managers) |  |  |  |  | constraint finish no earlier than 2015-07-31 → start no earlier than 2015-08-10 |
| 1208 | Socialize with key stakeholders (SHUSA) and update target landscape as necessary |  |  |  |  | constraint finish no earlier than 2015-08-14 → start no earlier than 2015-08-31 |
| 1220 | Collect feedback from key stakeholders (SHUSA) |  |  |  |  | constraint finish no earlier than 2015-10-30 → start no earlier than 2015-10-26 |
| 1221 | Refine reports based on stakeholder feedback |  |  |  |  | constraint finish no earlier than 2015-11-06 → start no earlier than 2015-11-02 |
| 1230 | Review business and data requirements for both interim and target state of Wave 2 reports and make additions as necessary |  |  |  |  | constraint finish no earlier than 2015-12-18 → start no earlier than 2015-11-02 |
| 1231 | Pilot reports using available data (manual where necessary) |  |  |  |  | constraint finish no earlier than 2015-12-11 → start no earlier than 2015-11-02 |
| 1232 | Collect feedback from key stakeholders (SHUSA) |  |  |  |  | constraint finish no earlier than 2015-12-18 → start no earlier than 2015-12-14 |
| 1233 | Refine reports based on stakeholder feedback |  |  |  |  | constraint finish no earlier than 2015-12-25 → start no earlier than 2015-12-21 |
| 1236 | **DELIVERABLE: Wave 3 of reporting enhancements** | 2014-09-19 → 2015-12-28 (+465d) |  | 401d? → 70d | 0d → 325d |  |
| 1240 | **MILESTONE: Roll- out of Wave 3 reports** | 2014-09-19 → 2016-04-01 (+560d) | 2014-09-19 → 2016-04-01 (+560d) | 1d? → 0d | 0d → 326d |  |
| 1241 | Completion of Wave 3 Roll-out | 2014-09-19 → 2016-04-01 (+560d) | 2014-09-19 → 2016-04-01 (+560d) | 1d? → 0d | none → 326d | constraint none → start no earlier than 2016-04-01 |
| 1245 | Conduct Data Inventory of Wave 1 of Enhanced Reports |  |  |  |  | constraint none → start no earlier than 2015-10-26 |
| 1246 | Data Inventory of Wave 1 of Enhanced Reports Created |  |  |  |  | constraint none → start no earlier than 2015-10-30 |
| 1248 | Assess Current Data Inventory Against Wave 1 of Newly Enhanced Reports |  |  |  |  | constraint none → start no earlier than 2015-11-02 |
| 1249 | Current Data Inventory Assessed Against Wave 1 of Enhanced Reports |  |  |  |  | constraint none → start no earlier than 2015-11-13 |
| 1251 | Conduct Data Inventory of Wave 2 of Enhanced Reports |  |  |  |  | constraint none → start no earlier than 2015-12-21 |
| 1252 | Data Inventory of Wave 2 of Enhanced Reports Created |  |  |  |  | constraint none → start no earlier than 2015-12-25 |
| 1254 | Assess Current Data Inventory Against Wave 2 of Enhanced Reports |  |  |  |  | constraint none → start no earlier than 2015-12-28 |
| 1255 | Current Data Inventory Assessed Against Wave 2 of Enhanced Reports |  |  |  |  | constraint none → start no earlier than 2016-01-08 |
| 1256 | **Year 2 and Year 3 Priorities** |  |  | 261d? → 261d | 0d → 65d | was named Years 2 and 3 |
| 1258 | MILESTONE: Data Inventory of Wave 3 of Enhanced Reports Created |  |  |  | none → 262d | constraint none → start no earlier than 2016-06-30 |
| 1259 | MILESTONE: Current Data Inventory Assessed Against Wave 3 of Enhanced Reports |  |  |  | none → 262d | constraint none → start no earlier than 2016-06-30 |
| 1264 | Socialize with key stakeholders (SHUSA) and update target landscape as necessary |  |  |  |  | constraint start no earlier than 2016-04-01 → start no earlier than 2016-07-01 |
| 1282 | **DELIVERABLE: Assess resource needs and conduct additional refinements to monitoring requirements** |  |  | 261d? → 261d | 0d → 65d |  |
